# Brown Field Border Patrol Station - June 2021 Update

Schedule from Primavera P6, 2020-05-28 to 2022-11-01, data date 2021-07-01, costs in USD, A marks actual dates.

## Calendars

- 5-D: Mon-Fri 08:00-12:00, 13:00-17:00; Sat-Sun off. Exceptions (off unless hours are given): 2020-07-03 to 2020-07-04, 2020-09-07, 2020-11-11, 2020-11-26 to 2020-11-27, 2020-12-24 to 2020-12-25, 2020-12-31 to 2021-01-01, 2021-02-15, 2021-05-31, 2021-07-04 to 2021-07-05, 2021-09-06, 2021-11-11, 2021-11-25 to 2021-11-26, 2021-12-24 to 2021-12-25, 2021-12-31 to 2022-01-01, 2022-02-21, 2022-05-30, 2022-07-04, 2022-09-05.
- 5-DW: Mon-Fri 08:00-12:00, 13:00-17:00; Sat-Sun off. Exceptions (off unless hours are given): 2020-06-17, 2020-07-03 to 2020-07-04, 2020-07-15, 2020-08-12, 2020-09-07, 2020-09-09, 2020-09-23, 2020-10-06, 2020-10-15, 2020-10-20, 2020-11-03, 2020-11-11, 2020-11-17, 2020-11-25 to 2020-11-27, 2020-12-09, 2020-12-15, 2020-12-17, 2020-12-24 to 2020-12-25, 2020-12-28, 2020-12-30 to 2021-01-01, 2021-01-05, 2021-01-14, 2021-01-19, 2021-01-28, 2021-02-02, 2021-02-11, 2021-02-15, 2021-02-17, 2021-02-25, 2021-03-10, 2021-03-24, 2021-04-14, 2021-05-12, 2021-05-31, 2021-06-16, 2021-07-04 to 2021-07-05, 2021-07-14, 2021-08-18, 2021-09-06, 2021-09-08, 2021-09-22, 2021-10-06, 2021-10-14, 2021-10-19, 2021-11-02, 2021-11-11, 2021-11-16, 2021-11-24 to 2021-11-26, 2021-12-01, 2021-12-07, 2021-12-16, 2021-12-21, 2021-12-23 to 2021-12-25, 2021-12-30 to 2022-01-01, 2022-01-03, 2022-01-13, 2022-01-18, 2022-01-27, 2022-02-03, 2022-02-08, 2022-02-17, 2022-02-21, 2022-02-23, 2022-03-09, 2022-03-23, 2022-04-13, 2022-05-18, 2022-05-30, 2022-06-15, 2022-07-04, 2022-07-13, 2022-08-17, 2022-09-05, 2022-09-07, 2022-09-21, 2022-10-04, 2022-10-13, 2022-10-31.
- 7-D: Mon-Sun 08:00-12:00, 13:00-17:00.
- 5-Day: Mon-Fri 08:00-12:00, 13:00-17:00; Sat-Sun off. Exceptions (off unless hours are given): 2020-07-03 to 2020-07-04, 2020-09-07, 2020-11-11, 2020-11-26 to 2020-11-27, 2020-12-25, 2021-01-01, 2021-02-15, 2021-05-31, 2021-07-04 to 2021-07-05, 2021-09-06, 2021-11-11, 2021-11-25 to 2021-11-26, 2021-12-24 to 2021-12-25, 2021-12-31 to 2022-01-01, 2022-02-21, 2022-05-30, 2022-07-04, 2022-09-05.

## Resources

| Resource | Group |
| --- | --- |
| COST | labor |

## Schedule

| ID | WBS | Activity | Type | Duration | Start | Finish | Predecessors | Complete | Remaining | Planned start | Planned finish | Total float | Free float | Constraint | Calendar | Specification | RESP | AREA | BIDI | PHAS | CATW |
| --- | --- | --- | --- | --- | --- | --- | --- | --- | --- | --- | --- | --- | --- | --- | --- | --- | --- | --- | --- | --- | --- |
|  | MS | **Milestones** |  |  | 2020-05-28 | 2022-08-05 |  |  |  |  |  |  |  |  |  |  |  |  |  |  |  |
|  | 1 | **Project Milestones** |  |  | 2020-05-28 | 2022-08-05 |  |  |  |  |  |  |  |  |  |  |  |  |  |  |  |
| PM1050 |  | Notice to Proceed (NTP) | milestone | 0d | 2020-05-28 A | 2020-05-28 A |  | 100% |  |  |  |  |  |  | 7-D | 01-00-00 GENERAL CONDITIONS | PRIM | PRMS | 0001 | MS | 1 |
| PM1070 |  | Award Option 3 - B4 VWF |  | 65d | 2020-05-28 A | 2020-07-31 A | PM1050 SS | 100% |  |  |  |  |  |  | 7-D | 01-00-00 GENERAL CONDITIONS | USAC | PRMS | 0009 | MS | 1 |
| PM1080 |  | Award Option 4 - Helipad |  | 65d | 2020-05-28 A | 2020-07-31 A | PM1050 SS | 100% |  |  |  |  |  |  | 7-D | 01-00-00 GENERAL CONDITIONS | USAC | PRMS | 0010 | MS | 1 |
| PM1090 |  | Award Option 6 - 2nd Well |  | 65d | 2020-05-28 A | 2020-07-31 A | PM1050 SS | 100% |  |  |  |  |  |  | 7-D | 01-00-00 GENERAL CONDITIONS | USAC | PRMS | 0012 | MS | 1 |
| PM1100 |  | Project Period of Performance | level of effort | 730d | 2020-05-28 A | 2022-08-05 | PM1050 SS |  | 401d | 2020-05-28 | 2022-05-27 | 0d |  |  | 7-D | 01-00-00 GENERAL CONDITIONS | PRIM | PRMS | 0001 | MS | 1 |
| PM1110 |  | Award Option 7 - B5 CKF |  | 65d | 2020-05-28 A | 2020-07-31 A | PM1050 SS | 100% |  |  |  |  |  |  | 7-D | 01-00-00 GENERAL CONDITIONS | USAC | PRMS | 0013 | MS | 1 |
| PM1130 |  | Award Option 10 - B4A VFF |  | 65d | 2020-05-28 A | 2020-07-31 A | PM1050 SS | 100% |  |  |  |  |  |  | 7-D | 01-00-00 GENERAL CONDITIONS | USAC | PRMS | 0017 | MS | 1 |
| PM1140 |  | BPS Bldg Foundations Complete | milestone | 0d | 2021-03-29 A | 2021-03-29 A | 1FNA190, 1FNC190, 1FNE200 | 100% |  | 2021-04-22 | 2021-04-22 |  |  |  | 7-D | 01-00-00 GENERAL CONDITIONS | PRIM | PRMS | 0001 | MS | 1 |
| PM1160 |  | Start BPS Structure | milestone | 0d | 2021-04-27 A | 2021-04-27 A | 1STE110 SS, PM1140 | 100% |  | 2021-05-21 | 2021-05-21 |  |  |  | 7-D | 01-00-00 GENERAL CONDITIONS | PRIM | PRMS | 0001 | MS | 1 |
| PM1120 |  | Approved SDG&E Design | milestone | 0d | 2021-06-25 A | 2021-06-25 A | SDGE100 | 100% |  | 2021-06-03 | 2021-06-03 |  |  |  | 7-D | 01-00-00 GENERAL CONDITIONS | PRIM | PRMS | 0001 | MS | 1 |
| PM1180 |  | BPS Metal Bldg/Dry In Complete | milestone | 0d | 2021-10-08 | 2021-10-08 | 1STA110, 1STE180, 1STC140, PM1160 |  |  |  |  | 3d | 2d |  | 7-D | 01-00-00 GENERAL CONDITIONS | PRIM | PRMS | 0001 | MS | 1 |
| PM1210 |  | BPS Rough In MEPs Complete | milestone | 0d | 2021-12-30 | 2021-12-30 | 1RIC320, 1RIA310, 1RIE300, 1RIC260, 1RIC190, 1RIC290, 1RIA290, 1RIA270, 1RIA220, 1RIA100, 1RIC100, 1RIE100, 1RIE280, 1RIE220, 1RIE210, 1RIC110, 1RIC220, 1RIC230, 1RIC240, 1RIA240, 1RIA250, 1RIA260, 1RIA110, 1RIE110, 1RIE230, 1RIE240, 1RIE250, 1RIE260 |  |  |  |  | 46d | 43d |  | 7-D | 01-00-00 GENERAL CONDITIONS | PRIM | PRMS | 0001 | MS | 1 |
| PM1200 |  | Permanent Power | milestone | 0d | 2022-02-11 | 2022-02-11 | RZ1200, PM1210 |  |  |  |  | 3d | 0d |  | 7-D | 01-00-00 GENERAL CONDITIONS | PRIM | PRMS | 0001 | MS | 1 |
| PM1220 |  | Startup / TAB / Cx Start | milestone | 0d | 2022-03-15 | 2022-03-15 | RZ1240 |  |  |  |  | 1d | 0d |  | 7-D | 01-00-00 GENERAL CONDITIONS | PRIM | PRMS | 0001 | MS | 1 |
| PM1230 |  | Owner Training Agenda Complete | milestone | 0d | 2022-05-30 | 2022-05-30 | RZ1510 |  |  |  |  | 59d | 49d |  | 7-D | 01-00-00 GENERAL CONDITIONS | PRIM | PRMS | 0001 | MS | 1 |
| PM9910 |  | MR&O / Warranty Conf Complete | milestone | 0d | 2022-06-28 | 2022-06-28 | RZ2340 |  |  |  |  | 37d |  |  | 7-D | 01-00-00 GENERAL CONDITIONS | PRIM | PRMS | 0001 | MS | 1 |
| PM1400 |  | Commissioning Complete | milestone | 0d | 2022-07-25 | 2022-07-25 | RZ1610 |  |  |  |  | 11d |  |  | 7-D | 01-00-00 GENERAL CONDITIONS | PRIM | PRMS | 0001 | MS | 1 |
| PM9900 |  | End Project | milestone | 0d | 2022-08-05 | 2022-08-05 | PM1100 FF, ALLW008, RZ2400, PM1400, ENV-1100, ENV-1090, ENV-1110, M1-1, M2-1 |  |  |  |  | 0d |  | finish on or before 2022-08-15 | 7-D | 01-00-00 GENERAL CONDITIONS | PRIM | PRMS | 0001 | MS | 1 |
|  | 2 | **Environmentally Sensitive Windows** |  |  | 2021-02-01 | 2022-05-20 |  |  |  |  |  |  |  |  |  |  |  |  |  |  |  |
| ENV-1080 |  | Arroyo Toad Breeding 2021 |  | 181d | 2021-02-01 A | 2021-07-31 | PM1050 FS+249d |  | 31d |  |  | 77d | 0d |  | 7-D | 01-00-00 GENERAL CONDITIONS | PRIM | ENVR | 0005 | MS | 1 |
| ENV-1040 |  | QC Butterfly Season 2021 |  | 198d | 2021-02-15 A | 2021-08-31 | PM1050 FS+263d |  | 62d |  |  | 77d | 0d |  | 7-D | 01-00-00 GENERAL CONDITIONS | PRIM | ENVR | 0005 | MS | 1 |
| ENV-1060 |  | Peak Nesting Season 2021 |  | 198d | 2021-02-15 A | 2021-08-31 | PM1050 FS+263d |  | 62d |  |  | 77d | 0d |  | 7-D | 01-00-00 GENERAL CONDITIONS | PRIM | ENVR | 0005 | MS | 1 |
| ENV-1110 |  | Arroyo Toad Breeding 2022 |  | 109d | 2022-02-01 | 2022-05-20 | ENV-1080 FS+184d |  |  |  |  | 77d |  |  | 7-D | 01-00-00 GENERAL CONDITIONS | PRIM | ENVR | 0005 | MS | 1 |
| ENV-1090 |  | QC Butterfly Season 2022 |  | 95d | 2022-02-15 | 2022-05-20 | ENV-1040 FS+167d |  |  |  |  | 77d |  |  | 7-D | 01-00-00 GENERAL CONDITIONS | PRIM | ENVR | 0005 | MS | 1 |
| ENV-1100 |  | Peak Nesting Season 2022 |  | 95d | 2022-02-15 | 2022-05-20 | ENV-1060 FS+167d |  |  |  |  | 77d |  |  | 7-D | 01-00-00 GENERAL CONDITIONS | PRIM | ENVR | 0005 | MS | 1 |

| ID | WBS | Activity | Duration | Start | Finish | Predecessors | Complete | Remaining | Planned start | Planned finish | Total float | Free float | Calendar | Resources | Cost | Actual cost | Specification | RESP | AREA | BIDI | PHAS | CATW | CS |
| --- | --- | --- | --- | --- | --- | --- | --- | --- | --- | --- | --- | --- | --- | --- | --- | --- | --- | --- | --- | --- | --- | --- | --- |
|  | PRECON | **Preconstruction** |  | 2020-05-28 | 2021-12-07 |  |  |  |  |  |  |  |  |  |  |  |  |  |  |  |  |  |  |
| PRE-1010 |  | Obtain Dig Permits | 28d | 2020-05-28 A | 2020-07-14 A | PM1050 | 100% |  | 2020-05-28 | 2020-06-24 |  |  | 7-D |  |  |  | 01-00-00 GENERAL CONDITIONS | PRIM | PREC | 0005 | PR | 5 |  |
| PRE-1070 |  | Pre-Construction Conference | 1d | 2020-05-28 A | 2020-05-28 A | PM1050 | 100% |  |  |  |  |  |  |  |  |  | 01-00-00 GENERAL CONDITIONS | PRIM | PREC | 0001 | PR | 5 |  |
| PRE-1100 |  | Insurance | 20d | 2020-05-28 A | 2020-05-29 A | PM1050 | 100% |  | 2020-05-28 | 2020-06-16 |  |  | 7-D | COST |  |  | 01-00-00 GENERAL CONDITIONS | PRIM | PREC | 0001 | PR | 5 |  |
| PRE-1090 |  | Surety Bonds | 1d | 2020-06-10 A | 2020-06-10 A | PM1050 | 100% |  | 2020-05-28 | 2020-05-28 |  |  | 7-D | COST [187736 h] | 187,736 | 187,736 | 01-00-00 GENERAL CONDITIONS | PRIM | PREC | 0001 | PR | 5 |  |
| PRE-1040 |  | Obtain Caltrans Traffic Permit | 20d | 2020-06-16 A | 2020-08-06 A | PM1050 | 100% |  | 2020-05-28 | 2020-06-24 |  |  |  | COST [2500 h] | 2,500 | 2,500 | 01-00-00 GENERAL CONDITIONS | PRIM | PREC | 0001 | PR | 5 |  |
| PRE-1000 |  | Precon Survey -Gov Bio Monitor | 28d | 2020-06-24 A | 2020-08-11 A | PM1050 | 100% |  | 2020-06-24 | 2020-07-21 |  |  | 7-D |  |  |  | 01-00-00 GENERAL CONDITIONS | USAC | PREC | 0001 | PR | 4 |  |
| PRE-1050 |  | Obtain Pot Water Well Permit | 365d | 2020-09-25 A | 2021-07-30 | PM1050, MOB1210 FF |  | 30d | 2020-11-01 | 2021-10-31 | 174d | 2d | 7-D |  |  |  | 01-00-00 GENERAL CONDITIONS | PRIM | PREC | 0003 | PR | 5 |  |
| PRE-1060 |  | Obtain Treatment/Septic Permit | 365d | 2020-09-25 A | 2021-12-07 | PM1050 |  | 160d | 2020-11-01 | 2021-10-31 | 29d | 0d | 7-D |  |  |  | 01-00-00 GENERAL CONDITIONS | PRIM | PREC | 0005 | PR | 5 |  |
| PRE-1200 |  | APCD Permitting for Generators | 180d | 2021-06-08 A | 2021-11-27 | PM1050 |  | 150d | 2021-07-01 | 2021-12-27 | 30d | 1d | 7-D |  |  |  | 26-05-01 BUILDING ELECTRICAL | ELEC | PREC | 0005 | PR | 5 |  |
|  | SUBM | **Submittals / Procurement** |  | 2020-05-28 | 2022-01-21 |  |  |  |  |  |  |  |  |  |  |  |  |  |  |  |  |  |  |
|  | 1 | **Outside Agencies** |  | 2020-08-04 | 2021-11-27 |  |  |  |  |  |  |  |  |  |  |  |  |  |  |  |  |  |  |
| SDGE100 |  | SDG&E Design Coord - Base Bid | 218d | 2020-08-04 A | 2021-06-25 A | PM1050 | 100% |  | 2020-09-01 | 2021-04-06 |  |  | 7-D |  |  |  | 01-00-00 GENERAL CONDITIONS | PRIM | PROC | 0008 | PR | 2 |  |
| ATT100 |  | AT&T Design Coord - Base Bid | 218d | 2020-10-23 A | 2020-11-04 A | PM1050 | 100% |  | 2021-04-01 | 2021-11-04 |  |  | 7-D |  |  |  | 01-00-00 GENERAL CONDITIONS | PRIM | PROC | 0008 | PR | 2 |  |
| SDGE200 |  | PROC SDG&E Transformer | 180d | 2021-06-28 A | 2021-11-27 | SDGE100, SDGE100 FF, SDGE100 SS, PM1120 |  | 150d | 2021-06-04 | 2021-11-30 | 31d | 1d | 7-D |  |  |  | 01-00-00 GENERAL CONDITIONS | SDGE | PROC | 0008 | PR | 2 |  |
|  | 01 | **Division 01 - General Requirements** |  | 2020-05-28 | 2022-01-05 |  |  |  |  |  |  |  |  |  |  |  |  |  |  |  |  |  |  |
| 013201-01 |  | SUBM - Prelim Schedule | 15d | 2020-05-28 A | 2020-06-12 A | PM1050 | 100% |  | 2020-05-28 | 2020-06-11 |  |  | 7-D | COST [2500 h] | 2,500 | 2,500 | 01-00-00 GENERAL CONDITIONS | PRIM | PROC | 0001 | PR | 2 |  |
| 013526-01 |  | SUBM - APP | 10d | 2020-05-28 A | 2020-07-17 A | PM1050 | 100% |  | 2020-05-28 | 2020-06-06 |  |  | 7-D | COST [5000 h] | 5,000 | 5,000 | 01-00-00 GENERAL CONDITIONS | PRIM | PROC | 0001 | PR | 2 |  |
| 013526-11 |  | SUBM - EPP | 10d | 2020-05-28 A | 2020-08-11 A | PM1050 | 100% |  | 2020-05-28 | 2020-06-06 |  |  | 7-D | COST [6500 h] | 6,500 | 6,500 | 01-00-00 GENERAL CONDITIONS | PRIM | PROC | 0001 | PR | 2 | 6000 |
| 013526-22 |  | SUBM - WMP | 10d | 2020-05-28 A | 2020-07-29 A | PM1050 | 100% |  | 2020-05-28 | 2020-06-06 |  |  | 7-D | COST [1500 h] | 1,500 | 1,500 | 01-00-00 GENERAL CONDITIONS | PRIM | PROC | 0001 | PR | 2 |  |
| 014504-01 |  | SUBM - CQC Plan | 10d | 2020-05-28 A | 2020-07-14 A | PM1050 | 100% |  | 2020-05-28 | 2020-06-06 |  |  | 7-D | COST [5000 h] | 5,000 | 5,000 | 01-00-00 GENERAL CONDITIONS | PRIM | PROC | 0001 | PR | 2 |  |
| 015000-01 |  | SUBM - Site Plan | 21d | 2020-05-28 A | 2020-07-17 A | PM1050 | 100% |  | 2020-05-28 | 2020-06-17 |  |  | 7-D | COST [3500 h] | 3,500 | 3,500 | 01-00-00 GENERAL CONDITIONS | PRIM | PROC | 0001 | PR | 5 |  |
| 015719-21 |  | SUBM - SWPPP | 15d | 2020-05-28 A | 2020-07-01 A | PM1050 | 100% |  | 2020-05-28 | 2020-06-11 |  |  | 7-D | COST [3000 h] | 3,000 | 3,000 | 01-00-00 GENERAL CONDITIONS | PRIM | PROC | 0001 | PR | 2 | 2100 |
| 013526-02 |  | GOV APPR - APP | 30d | 2020-06-03 A | 2020-07-17 A | 013526-01 | 100% |  | 2020-06-07 | 2020-07-06 |  |  | 7-D |  |  |  | 01-00-00 GENERAL CONDITIONS | USAC | PROC | 0001 | PR | 2 |  |
| 015719-31 |  | GOV APPR - SWPPP | 30d | 2020-06-03 A | 2020-07-14 A | 015719-21 | 100% |  | 2020-06-12 | 2020-07-11 |  |  | 7-D |  |  |  | 01-00-00 GENERAL CONDITIONS | USAC | PROC | 0001 | PR | 2 |  |
| 014504-11 |  | GOV APPR - CQC Plan | 30d | 2020-06-12 A | 2020-08-11 A | 014504-01 | 100% |  | 2020-06-07 | 2020-07-06 |  |  | 7-D |  |  |  | 01-00-00 GENERAL CONDITIONS | USAC | PROC | 0001 | PR | 2 |  |
| 013201-11 |  | GOV APPR - Prelim Schedule | 30d | 2020-06-15 A | 2020-06-22 A | 013201-01 | 100% |  | 2020-06-12 | 2020-07-11 |  |  | 7-D |  |  |  | 01-00-00 GENERAL CONDITIONS | USAC | PROC | 0001 | PR | 2 |  |
| 013201-21 |  | SUBM - Initial Proj Sched | 27d | 2020-06-15 A | 2020-09-24 A | 013201-01 | 100% |  | 2020-06-12 | 2020-07-08 |  |  | 7-D | COST [7500 h] | 7,500 | 7,500 | 01-00-00 GENERAL CONDITIONS | PRIM | PROC | 0001 | PR | 2 |  |
| 013526-12 |  | GOV APPR - EPP | 30d | 2020-06-30 A | 2020-08-26 A | 013526-11 | 100% |  | 2020-06-07 | 2020-07-06 |  |  | 7-D |  |  |  | 01-00-00 GENERAL CONDITIONS | USAC | PROC | 0001 | PR | 2 |  |
| 015000-02 |  | GOV APPR - Site Plan | 30d | 2020-06-30 A | 2020-07-20 A | 015000-01 | 100% |  | 2020-06-18 | 2020-07-17 |  |  | 7-D |  |  |  | 01-00-00 GENERAL CONDITIONS | USAC | PROC | 0001 | PR | 5 |  |
| 019100-01 |  | SUBM - Cx Firm/Specialists | 30d | 2020-07-27 A | 2020-08-12 A | PM1050 | 100% |  | 2020-05-28 | 2020-06-26 |  |  | 7-D |  |  |  | 23-08-01 COMMISSIONING | CXNG | PROC | 0001 | PR | 2 |  |
| 013526-32 |  | GOV APPR - WMP | 30d | 2020-07-29 A | 2020-08-06 A | 013526-22 | 100% |  | 2020-06-07 | 2020-07-06 |  |  | 7-D |  |  |  | 01-00-00 GENERAL CONDITIONS | USAC | PROC | 0001 | PR | 2 |  |
| 019100-02 |  | GOV APPR - Cx Firm/Specialists | 30d | 2020-08-12 A | 2020-10-16 A | 019100-01 | 100% |  | 2020-06-27 | 2020-07-26 |  |  | 7-D |  |  |  | 23-08-01 COMMISSIONING | USAC | PROC | 0001 | PR | 2 |  |
| 013201-31 |  | GOV APPR - Initial Proj Sched | 30d | 2020-08-18 A | 2020-10-07 A | 013201-21 | 100% |  | 2020-07-09 | 2020-08-07 |  |  | 7-D |  |  |  | 01-00-00 GENERAL CONDITIONS | USAC | PROC | 0001 | PR | 2 |  |
| 019100-52 |  | Prep Interim Phase Cx Plan | 96d | 2020-10-19 A | 2020-10-31 A | 019100-02 | 100% |  | 2020-10-31 | 2021-02-03 |  |  | 7-D |  |  |  | 23-08-01 COMMISSIONING | CXNG | PROC | 0001 | PR | 2 |  |
| 019100-55 |  | GOV REV - Interim Cx Plan | 14d | 2020-11-02 A | 2020-12-16 A | 019100-52 | 100% |  | 2021-01-23 | 2021-02-05 |  |  | 7-D |  |  |  |  | USAC | PROC | 0001 | PR | 2 |  |
| 019100-62 |  | Prep Pre-Funct & FPT Checklist | 80d | 2021-07-01 | 2021-10-22 | 019100-52 |  |  |  |  | 19d | 0d |  |  |  |  | 23-08-01 COMMISSIONING | CXNG | PROC | 0001 | PR | 2 |  |
| 019100-65 |  | Interim Cx Plan Review Meeting | 1d | 2021-07-01 | 2021-07-01 | 019100-55 |  |  |  |  | 98d | 79d |  |  |  |  |  | CXNG | PROC | 0001 | PR | 2 |  |
| 019100-72 |  | Prepare Final Cx Plan | 30d | 2021-10-23 | 2021-11-21 | 019100-62, 019100-65 |  |  |  |  | 30d | 0d | 7-D |  |  |  | 23-08-01 COMMISSIONING | CXNG | PROC | 0001 | PR | 2 |  |
| 019100-82 |  | GOV APPR - Final Cx Plan | 30d | 2021-11-22 | 2021-12-21 | 019100-72 |  |  |  |  | 30d | 0d | 7-D |  |  |  |  | USAC | PROC | 0001 | PR | 2 |  |
| 019100-85 |  | Final Cx Plan Review Meeting | 1d | 2021-12-06 | 2021-12-06 | 019100-82 SS+14d |  |  |  |  | 31d | 11d |  |  |  |  |  | CXNG | PROC | 0001 | PR | 2 |  |
| 019100-50 |  | Schedule Cx Coord Mtg | 14d | 2021-12-22 | 2022-01-04 | 019100-02, 019100-72, 019100-82, 019100-85 |  |  |  |  | 30d | 0d | 7-D |  |  |  | 01-00-00 GENERAL CONDITIONS | PRIM | PROC | 0001 | PR | 2 |  |
| 019100-51 |  | Cx Coordination Mtg | 1d | 2022-01-05 | 2022-01-05 | 019100-50 |  |  |  |  | 22d | 19d |  |  |  |  | 01-00-00 GENERAL CONDITIONS | PRIM | PROC | 0001 | PR | 2 |  |

Notes:
- ATT100: Activity Notes: Activity Closed per the Response to RFI-0054 - Request for LV Utility / Design
- 013201-21: Activity Notes: Corrected October 2020 billing period from 100% to 95%

| ID | WBS | Activity | Duration | Start | Finish | Predecessors | Complete | Remaining | Planned start | Planned finish | Total float | Free float | Calendar | Specification | RESP | AREA | BIDI | PHAS | CATW |
| --- | --- | --- | --- | --- | --- | --- | --- | --- | --- | --- | --- | --- | --- | --- | --- | --- | --- | --- | --- |
|  | 03 | **Division 03 - Concrete** |  | 2020-06-29 | 2021-02-25 |  |  |  |  |  |  |  |  |  |  |  |  |  |  |
|  | 1113 | **03 11 13 Structural Cast-In-Place Concrete Forming** |  | 2020-09-01 | 2020-11-10 |  |  |  |  |  |  |  |  |  |  |  |  |  |  |
| 031113-01 |  | SUBM - Str CIP Conc Form | 20d | 2020-09-01 A | 2020-10-08 A | PM1050 | 100% |  | 2020-10-01 | 2020-10-28 |  |  |  | 03-30-01 CAST IN PLACE CONCRETE / BELOW GRADE PROD | CONC | PROC | 0001 | PR | 2 |
| 031113-02 |  | GOV APPR - Str CIP Conc Form | 30d | 2020-10-09 A | 2020-11-10 A | 031113-01 | 100% |  | 2020-11-11 | 2020-12-10 |  |  | 7-D | 03-30-01 CAST IN PLACE CONCRETE / BELOW GRADE PROD | USAC | PROC | 0001 | PR | 2 |
|  | 2000 | **03 20 00 Concrete Reinforcing** |  | 2020-09-01 | 2021-02-25 |  |  |  |  |  |  |  |  |  |  |  |  |  |  |
| 032000-01 |  | SUBM - Conc Reinforcing | 35d | 2020-09-01 A | 2021-02-01 A | PM1050, 133419-04 SS, 133419-04 FF, RFP07-250 FF | 100% |  | 2020-09-01 | 2020-10-20 |  |  |  | 03-20-01 REINFORCING STEEL | REBR | PROC | 0001 | PR | 2 |
| 032000-21 |  | SUBM - RW Rebar | 35d | 2020-09-01 A | 2020-09-21 A | PM1050 | 100% |  | 2020-09-01 | 2020-10-20 |  |  |  | 03-20-01 REINFORCING STEEL | REBR | PROC | 0001 | PR | 2 |
| 032000-22 |  | GOV APPR - RW Rebar | 30d | 2020-09-29 A | 2021-01-25 A | 032000-21 | 100% |  | 2020-11-17 | 2020-12-16 |  |  | 7-D | 03-20-01 REINFORCING STEEL | USAC | PROC | 0001 | PR | 2 |
| 032000-29 |  | PROC - RW Rebar | 5d | 2020-12-16 A | 2021-01-11 A | 032000-22 | 100% |  | 2020-12-29 | 2021-01-06 |  |  |  | 03-20-01 REINFORCING STEEL | REBR | PROC | 0001 | PR | 3 |
| 032000-02 |  | GOV APPR - Conc Reinforcing | 30d | 2021-02-02 A | 2021-02-09 A | 032000-01 | 100% |  | 2021-02-02 | 2021-03-03 |  |  | 7-D | 03-20-01 REINFORCING STEEL | USAC | PROC | 0001 | PR | 2 |
| 032000-09 |  | PROC - Conc Reinforcing | 10d | 2021-02-10 A | 2021-02-25 A | 032000-02 | 100% |  | 2021-03-04 | 2021-03-17 |  |  |  | 03-20-01 REINFORCING STEEL | REBR | PROC | 0001 | PR | 3 |
|  | 3000 | **03 30 00 Cast-In-Place Concrete** |  | 2020-06-29 | 2020-09-22 |  |  |  |  |  |  |  |  |  |  |  |  |  |  |
| 033000-01 |  | SUBM - CIP Concrete | 20d | 2020-06-29 A | 2020-08-18 A | PM1050 | 100% |  | 2020-05-28 | 2020-06-24 |  |  |  | 03-30-01 CAST IN PLACE CONCRETE / BELOW GRADE PROD | CONC | PROC | 0001 | PR | 2 |
| 033000-02 |  | GOV APPR - CIP Concrete | 30d | 2020-08-18 A | 2020-09-22 A | 033000-01 | 100% |  | 2020-06-25 | 2020-07-24 |  |  | 7-D | 03-30-01 CAST IN PLACE CONCRETE / BELOW GRADE PROD | USAC | PROC | 0001 | PR | 2 |
|  | 04 | **Division 04 - Masonry** |  | 2020-07-01 | 2021-07-29 |  |  |  |  |  |  |  |  |  |  |  |  |  |  |
|  | 2000 | **04 20 00 Unit Masonry** |  | 2020-07-01 | 2021-07-29 |  |  |  |  |  |  |  |  |  |  |  |  |  |  |
| 042000-01 |  | SUBM - CMU | 40d | 2020-07-01 A | 2020-12-21 A | PM1050 | 100% |  | 2020-11-02 | 2021-01-05 |  |  |  | 04-20-01 MASONRY | MASO | PROC | 0001 | PR | 2 |
| 042000-02 |  | GOV APPR - CMU | 30d | 2020-12-02 A | 2021-03-16 A | 042000-01 | 100% |  | 2020-12-02 | 2020-12-31 |  |  | 7-D | 04-20-01 MASONRY | USAC | PROC | 0001 | PR | 2 |
| 042000-12 |  | SUBM SAMP - CMU | 10d | 2020-12-08 A | 2020-12-08 A | 042000-02 | 100% |  | 2021-01-04 | 2021-01-15 |  |  |  | 04-20-01 MASONRY | MASO | PROC | 0001 | PR | 2 |
| 042000-22 |  | GOV APPR SAMP - CMU | 14d | 2020-12-08 A | 2020-12-21 A | 042000-12 | 100% |  | 2021-02-17 | 2021-03-08 |  |  |  | 04-20-01 MASONRY | USAC | PROC | 0001 | PR | 2 |
| 042000-32 |  | PROC - CMU | 50d | 2021-02-08 A | 2021-07-15 | 042000-22 |  | 10d | 2021-02-08 | 2021-04-19 | 2d | 0d |  | 04-20-01 MASONRY | MASO | PROC | 0001 | PR | 3 |
| 042000-42 |  | Mock-Up - CMU Walls | 5d | 2021-07-16 | 2021-07-22 | 042000-32 |  |  |  |  | 2d | 0d |  | 04-20-01 MASONRY | MASO | PROC | 0001 | PR | 3 |
| 042000-52 |  | GOV REV Mock-Up - CMU | 7d | 2021-07-23 | 2021-07-29 | 042000-42 |  |  |  |  | 4d | 0d | 7-D | 04-20-01 MASONRY | USAC | PROC | 0001 | PR | 2 |
|  | 05 | **Division 05 - Metals** |  | 2021-03-01 | 2021-08-12 |  |  |  |  |  |  |  |  |  |  |  |  |  |  |
|  | 4000 | **05 40 00 Cold-Formed Metal Framing** |  | 2021-04-01 | 2021-06-15 |  |  |  |  |  |  |  |  |  |  |  |  |  |  |
| 054000-01 |  | SUBM - CF Metal Framing | 20d | 2021-04-01 A | 2021-05-19 A | PM1050 | 100% |  | 2021-05-03 | 2021-05-28 |  |  |  | 09-29-01 FRAMING & DRYWALL | FRAM | PROC | 0001 | PR | 2 |
| 054000-02 |  | GOV APPR - CF Metal Framing | 30d | 2021-05-04 A | 2021-06-15 A | 054000-01 | 100% |  | 2021-05-22 | 2021-06-20 |  |  | 7-D | 09-29-01 FRAMING & DRYWALL | USAC | PROC | 0001 | PR | 2 |

Notes:
- 032000-01: Delay Impacts: RFI 26 - Depth of Footing / RFP-0002 - Revised PEMB Design Perameters for Bldg / 1. / RFP-0007 - Revised Foundation Design for Bldg 1. / 1/12/2021-1/20/2021 - / RFI-0103 / – Pilaster at Grids A & 1 Vert Layout is Unclear / 1/12/2021-1/20/2021 / - RFI-0104 / – Dimension for Step / 1/13/2021-1/19/2021 - / RFI-0105 – / GB5 and Wall Don’t Have Same Width / 1/13/2021-1/19/2021 - / RFI-0106 – / Is F2 a Typo Error / 1/13/2021-1/19/2021 - / RFI-0107 – / Pilaster Dimensions & beam Not / Centered / 1/13/2021-1/19/2021 - / RFI-0108 – / Are the 9 #5 Verts an Add or / Replace / 1/13/2021-1/22/2021 / - RFI-0109 / – Tie Conflicts with Apparent / Blockout / 1/13/2021-1/19/2021 - / RFI-0110 – / Pilaster / Dimensions / 1/13/2021-1/19/2021 - RFI-0111 – Grade Beam with 2 / Labels / 1/14/2021-1/22/2021 - RFI-0113 – Is Pilaster Shape and Layout / Accurate / 1/20/2021-1/26/2021 - RFI-0119 - Pilaster at Grid / 19-B
- 032000-21: Delay Impacts: RFI 26 - Depth of Footing

| ID | WBS | Activity | Duration | Start | Finish | Predecessors | Complete | Remaining | Planned start | Planned finish | Total float | Free float | Calendar | Resources | Cost | Specification | RESP | AREA | BIDI | PHAS | CATW | CS | WRKP |
| --- | --- | --- | --- | --- | --- | --- | --- | --- | --- | --- | --- | --- | --- | --- | --- | --- | --- | --- | --- | --- | --- | --- | --- |
|  | 5013 | **05 50 13 Miscellaneous Metal Fabrications** |  |  |  |  |  |  |  |  |  |  |  |  |  |  |  |  |  |  |  |  |  |
|  | 5100 | **05 51 00 Metal Stairs** |  | 2021-03-01 | 2021-08-12 |  |  |  |  |  |  |  |  |  |  |  |  |  |  |  |  |  |  |
| 055100-01 |  | SUBM - Metal Stairs | 60d | 2021-03-01 A | 2021-03-16 A | PM1050 | 100% |  | 2021-03-01 | 2021-05-21 |  |  |  |  |  | 05-12-01 STRUCTURAL STEEL | STEE | PROC | 0005 | PR | 2 |  |  |
| 055100-02 |  | GOV APPR - Metal Stairs | 30d | 2021-03-16 A | 2021-04-12 A | 055100-01 | 100% |  | 2021-05-22 | 2021-06-20 |  |  | 7-D |  |  | 05-12-01 STRUCTURAL STEEL | USAC | PROC | 0005 | PR | 2 |  |  |
| 055100-09 |  | FABR - Metal Stairs | 30d | 2021-04-13 A | 2021-08-12 | 055100-02 |  | 30d | 2021-05-03 | 2021-06-14 | 215d | 154d |  |  |  | 05-12-01 STRUCTURAL STEEL | STEE | PROC | 0005 | PR | 3 |  |  |
|  | 5200 | **05 52 00 Metal Railings** |  | 2021-03-01 | 2021-08-12 |  |  |  |  |  |  |  |  |  |  |  |  |  |  |  |  |  |  |
| 055200-01 |  | SUBM - Metal Railings | 60d | 2021-03-01 A | 2021-03-16 A | PM1050 | 100% |  | 2021-03-01 | 2021-05-21 |  |  |  |  |  | 05-12-01 STRUCTURAL STEEL | STEE | PROC | 0005 | PR | 2 |  |  |
| 055200-02 |  | GOV APPR - Metal Railings | 30d | 2021-03-16 A | 2021-04-12 A | 055200-01 | 100% |  | 2021-05-22 | 2021-06-20 |  |  | 7-D |  |  | 05-12-01 STRUCTURAL STEEL | USAC | PROC | 0005 | PR | 2 |  |  |
| 055200-09 |  | FABR - Metal Railings | 30d | 2021-04-13 A | 2021-08-12 | 055200-02 |  | 30d | 2021-05-03 | 2021-06-14 | 215d | 104d |  |  |  | 05-12-01 STRUCTURAL STEEL | STEE | PROC | 0005 | PR | 3 |  |  |
|  | 06 | **Division 06 - Wood, Plastics, and Composites** |  | 2020-05-28 | 2021-12-15 |  |  |  |  |  |  |  |  |  |  |  |  |  |  |  |  |  |  |
|  | 1000 | **06 10 00 Rough Carpentry** |  | 2021-07-01 | 2021-10-02 |  |  |  |  |  |  |  |  |  |  |  |  |  |  |  |  |  |  |
| 061000-01 |  | SUBM - Rough Carpentry | 45d | 2021-07-01 | 2021-09-02 | PM1050 |  |  |  |  | 49d | 0d |  |  |  | 06-10-01 ROUGH CARPENTY | ROUG | PROC | 0001 | PR | 2 |  |  |
| 061000-02 |  | GOV APPR - Rough Carpentry | 30d | 2021-09-03 | 2021-10-02 | 061000-01 |  |  |  |  | 73d | 51d | 7-D |  |  | 06-10-01 ROUGH CARPENTY | USAC | PROC | 0001 | PR | 2 |  |  |
|  | 2000 | **06 20 00 Finish Carpentry** |  | 2020-05-28 | 2021-12-07 |  |  |  |  |  |  |  |  |  |  |  |  |  |  |  |  |  |  |
| 062000-01 |  | SUBM - Finish Carpentry | 45d | 2020-05-28 A | 2021-09-02 | PM1050 |  | 45d | 2020-11-02 | 2021-01-12 | 54d | 0d |  | COST [3400 h] | 3,400 | 06-40-01 CASEWORK / COUNTERTOPS | CASE | PROC | 0001 | PR | 2 | 3500 | 001 |
| 062000-02 |  | GOV APPR - Finish Carpentry | 30d | 2021-09-03 | 2021-10-02 | 062000-01 |  |  |  |  | 78d | 1d | 7-D |  |  | 06-40-01 CASEWORK / COUNTERTOPS | USAC | PROC | 0001 | PR | 2 |  |  |
| 062000-12 |  | SUBM SAMP - Finish Carpentry | 10d | 2021-10-04 | 2021-10-15 | 062000-02 |  |  |  |  | 52d | 0d |  |  |  | 06-40-01 CASEWORK / COUNTERTOPS | CASE | PROC | 0001 | PR | 2 |  | 001 |
| 062000-22 |  | GOV APPR SAMP - Fin Carpentry | 14d | 2021-10-18 | 2021-11-04 | 062000-12 |  |  |  |  | 52d | 0d |  |  |  | 06-40-01 CASEWORK / COUNTERTOPS | USAC | PROC | 0001 | PR | 2 |  |  |
| 062000-32 |  | PROC - Finish Carpentry | 20d | 2021-11-05 | 2021-12-07 | 062000-22, 064116-30 |  |  |  |  | 52d | 23d |  |  |  | 06-40-01 CASEWORK / COUNTERTOPS | CASE | PROC | 0001 | PR | 3 |  | 001 |
|  | 4116 | **06 41 16 Plastic-Laminate-Clad Architectural Cabinets (FIO)** |  | 2020-05-28 | 2021-11-22 |  |  |  |  |  |  |  |  |  |  |  |  |  |  |  |  |  |  |
| 064116-01 |  | SUBM - P-Lam Cabinets | 45d | 2020-05-28 A | 2021-08-12 | PM1050 |  | 30d | 2020-11-02 | 2021-01-12 | 62d | 0d |  | COST [3400 h] | 3,400 | 06-40-01 CASEWORK / COUNTERTOPS | CASE | PROC | 0001 | PR | 2 | 3500 | 001 |
| 064116-02 |  | QC APPR - P-Lam Cabinets | 20d | 2021-08-13 | 2021-09-10 | 064116-01 |  |  |  |  | 62d | 0d |  |  |  | 06-40-01 CASEWORK / COUNTERTOPS | PRIM | PROC | 0001 | PR | 2 |  |  |
| 064116-30 |  | Field Measure Cabinets | 1d | 2021-08-20 | 2021-08-20 | 1RIC140, 1RIA140 |  |  |  |  | 95d | 29d |  | COST [1700 h] | 1,700 | 06-40-01 CASEWORK / COUNTERTOPS | CASE | BLD1 | 0001 | PR | 3 | 1500 | 001 |
| 064116-12 |  | SUBM SAMP - P-Lam Cabinets | 10d | 2021-09-13 | 2021-09-24 | 064116-02 |  |  |  |  | 62d | 0d |  |  |  | 06-40-01 CASEWORK / COUNTERTOPS | CASE | PROC | 0001 | PR | 2 |  | 001 |
| 064116-22 |  | GOV APPR SAMP - P-Lam Cabinets | 14d | 2021-09-25 | 2021-10-08 | 064116-12 |  |  |  |  | 94d | 2d | 7-D |  |  | 06-40-01 CASEWORK / COUNTERTOPS | USAC | PROC | 0001 | PR | 2 |  |  |
| 064116-32 |  | PROC - P-Lam Cabinets | 30d | 2021-10-11 | 2021-11-22 | 064116-22, 064116-30 |  |  |  |  | 61d | 32d |  |  |  | 06-40-01 CASEWORK / COUNTERTOPS | CASE | PROC | 0001 | PR | 3 |  | 001 |

| ID | WBS | Activity | Duration | Start | Finish | Predecessors | Complete | Remaining | Planned start | Planned finish | Total float | Free float | Calendar | Resources | Cost | Specification | CS | RESP | WRKP | AREA | BIDI | PHAS | CATW |
| --- | --- | --- | --- | --- | --- | --- | --- | --- | --- | --- | --- | --- | --- | --- | --- | --- | --- | --- | --- | --- | --- | --- | --- |
|  | 6116 | **06 61 16 Solid Surfacing Fabrications** |  | 2020-05-28 | 2021-12-15 |  |  |  |  |  |  |  |  |  |  |  |  |  |  |  |  |  |  |
| 066116-01 |  | SUBM - Solid Surface Fabs | 45d | 2020-05-28 A | 2021-09-02 | PM1050 |  | 45d | 2020-11-02 | 2021-01-12 | 47d | 0d |  | COST [3400 h] | 3,400 | 06-40-01 CASEWORK / COUNTERTOPS | 3500 | CASE | 001 | PROC | 0001 | PR | 2 |
| 066116-02 |  | QC APPR - Solid Surface Fabs | 10d | 2021-09-03 | 2021-09-17 | 066116-01 |  |  |  |  | 47d | 0d |  |  |  | 06-40-01 CASEWORK / COUNTERTOPS |  | PRIM |  | PROC | 0001 | PR | 2 |
| 066116-12 |  | SUBM SAMP - Solid Surface Fabs | 10d | 2021-09-20 | 2021-10-01 | 066116-02 |  |  |  |  | 47d | 0d |  |  |  | 06-40-01 CASEWORK / COUNTERTOPS |  | CASE | 001 | PROC | 0001 | PR | 2 |
| 066116-22 |  | GOV APPR SAMP- Solid Surf Fabs | 30d | 2021-10-02 | 2021-10-31 | 066116-12 |  |  |  |  | 71d | 0d | 7-D |  |  | 06-40-01 CASEWORK / COUNTERTOPS |  | USAC |  | PROC | 0001 | PR | 2 |
| 066116-32 |  | PROC - Solid Surfacing Fabs | 30d | 2021-11-01 | 2021-12-15 | 066116-22, 064116-30 |  |  |  |  | 46d | 17d |  |  |  | 06-40-01 CASEWORK / COUNTERTOPS |  | CASE | 001 | PROC | 0001 | PR | 3 |
|  | 07 | **Division 07 - Thermal and Moisture Protection** |  | 2020-05-28 | 2021-09-22 |  |  |  |  |  |  |  |  |  |  |  |  |  |  |  |  |  |  |
|  | 0523 | **07 05 23 Pressure Testing an Air Barrier System** |  | 2021-07-01 | 2021-08-28 |  |  |  |  |  |  |  |  |  |  |  |  |  |  |  |  |  |  |
| 070523-01 |  | SUBM - Test Air Barrier Sys | 20d | 2021-07-01 | 2021-07-29 | PM1050 |  |  |  |  | 170d | 0d |  |  |  | 02-10-13 AIR BARRIER TESTING |  | AIRB |  | PROC | 0001 | PR | 2 |
| 070523-02 |  | GOV APPR- Test Air Barrier Sys | 30d | 2021-07-30 | 2021-08-28 | 070523-01 |  |  |  |  | 249d | 159d | 7-D |  |  | 02-10-13 AIR BARRIER TESTING |  | USAC |  | PROC | 0001 | PR | 2 |
|  | 1353 | **07 13 53 Elastomeric Sheet Waterproofing (FIO)** |  |  |  |  |  |  |  |  |  |  |  |  |  |  |  |  |  |  |  |  |  |
|  | 2116 | **07 21 16 Mineral Fiber Blanket Insulation (FIO)** |  |  |  |  |  |  |  |  |  |  |  |  |  |  |  |  |  |  |  |  |  |
|  | 2710 | **07 27 10 Building Air Barrier System** |  | 2021-04-01 | 2021-09-22 |  |  |  |  |  |  |  |  |  |  |  |  |  |  |  |  |  |  |
| 072710-01 |  | SUBM - Air Barrier Insp | 30d | 2021-04-01 A | 2021-07-10 | PM1050 |  | 10d | 2021-04-01 | 2021-04-30 | 7d | 0d | 7-D |  |  | 02-10-13 AIR BARRIER TESTING |  | AIRB |  | PROC | 0001 | PR | 2 |
| 072710-02 |  | GOV APPR - Air Barrier Insp | 30d | 2021-07-11 | 2021-08-09 | 072710-01 |  |  |  |  | 7d | 0d | 7-D |  |  | 02-10-13 AIR BARRIER TESTING |  | USAC |  | PROC | 0001 | PR | 2 |
| 072710-12 |  | SUBM - Air Barrier Design Rev | 14d | 2021-08-10 | 2021-08-23 | 072710-02 |  |  |  |  | 7d | 0d | 7-D |  |  | 02-10-13 AIR BARRIER TESTING |  | AIRB |  | PROC | 0001 | PR | 2 |
| 072710-13 |  | GOV APPR - Air Barrier Des Rev | 30d | 2021-08-24 | 2021-09-22 | 072710-12 |  |  |  |  | 7d | 0d | 7-D |  |  | 02-10-13 AIR BARRIER TESTING |  | USAC |  | PROC | 0001 | PR | 2 |
|  | 2719 | **07 27 19 Air Barrier System for Metal Buildings** |  | 2020-05-28 | 2021-04-21 |  |  |  |  |  |  |  |  |  |  |  |  |  |  |  |  |  |  |
| 072719-01 |  | SUBM - Air Barrier for Mtl Bld | 36d | 2020-05-28 A | 2021-04-02 A | PM1050 | 100% |  | 2020-11-02 | 2020-12-28 |  |  |  |  |  | 13-34-01 METAL BUILDING SYSTEMS |  | PEMB |  | PROC | 0001 | PR | 2 |
| 072719-02 |  | GOV APPR - Air Barrier for MB | 30d | 2021-04-03 A | 2021-04-21 A | 072719-01 | 100% |  | 2021-04-29 | 2021-05-28 |  |  | 7-D |  |  | 13-34-01 METAL BUILDING SYSTEMS |  | USAC |  | PROC | 0001 | PR | 2 |
|  | 2726 | **07 27 26 Fluid-Applied Membrane Air Barriers (FIO)** |  |  |  |  |  |  |  |  |  |  |  |  |  |  |  |  |  |  |  |  |  |
|  | 2736 | **07 27 36 Spray Foam Air Barriers (FIO)** |  |  |  |  |  |  |  |  |  |  |  |  |  |  |  |  |  |  |  |  |  |
|  | 6000 | **07 60 00 Flashing and Sheet Metal** |  |  |  |  |  |  |  |  |  |  |  |  |  |  |  |  |  |  |  |  |  |
|  | 08 | **Division 08 - Openings** |  | 2020-05-28 | 2021-12-01 |  |  |  |  |  |  |  |  |  |  |  |  |  |  |  |  |  |  |
|  | 1113 | **08 11 13 Steel Doors and Frames** |  | 2020-05-28 | 2021-07-29 |  |  |  |  |  |  |  |  |  |  |  |  |  |  |  |  |  |  |
| 081113-01 |  | SUBM - Steel Doors & Frames | 45d | 2020-05-28 A | 2021-03-29 A | PM1050 | 100% |  | 2020-11-02 | 2021-01-12 |  |  |  |  |  | 08-11-01 DOORS, FRAMES & HARDWARE |  | DOOR |  | PROC | 0001 | PR | 2 |
| 081113-02 |  | GOV APPR - Steel Doors & Frame | 30d | 2021-04-22 A | 2021-05-18 A | 081113-01 | 100% |  | 2021-05-01 | 2021-05-30 |  |  | 7-D |  |  | 08-11-01 DOORS, FRAMES & HARDWARE |  | USAC |  | PROC | 0001 | PR | 2 |
| 081113-21 |  | FABR - Steel Door Frames | 40d | 2021-05-19 A | 2021-07-29 | 081113-02 |  | 20d | 2021-06-01 | 2021-07-27 | 47d | 0d |  |  |  | 08-11-01 DOORS, FRAMES & HARDWARE |  | DOOR |  | PROC | 0001 | PR | 3 |
| 081113-31 |  | FABR - Steel Doors | 40d | 2021-05-19 A | 2021-07-29 | 081113-02 |  | 20d | 2021-06-01 | 2021-07-27 | 142d | 68d |  |  |  | 08-11-01 DOORS, FRAMES & HARDWARE |  | DOOR |  | PROC | 0001 | PR | 3 |

| ID | WBS | Activity | Duration | Start | Finish | Predecessors | Complete | Remaining | Planned start | Planned finish | Total float | Free float | Calendar | Specification | RESP | AREA | BIDI | PHAS | CATW |
| --- | --- | --- | --- | --- | --- | --- | --- | --- | --- | --- | --- | --- | --- | --- | --- | --- | --- | --- | --- |
|  | 1400 | **08 14 00 Wood Doors** |  | 2020-05-28 | 2021-11-15 |  |  |  |  |  |  |  |  |  |  |  |  |  |  |
| 081400-01 |  | SUBM - Wood Doors | 45d | 2020-05-28 A | 2021-07-08 | PM1050 |  | 5d | 2020-11-02 | 2021-01-12 | 85d | 0d |  | 08-11-01 DOORS, FRAMES & HARDWARE | DOOR | PROC | 0001 | PR | 2 |
| 081400-02 |  | GOV APPR - Wood Doors | 30d | 2021-07-09 | 2021-08-07 | 081400-01 |  |  |  |  | 120d | 1d | 7-D | 08-11-01 DOORS, FRAMES & HARDWARE | USAC | PROC | 0001 | PR | 2 |
| 081400-12 |  | SUBM Fin Colors - Wood Doors | 10d | 2021-08-09 | 2021-08-20 | 081400-02 |  |  |  |  | 81d | 0d |  | 08-11-01 DOORS, FRAMES & HARDWARE | DOOR | PROC | 0001 | PR | 2 |
| 081400-22 |  | GOV APPR Fin Color - Wood Door | 30d | 2021-08-21 | 2021-09-19 | 081400-12 |  |  |  |  | 120d | 0d | 7-D | 08-11-01 DOORS, FRAMES & HARDWARE | USAC | PROC | 0001 | PR | 2 |
| 081400-23 |  | FABR - Wood Doors | 40d | 2021-09-20 | 2021-11-15 | 081400-02, 081400-22 |  |  |  |  | 81d | 53d |  | 08-11-01 DOORS, FRAMES & HARDWARE | DOOR | PROC | 0001 | PR | 3 |
|  | 2220 | **08 22 00 Fiberglass Reinforced Plastic FRP Doors and Frames** |  | 2020-05-28 | 2021-10-04 |  |  |  |  |  |  |  |  |  |  |  |  |  |  |
| 082200-01 |  | SUBM - FRP Doors & Frames | 45d | 2020-05-28 A | 2021-07-08 | PM1050 |  | 5d | 2020-11-02 | 2021-01-12 | 135d | 0d |  | 08-11-01 DOORS, FRAMES & HARDWARE | DOOR | PROC | 0003 | PR | 2 |
| 082200-02 |  | GOV APPR - FRP Doors & Frames | 30d | 2021-07-09 | 2021-08-07 | 082200-01 |  |  |  |  | 199d | 1d | 7-D | 08-11-01 DOORS, FRAMES & HARDWARE | USAC | PROC | 0003 | PR | 2 |
| 082200-21 |  | FABR - FRP Doors & Frames | 40d | 2021-08-09 | 2021-10-04 | 082200-02 |  |  |  |  | 173d | 34d |  | 08-11-01 DOORS, FRAMES & HARDWARE | DOOR | PROC | 0003 | PR | 3 |
|  | 3313 | **08 33 13 Coiling Counter Doors (FIO)** |  | 2021-05-03 | 2021-08-12 |  |  |  |  |  |  |  |  |  |  |  |  |  |  |
| 083313-01 |  | SUBM - Coiling Counter Doors | 20d | 2021-05-03 A | 2021-05-18 A | PM1050 | 100% |  | 2021-05-03 | 2021-05-28 |  |  |  | 08-33-23 OVERHEAD DOORS | OHDR | PROC | 0001 | PR | 2 |
| 083313-02 |  | QC APPR - Coil Counter Doors | 10d | 2021-05-18 A | 2021-05-20 A | 083313-01 | 100% |  | 2021-06-01 | 2021-06-14 |  |  |  | 08-33-23 OVERHEAD DOORS | PRIM | PROC | 0001 | PR | 2 |
| 083313-03 |  | GOV FIO - Coil Counter Doors | 7d | 2021-05-20 A | 2021-05-21 A | 083313-02 | 100% |  | 2021-06-15 | 2021-06-21 |  |  | 7-D | 08-33-23 OVERHEAD DOORS | USAC | PROC | 0001 | PR | 2 |
| 083313-13 |  | PROC - Coiling Counter Doors | 30d | 2021-05-24 A | 2021-08-12 | 083313-03 |  | 30d | 2021-06-01 | 2021-07-13 | 199d | 70d |  | 08-33-23 OVERHEAD DOORS | OHDR | PROC | 0001 | PR | 3 |
|  | 3323 | **08 33 23 Overhead Coiling Doors** |  | 2021-07-01 | 2021-12-01 |  |  |  |  |  |  |  |  |  |  |  |  |  |  |
| 083323-01 |  | SUBM - OH Coiling Doors | 45d | 2021-07-01 | 2021-09-02 | PM1050 |  |  |  |  | 139d | 0d |  | 08-33-23 OVERHEAD DOORS | OHDR | PROC | 0001 | PR | 2 |
| 083323-02 |  | GOV APPR - OH Coiling Doors | 30d | 2021-09-03 | 2021-10-02 | 083323-01 |  |  |  |  | 205d | 1d | 7-D | 08-33-23 OVERHEAD DOORS | USAC | PROC | 0001 | PR | 2 |
| 083323-21 |  | FABR - OH Coiling Doors | 40d | 2021-10-04 | 2021-12-01 | 083323-02 |  |  |  |  | 140d | 57d |  | 08-33-23 OVERHEAD DOORS | OHDR | PROC | 0001 | PR | 3 |
|  | 3402 | **08 34 02 Bullet-Resistant Components** |  | 2021-07-01 | 2021-12-01 |  |  |  |  |  |  |  |  |  |  |  |  |  |  |
| 083402-01 |  | SUBM - Bullet-Resistant Comps | 45d | 2021-07-01 | 2021-09-02 | PM1050 |  |  |  |  | 92d | 0d |  | 08-11-01 DOORS, FRAMES & HARDWARE | DOOR | PROC | 0001 | PR | 2 |
| 083402-02 |  | GOV APPR - Bullet-Res Comps | 30d | 2021-09-03 | 2021-10-02 | 083402-01 |  |  |  |  | 138d | 1d | 7-D | 08-11-01 DOORS, FRAMES & HARDWARE | USAC | PROC | 0001 | PR | 2 |
| 083402-21 |  | FABR - Bullet-Resistant Comps | 40d | 2021-10-04 | 2021-12-01 | 083402-02 |  |  |  |  | 94d | 84d |  | 08-11-01 DOORS, FRAMES & HARDWARE | DOOR | PROC | 0001 | PR | 3 |
|  | 3459 | **08 34 59 Vault Doors and Day Gates** |  | 2020-05-28 | 2021-11-01 |  |  |  |  |  |  |  |  |  |  |  |  |  |  |
| 083459-01 |  | SUBM - Vault Door & Day Gate | 45d | 2020-05-28 A | 2021-08-05 | PM1050 |  | 25d | 2020-11-02 | 2021-01-12 | 107d | 0d |  | 08-34-59 VAULT DOOR & DATE GATES | DOOR | PROC | 0001 | PR | 2 |
| 083459-02 |  | GOV APPR - Vault Dr & Day Gate | 30d | 2021-08-06 | 2021-09-04 | 083459-01 |  |  |  |  | 159d | 2d | 7-D | 08-34-59 VAULT DOOR & DATE GATES | USAC | PROC | 0001 | PR | 2 |
| 083459-21 |  | FABR - Vault Door & Day Gate | 40d | 2021-09-07 | 2021-11-01 | 083459-02 |  |  |  |  | 108d | 98d |  | 08-34-59 VAULT DOOR & DATE GATES | DOOR | PROC | 0001 | PR | 3 |

Notes:
- 081400-01: Activity Notes: RFI 123 - Color of Stain for Wood Doors

| ID | WBS | Activity | Duration | Start | Finish | Predecessors | Complete | Remaining | Planned start | Planned finish | Total float | Free float | Calendar | Specification | RESP | AREA | BIDI | PHAS | CATW |
| --- | --- | --- | --- | --- | --- | --- | --- | --- | --- | --- | --- | --- | --- | --- | --- | --- | --- | --- | --- |
|  | 3463 | **08 34 63 Detention Hollow Metal Frames, Doors, and Door Frames** |  | 2020-11-02 | 2021-08-26 |  |  |  |  |  |  |  |  |  |  |  |  |  |  |
| 083463-01 |  | SUBM - Deten HM Frames & Drs | 45d | 2020-11-02 A | 2021-03-16 A | PM1050 | 100% |  | 2021-02-01 | 2021-04-05 |  |  |  | 08-34-63 DETENTION DOORS, FRAMES & HARDWARE | DETN | PROC | 0001 | PR | 2 |
| 083463-02 |  | GOV APPR - Det HM Frames & Drs | 30d | 2021-03-16 A | 2021-04-12 A | 083463-01 | 100% |  | 2021-03-13 | 2021-04-11 |  |  | 7-D | 08-34-63 DETENTION DOORS, FRAMES & HARDWARE | USAC | PROC | 0001 | PR | 2 |
| 083463-21 |  | FABR - Detention HM Frames | 40d | 2021-04-13 A | 2021-07-28 | 083463-02 | 100% | 19d | 2021-04-16 | 2021-06-11 | 1d | 0d |  | 08-34-63 DETENTION DOORS, FRAMES & HARDWARE | DETN | PROC | 0001 | PR | 3 |
| 083463-31 |  | FABR - Detention HM Doors | 40d | 2021-04-13 A | 2021-08-26 | 083463-02 |  | 40d | 2021-04-16 | 2021-06-11 | 154d | 144d |  | 08-34-63 DETENTION DOORS, FRAMES & HARDWARE | DETN | PROC | 0001 | PR | 3 |
|  | 4113 | **08 41 13 Aluminum-Framed Entrances and Storefronts (FIO)** |  | 2020-06-01 | 2021-11-15 |  |  |  |  |  |  |  |  |  |  |  |  |  |  |
| 084113-01 |  | SUBM - Alum Entr & Storefront | 45d | 2020-06-01 A | 2021-07-29 | PM1050 |  | 20d | 2020-11-02 | 2021-01-12 | 34d | 0d |  | 08-41-01 STOREFRONTS, GLAZING | GLAZ | PROC | 0001 | PR | 2 |
| 084113-02 |  | QC APPR - Alum Entr & SF | 20d | 2021-03-08 A | 2021-08-12 | 084113-01 |  | 10d | 2021-04-12 | 2021-05-07 | 34d | 0d |  | 08-41-01 STOREFRONTS, GLAZING | PRIM | PROC | 0001 | PR | 2 |
| 084113-03 |  | GOV FIO - Alum Entr & SF | 7d | 2021-03-08 A | 2021-08-19 | 084113-02 |  | 7d | 2021-05-08 | 2021-05-14 | 49d | 0d | 7-D | 08-41-01 STOREFRONTS, GLAZING | USAC | PROC | 0001 | PR | 2 |
| 084113-21 |  | FABR - Alum Entr & Storefront | 60d | 2021-08-20 | 2021-11-15 | 084113-03 |  |  |  |  | 35d | 1d |  | 08-41-01 STOREFRONTS, GLAZING | GLAZ | PROC | 0001 | PR | 3 |
|  | 5663 | **08 56 63 Detention and Security Windows (FIO)** |  | 2021-07-01 | 2021-11-05 |  |  |  |  |  |  |  |  |  |  |  |  |  |  |
| 085663-01 |  | SUBM - Deten & Security Window | 45d | 2021-07-01 | 2021-09-02 | PM1050 |  |  |  |  | 138d | 0d |  | 08-34-63 DETENTION DOORS, FRAMES & HARDWARE | DETN | PROC | 0001 | PR | 2 |
| 085663-02 |  | QC APPR - Deten & Sec Windows | 20d | 2021-09-03 | 2021-10-01 | 085663-01 |  |  |  |  | 138d | 0d |  | 08-34-63 DETENTION DOORS, FRAMES & HARDWARE | PRIM | PROC | 0001 | PR | 2 |
| 085663-03 |  | GOV FIO - Deten & Sec Windows | 7d | 2021-10-02 | 2021-10-08 | 085663-02 |  |  |  |  | 202d | 2d | 7-D | 08-34-63 DETENTION DOORS, FRAMES & HARDWARE | USAC | PROC | 0001 | PR | 2 |
| 085663-21 |  | PROC - Deten & Sec Windows | 20d | 2021-10-11 | 2021-11-05 | 085663-03 |  |  |  |  | 138d | 104d |  | 08-34-63 DETENTION DOORS, FRAMES & HARDWARE | DETN | PROC | 0001 | PR | 3 |
|  | 6200 | **08 62 00 Tubular Daylighting Device** |  | 2020-05-28 | 2021-07-29 |  |  |  |  |  |  |  |  |  |  |  |  |  |  |
| 086200-01 |  | SUBM - Tubular Daylight Device | 36d | 2020-05-28 A | 2021-04-14 A | PM1050 | 100% |  | 2020-11-02 | 2020-12-28 |  |  |  | 13-34-01 METAL BUILDING SYSTEMS | PEMB | PROC | 0001 | PR | 2 |
| 086200-02 |  | GOV APPR - Tube Daylight Dev | 30d | 2021-04-15 A | 2021-04-21 A | 086200-01 | 100% |  | 2021-05-21 | 2021-06-19 |  |  | 7-D | 13-34-01 METAL BUILDING SYSTEMS | USAC | PROC | 0001 | PR | 2 |
| 086200-21 |  | PROC - Tubular Daylight Device | 60d | 2021-04-22 A | 2021-07-29 | 086200-02 |  | 20d | 2021-06-21 | 2021-09-14 | 51d | 0d |  | 13-34-01 METAL BUILDING SYSTEMS | PEMB | PROC | 0001 | PR | 3 |
|  | 7100 | **08 71 00 Door Hardware** |  | 2020-05-28 | 2021-10-04 |  |  |  |  |  |  |  |  |  |  |  |  |  |  |
| 087100-01 |  | SUBM - Door Hardware | 45d | 2020-05-28 A | 2021-07-08 | PM1050 |  | 5d | 2020-11-02 | 2021-01-12 | 89d | 0d |  | 08-11-01 DOORS, FRAMES & HARDWARE | DOOR | PROC | 0001 | PR | 2 |
| 087100-02 |  | GOV APPR - Door Hardware | 30d | 2021-05-04 A | 2021-08-07 | 087100-01 |  | 30d | 2021-05-08 | 2021-06-06 | 127d | 1d | 7-D | 08-11-01 DOORS, FRAMES & HARDWARE | USAC | PROC | 0001 | PR | 2 |
| 087100-21 |  | PROC - Door Hardware | 40d | 2021-08-09 | 2021-10-04 | 087100-02 |  |  |  |  | 86d | 30d |  | 08-11-01 DOORS, FRAMES & HARDWARE | DOOR | PROC | 0001 | PR | 3 |
|  | 7163 | **08 71 63 Detention Hardware (FIO)** |  | 2021-03-01 | 2021-08-26 |  |  |  |  |  |  |  |  |  |  |  |  |  |  |
| 087163-01 |  | SUBM - Detention Hardware | 45d | 2021-03-01 A | 2021-04-01 A | PM1050 | 100% |  | 2021-03-01 | 2021-04-30 |  |  |  | 08-34-63 DETENTION DOORS, FRAMES & HARDWARE | DETN | PROC | 0001 | PR | 2 |
| 087163-02 |  | QC APPR - Detention Hardware | 20d | 2021-03-16 A | 2021-04-01 A | 087163-01 | 100% |  | 2021-05-03 | 2021-05-28 |  |  |  | 08-34-63 DETENTION DOORS, FRAMES & HARDWARE | PRIM | PROC | 0001 | PR | 2 |
| 087163-03 |  | GOV FIO - Detention Hardware | 7d | 2021-03-16 A | 2021-04-14 A | 087163-02 | 100% |  | 2021-05-29 | 2021-06-04 |  |  | 7-D | 08-34-63 DETENTION DOORS, FRAMES & HARDWARE | USAC | PROC | 0001 | PR | 2 |
| 087163-21 |  | PROC - Detention Hardware | 40d | 2021-04-15 A | 2021-08-26 | 087163-03 |  | 40d | 2021-06-01 | 2021-07-27 | 154d | 144d |  | 08-34-63 DETENTION DOORS, FRAMES & HARDWARE | DETN | PROC | 0001 | PR | 3 |

Notes:
- 083463-01: Activity Notes: RFI 112 - Missing Information for Detention Hardware / RFI 114 - Door Frame Type for Opening 1238 / RFI 115 - Commercial Grade Hardware in Detenition Grade Door and / Frame
- 087100-01: Activity Notes: RFI-0172 - Fail Secure Electric Lock with Card Reader Egress / RFI-0174 - Door Strike and Request to Exit Detector
- 087163-01: Activity Notes: RFI 112 - Missing Information for Detention Hardware / RFI 114 - Door Frame Type for Opening 1238 / RFI 115 - Commercial Grade Hardware in Detenition Grade Door and / Frame

| ID | WBS | Activity | Duration | Start | Finish | Predecessors | Complete | Remaining | Planned start | Planned finish | Total float | Free float | Calendar | Specification | RESP | AREA | BIDI | PHAS | CATW |
| --- | --- | --- | --- | --- | --- | --- | --- | --- | --- | --- | --- | --- | --- | --- | --- | --- | --- | --- | --- |
|  | 8100 | **08 81 00 Glazing (FIO)** |  | 2020-06-01 | 2021-07-29 |  |  |  |  |  |  |  |  |  |  |  |  |  |  |
| 088100-01 |  | SUBM - Glazing | 45d | 2020-06-01 A | 2021-04-07 A | PM1050 | 100% |  | 2020-11-02 | 2021-01-12 |  |  |  | 08-41-01 STOREFRONTS, GLAZING | GLAZ | PROC | 0001 | PR | 2 |
| 088100-02 |  | QC APPR - Glazing | 20d | 2021-04-01 A | 2021-04-07 A | 088100-01 | 100% |  | 2021-05-13 | 2021-06-10 |  |  |  | 08-41-01 STOREFRONTS, GLAZING | PRIM | PROC | 0001 | PR | 2 |
| 088100-03 |  | GOV FIO - Glazing | 7d | 2021-04-07 A | 2021-04-07 A | 088100-02 | 100% |  | 2021-06-29 | 2021-07-05 |  |  | 7-D | 08-41-01 STOREFRONTS, GLAZING | USAC | PROC | 0001 | PR | 2 |
| 088100-21 |  | PROC - Glazing | 20d | 2021-07-01 | 2021-07-29 | 088100-03 |  |  |  |  | 110d | 76d |  | 08-41-01 STOREFRONTS, GLAZING | GLAZ | PROC | 0001 | PR | 3 |
|  | 8853 | **08 88 53 Detention and Security Glazing (FIO)** |  | 2021-01-04 | 2021-07-29 |  |  |  |  |  |  |  |  |  |  |  |  |  |  |
| 088853-01 |  | SUBM - Deten & Security Glaz | 45d | 2021-01-04 A | 2021-02-05 A | PM1050 | 100% |  | 2021-02-01 | 2021-04-05 |  |  |  | 08-34-63 DETENTION DOORS, FRAMES & HARDWARE | DETN | PROC | 0001 | PR | 2 |
| 088853-02 |  | QC APPR - Deten & Secur Glaz | 20d | 2021-02-05 A | 2021-02-10 A | 088853-01 | 100% |  | 2021-04-06 | 2021-05-03 |  |  |  | 08-34-63 DETENTION DOORS, FRAMES & HARDWARE | PRIM | PROC | 0001 | PR | 2 |
| 088853-03 |  | GOV FIO - Deten & Secur Glaz | 7d | 2021-02-10 A | 2021-02-15 A | 088853-02 | 100% |  | 2021-05-04 | 2021-05-10 |  |  | 7-D | 08-34-63 DETENTION DOORS, FRAMES & HARDWARE | USAC | PROC | 0001 | PR | 2 |
| 088853-21 |  | PROC - Deten & Security Glaz | 20d | 2021-03-02 A | 2021-07-29 | 088853-03 |  | 20d | 2021-03-01 | 2021-03-26 | 208d | 174d |  | 08-34-63 DETENTION DOORS, FRAMES & HARDWARE | DETN | PROC | 0001 | PR | 3 |
|  | 9100 | **08 91 00 Metal Wall Louvers** |  | 2021-07-01 | 2021-12-01 |  |  |  |  |  |  |  |  |  |  |  |  |  |  |
| 089100-01 |  | SUBM - Metal Wall Louvers | 45d | 2021-07-01 | 2021-09-02 | PM1050 |  |  |  |  | 134d | 0d |  | 23-05-01 HVAC | HVAC | PROC | 0003 | PR | 2 |
| 089100-02 |  | QC APPR - Metal Wall Louvers | 10d | 2021-09-03 | 2021-09-17 | 089100-01 |  |  |  |  | 134d | 0d |  | 23-05-01 HVAC | PRIM | PROC | 0003 | PR | 2 |
| 089100-03 |  | SUBM SAMP - Metal Wall Louvers | 10d | 2021-09-20 | 2021-10-01 | 089100-02 |  |  |  |  | 134d | 0d |  | 23-05-01 HVAC | HVAC | PROC | 0003 | PR | 2 |
| 089100-13 |  | GOV APPR SAMP - Metal Louvers | 30d | 2021-10-02 | 2021-10-31 | 089100-03 |  |  |  |  | 196d | 0d | 7-D | 23-05-01 HVAC | USAC | PROC | 0003 | PR | 2 |
| 089100-21 |  | PROC - Metal Wall Louvers | 20d | 2021-11-01 | 2021-12-01 | 089100-13 |  |  |  |  | 134d | 0d |  | 23-05-01 HVAC | HVAC | PROC | 0003 | PR | 3 |
|  | 09 | **Division 09 - Finishes** |  | 2020-05-28 | 2021-10-22 |  |  |  |  |  |  |  |  |  |  |  |  |  |  |
|  | 2200 | **09 22 00 Supports for Plaster and Gypsum Board** |  | 2021-04-01 | 2021-06-15 |  |  |  |  |  |  |  |  |  |  |  |  |  |  |
| 092200-01 |  | SUBM - Support for Plast, Gyp | 20d | 2021-04-01 A | 2021-05-03 A | PM1050 | 100% |  | 2021-04-01 | 2021-04-28 |  |  |  | 09-29-01 FRAMING & DRYWALL | FRAM | PROC | 0001 | PR | 2 |
| 092200-02 |  | GOV APPR - Supp for Plast, Gyp | 30d | 2021-05-04 A | 2021-06-15 A | 092200-01 | 100% |  | 2021-05-22 | 2021-06-20 |  |  | 7-D | 09-29-01 FRAMING & DRYWALL | USAC | PROC | 0001 | PR | 2 |
|  | 2423 | **09 24 23 Cement Stucco** |  | 2021-07-01 | 2021-09-25 |  |  |  |  |  |  |  |  |  |  |  |  |  |  |
| 092423-01 |  | SUBM - Cement Stucco | 20d | 2021-07-01 | 2021-07-29 | PM1050 |  |  |  |  | 74d | 0d |  | 09-29-01 FRAMING & DRYWALL | FRAM | PROC | 0001 | PR | 2 |
| 092423-02 |  | QC APPR - Cement Stucco | 10d | 2021-07-30 | 2021-08-12 | 092423-01 |  |  |  |  | 74d | 0d |  | 09-29-01 FRAMING & DRYWALL | PRIM | PROC | 0001 | PR | 2 |
| 092423-03 |  | SUBM SAMP Panel - Stucco | 10d | 2021-08-13 | 2021-08-26 | 092423-02 |  |  |  |  | 74d | 0d |  | 09-29-01 FRAMING & DRYWALL | FRAM | PROC | 0001 | PR | 2 |
| 092423-13 |  | GOV APPR SAMP Panel - Stucco | 30d | 2021-08-27 | 2021-09-25 | 092423-03 |  |  |  |  | 110d | 88d | 7-D | 09-29-01 FRAMING & DRYWALL | USAC | PROC | 0001 | PR | 2 |

| ID | WBS | Activity | Duration | Start | Finish | Predecessors | Complete | Remaining | Planned start | Planned finish | Total float | Free float | Calendar | Specification | RESP | AREA | BIDI | PHAS | CATW |
| --- | --- | --- | --- | --- | --- | --- | --- | --- | --- | --- | --- | --- | --- | --- | --- | --- | --- | --- | --- |
|  | 2900 | **09 29 00 Gypsum Board** |  | 2021-04-01 | 2021-04-20 |  |  |  |  |  |  |  |  |  |  |  |  |  |  |
| 092900-01 |  | SUBM - Gypsum Board | 20d | 2021-04-01 A | 2021-04-07 A | PM1050 | 100% |  | 2021-04-01 | 2021-04-28 |  |  |  | 09-29-01 FRAMING & DRYWALL | FRAM | PROC | 0001 | PR | 2 |
| 092900-02 |  | GOV APPR - Gypsum Board | 30d | 2021-04-08 A | 2021-04-20 A | 092900-01 | 100% |  | 2021-04-29 | 2021-05-28 |  |  | 7-D | 09-29-01 FRAMING & DRYWALL | USAC | PROC | 0001 | PR | 2 |
|  | 3010 | **09 30 10 Tiling (FIO)** |  | 2021-07-01 | 2021-10-22 |  |  |  |  |  |  |  |  |  |  |  |  |  |  |
| 093010-01 |  | SUBM - Tiling | 40d | 2021-07-01 | 2021-08-26 | PM1050 |  |  |  |  | 106d | 0d |  | 09-30-13 CERAMIC TILE | TILE | PROC | 0001 | PR | 2 |
| 093010-02 |  | QC APPR - Tiling | 15d | 2021-08-27 | 2021-09-17 | 093010-01 |  |  |  |  | 106d | 0d |  | 09-30-13 CERAMIC TILE | PRIM | PROC | 0001 | PR | 2 |
| 093010-03 |  | GOV FIO - Tiling | 7d | 2021-09-18 | 2021-09-24 | 093010-02 |  |  |  |  | 158d | 2d | 7-D | 09-30-13 CERAMIC TILE | USAC | PROC | 0001 | PR | 2 |
| 093010-13 |  | PROC - Tiling | 20d | 2021-09-27 | 2021-10-22 | 093010-03 |  |  |  |  | 106d | 37d |  | 09-30-13 CERAMIC TILE | TILE | PROC | 0001 | PR | 2 |
|  | 5100 | **09 51 00 Acoustical Ceilings (FIO)** |  | 2020-05-28 | 2021-08-19 |  |  |  |  |  |  |  |  |  |  |  |  |  |  |
| 095100-01 |  | SUBM - Acoustical Ceilings | 40d | 2020-05-28 A | 2021-07-08 | PM1050 |  | 5d | 2020-11-02 | 2021-01-05 | 113d | 0d |  | 09-51-01 ACOUSTICAL CEILINGS | ACOU | PROC | 0001 | PR | 2 |
| 095100-02 |  | QC APPR - Acoustical Ceilings | 15d | 2021-06-01 A | 2021-07-15 | 095100-01 |  | 5d | 2021-07-14 | 2021-08-03 | 113d | 0d |  | 09-51-01 ACOUSTICAL CEILINGS | PRIM | PROC | 0001 | PR | 2 |
| 095100-03 |  | GOV FIO - Acoustical Ceilings | 7d | 2021-06-18 A | 2021-07-22 | 095100-02 |  | 7d | 2021-08-04 | 2021-08-10 | 166d | 0d | 7-D | 09-51-01 ACOUSTICAL CEILINGS | USAC | PROC | 0001 | PR | 2 |
| 095100-13 |  | PROC - Acoustical Ceilings | 20d | 2021-07-23 | 2021-08-19 | 095100-03 |  |  |  |  | 112d | 75d |  | 09-51-01 ACOUSTICAL CEILINGS | ACOU | PROC | 0001 | PR | 2 |
|  | 6238 | **09 62 38 Static-Control Flooring** |  | 2021-07-01 | 2021-09-27 |  |  |  |  |  |  |  |  |  |  |  |  |  |  |
| 096238-01 |  | SUBM - Static-Control Flooring | 20d | 2021-07-01 | 2021-07-29 | PM1050 |  |  |  |  | 65d | 0d |  | 09-60-01 RESILIENT FLOORING | FLOO | PROC | 0001 | PR | 2 |
| 096238-02 |  | GOV APPR - Static-Control Flrg | 30d | 2021-07-30 | 2021-08-28 | 096238-01 |  |  |  |  | 93d | 1d | 7-D | 09-60-01 RESILIENT FLOORING | USAC | PROC | 0001 | PR | 2 |
| 096238-12 |  | PROC - Static-Control Flooring | 20d | 2021-08-30 | 2021-09-27 | 096238-02 |  |  |  |  | 62d | 45d |  | 09-60-01 RESILIENT FLOORING | FLOO | PROC | 0001 | PR | 3 |
|  | 6500 | **09 65 00 Resilient Flooring (FIO)** |  | 2021-07-01 | 2021-10-22 |  |  |  |  |  |  |  |  |  |  |  |  |  |  |
| 096500-01 |  | SUBM - Resilient Flooring | 40d | 2021-07-01 | 2021-08-26 | PM1050 |  |  |  |  | 111d | 0d |  | 09-60-01 RESILIENT FLOORING | FLOO | PROC | 0001 | PR | 2 |
| 096500-02 |  | QC APPR - Resilient Flooring | 15d | 2021-08-27 | 2021-09-17 | 096500-01 |  |  |  |  | 111d | 0d |  | 09-60-01 RESILIENT FLOORING | PRIM | PROC | 0001 | PR | 2 |
| 096500-03 |  | GOV FIO - Resilient Flooring | 7d | 2021-09-18 | 2021-09-24 | 096500-02 |  |  |  |  | 165d | 2d | 7-D | 09-60-01 RESILIENT FLOORING | USAC | PROC | 0001 | PR | 2 |
| 096500-13 |  | PROC - Resilient Flooring | 20d | 2021-09-27 | 2021-10-22 | 096500-03 |  |  |  |  | 111d | 62d |  | 09-60-01 RESILIENT FLOORING | FLOO | PROC | 0001 | PR | 2 |
|  | 6566 | **09 65 66 Resilient Athletic Flooring (FIO)** |  | 2021-07-01 | 2021-10-22 |  |  |  |  |  |  |  |  |  |  |  |  |  |  |
| 096566-01 |  | SUBM - Athletic Flooring | 40d | 2021-07-01 | 2021-08-26 | PM1050 |  |  |  |  | 138d | 0d |  | 09-60-01 RESILIENT FLOORING | FLOO | PROC | 0001 | PR | 2 |
| 096566-02 |  | QC APPR - Athletic Flooring | 15d | 2021-08-27 | 2021-09-17 | 096566-01 |  |  |  |  | 138d | 0d |  | 09-60-01 RESILIENT FLOORING | PRIM | PROC | 0001 | PR | 2 |
| 096566-03 |  | GOV FIO - Athletic Flooring | 7d | 2021-09-18 | 2021-09-24 | 096566-02 |  |  |  |  | 202d | 2d | 7-D | 09-60-01 RESILIENT FLOORING | USAC | PROC | 0001 | PR | 2 |
| 096566-13 |  | PROC - Athletic Flooring | 20d | 2021-09-27 | 2021-10-22 | 096566-03 |  |  |  |  | 138d | 78d |  | 09-60-01 RESILIENT FLOORING | FLOO | PROC | 0001 | PR | 2 |

| ID | WBS | Activity | Duration | Start | Finish | Predecessors | Complete | Remaining | Planned start | Planned finish | Total float | Free float | Calendar | Specification | RESP | AREA | BIDI | PHAS | CATW |
| --- | --- | --- | --- | --- | --- | --- | --- | --- | --- | --- | --- | --- | --- | --- | --- | --- | --- | --- | --- |
|  | 6726 | **09 67 26 Quartz Flooring (FIO)** |  | 2021-07-01 | 2021-09-24 |  |  |  |  |  |  |  |  |  |  |  |  |  |  |
| 096726-01 |  | SUBM - Quartz Flooring | 40d | 2021-07-01 | 2021-08-26 | PM1050 |  |  |  |  | 105d | 0d |  | 09-63-43 QUARTZ FLOORING | PAIN | PROC | 0001 | PR | 2 |
| 096726-02 |  | QC APPR - Quartz Flooring | 15d | 2021-08-27 | 2021-09-17 | 096726-01 |  |  |  |  | 105d | 0d |  | 09-63-43 QUARTZ FLOORING | PRIM | PROC | 0001 | PR | 2 |
| 096726-03 |  | GOV FIO - Quartz Flooring | 7d | 2021-09-18 | 2021-09-24 | 096726-02 |  |  |  |  | 157d | 75d | 7-D | 09-63-43 QUARTZ FLOORING | USAC | PROC | 0001 | PR | 2 |
|  | 6800 | **09 68 00 Carpeting (FIO)** |  | 2021-07-01 | 2021-10-22 |  |  |  |  |  |  |  |  |  |  |  |  |  |  |
| 096800-01 |  | SUBM - Carpeting | 40d | 2021-07-01 | 2021-08-26 | PM1050 |  |  |  |  | 91d | 0d |  | 09-60-01 RESILIENT FLOORING | FLOO | PROC | 0001 | PR | 2 |
| 096800-02 |  | QC APPR - Carpeting | 15d | 2021-08-27 | 2021-09-17 | 096800-01 |  |  |  |  | 91d | 0d |  | 09-60-01 RESILIENT FLOORING | PRIM | PROC | 0001 | PR | 2 |
| 096800-03 |  | GOV FIO - Carpeting | 7d | 2021-09-18 | 2021-09-24 | 096800-02 |  |  |  |  | 136d | 2d | 7-D | 09-60-01 RESILIENT FLOORING | USAC | PROC | 0001 | PR | 2 |
| 096800-13 |  | PROC - Carpeting | 20d | 2021-09-27 | 2021-10-22 | 096800-03 |  |  |  |  | 91d | 63d |  | 09-60-01 RESILIENT FLOORING | FLOO | PROC | 0001 | PR | 2 |
|  | 6919 | **09 69 19 Stringerless Access Flooring (FIO)** |  | 2020-11-02 | 2021-09-17 |  |  |  |  |  |  |  |  |  |  |  |  |  |  |
| 096919-01 |  | SUBM - Access Flooring | 40d | 2020-11-02 A | 2021-07-15 | PM1050 |  | 10d | 2021-04-01 | 2021-05-26 | 150d | 0d |  | 09-69-19 STRINGLESS ACCESS FLOORING | AFLR | PROC | 0001 | PR | 2 |
| 096919-02 |  | QC APPR - Access Flooring | 15d | 2021-06-01 A | 2021-06-17 A | 096919-01 | 100% |  | 2021-07-28 | 2021-08-17 |  |  |  | 09-69-19 STRINGLESS ACCESS FLOORING | PRIM | PROC | 0001 | PR | 2 |
| 096919-03 |  | GOV FIO - Access Flooring | 7d | 2021-06-16 A | 2021-07-22 | 096919-02 |  | 7d | 2021-08-18 | 2021-08-24 | 221d | 0d | 7-D | 09-69-19 STRINGLESS ACCESS FLOORING | USAC | PROC | 0001 | PR | 2 |
| 096919-13 |  | PROC - Access Flooring | 40d | 2021-07-23 | 2021-09-17 | 096919-03 |  |  |  |  | 150d | 88d |  | 09-69-19 STRINGLESS ACCESS FLOORING | AFLR | PROC | 0001 | PR | 3 |
|  | 8420 | **09 84 20 Acoustical Panels** |  | 2021-07-01 | 2021-08-28 |  |  |  |  |  |  |  |  |  |  |  |  |  |  |
| 098420-01 |  | SUBM - Acoustical Panels | 20d | 2021-07-01 | 2021-07-29 | PM1050 |  |  |  |  | 186d | 0d |  | 09-83-13 ACOUSTIC WALL PANELS | ACWL | PROC | 0001 | PR | 2 |
| 098420-02 |  | GOV APPR - Acoustical Panels | 30d | 2021-07-30 | 2021-08-28 | 098420-01 |  |  |  |  | 271d | 157d | 7-D | 09-83-13 ACOUSTIC WALL PANELS | USAC | PROC | 0001 | PR | 2 |
|  | 9000 | **09 90 00 Paints and Coatings (FIO)** |  | 2021-07-01 | 2021-09-24 |  |  |  |  |  |  |  |  |  |  |  |  |  |  |
| 099000-01 |  | SUBM - Paints & Coatings | 40d | 2021-07-01 | 2021-08-26 | PM1050 |  |  |  |  | 37d | 0d |  | 09-91-01 PAINTING & COATINGS | PAIN | PROC | 0001 | PR | 2 |
| 099000-02 |  | QC APPR - Paints & Coatings | 15d | 2021-08-27 | 2021-09-17 | 099000-01 |  |  |  |  | 37d | 0d |  | 09-91-01 PAINTING & COATINGS | PRIM | PROC | 0001 | PR | 2 |
| 099000-03 |  | GOV FIO - Paints & Coatings | 7d | 2021-09-18 | 2021-09-24 | 099000-02 |  |  |  |  | 53d | 37d | 7-D | 09-91-01 PAINTING & COATINGS | USAC | PROC | 0001 | PR | 2 |
|  | 971316 | **09 97 13.16 Interior Coating of Welded Steel Water Tanks (FIO)** |  |  |  |  |  |  |  |  |  |  |  |  |  |  |  |  |  |
|  | 971317 | **09 97 13.17 Three Coat Epoxy Interior Coating of Welded Steel Fuel Tank (FIO)** |  |  |  |  |  |  |  |  |  |  |  |  |  |  |  |  |  |
|  | 971327 | **09 97 13.27 Exterior Coating of Steel Structures (FIO)** |  |  |  |  |  |  |  |  |  |  |  |  |  |  |  |  |  |
|  | 10 | **Division 10 - Specialties** |  | 2020-05-28 | 2021-11-23 |  |  |  |  |  |  |  |  |  |  |  |  |  |  |
|  | 1100 | **10 11 00 Visual Display Units (FIO)** |  |  |  |  |  |  |  |  |  |  |  |  |  |  |  |  |  |
|  | 140010 | **10 14 00.10 Exterior Signage (FIO)** |  | 2021-07-01 | 2021-09-17 |  |  |  |  |  |  |  |  |  |  |  |  |  |  |
| 101400-01 |  | SUBM - Exterior Signage | 20d | 2021-07-01 | 2021-07-29 | PM1050 |  |  |  |  | 168d | 0d |  | 10-14-01 BUILDING SIGNAGE | SIGN | PROC | 0001 | PR | 2 |
| 101400-02 |  | QC APPR - Exterior Signage | 10d | 2021-07-30 | 2021-08-12 | 101400-01 |  |  |  |  | 168d | 0d |  | 10-14-01 BUILDING SIGNAGE | PRIM | PROC | 0001 | PR | 2 |
| 101400-03 |  | GOV FIO - Exterior Signage | 7d | 2021-08-13 | 2021-08-19 | 101400-02 |  |  |  |  | 245d | 0d | 7-D | 10-14-01 BUILDING SIGNAGE | USAC | PROC | 0001 | PR | 2 |
| 101400-09 |  | PROC - Exterior Signage | 20d | 2021-08-20 | 2021-09-17 | 101400-03 |  |  |  |  | 168d | 144d |  | 10-14-01 BUILDING SIGNAGE | SIGN | PROC | 0001 | PR | 3 |

| ID | WBS | Activity | Duration | Start | Finish | Predecessors | Complete | Remaining | Planned start | Planned finish | Total float | Free float | Calendar | Specification | RESP | AREA | BIDI | PHAS | CATW |
| --- | --- | --- | --- | --- | --- | --- | --- | --- | --- | --- | --- | --- | --- | --- | --- | --- | --- | --- | --- |
|  | 140020 | **10 14 00.20 Interior Signage** |  | 2021-07-01 | 2021-09-27 |  |  |  |  |  |  |  |  |  |  |  |  |  |  |
| 101400-20 |  | SUBM - Interior Signage | 20d | 2021-07-01 | 2021-07-29 | PM1050 |  |  |  |  | 161d | 0d |  | 10-14-01 BUILDING SIGNAGE | SIGN | PROC | 0001 | PR | 2 |
| 101400-21 |  | GOV APPR - Interior Signage | 30d | 2021-07-30 | 2021-08-28 | 101400-20 |  |  |  |  | 236d | 1d | 7-D | 10-14-01 BUILDING SIGNAGE | USAC | PROC | 0001 | PR | 2 |
| 101400-29 |  | PROC - Interior Signage | 20d | 2021-08-30 | 2021-09-27 | 101400-21 |  |  |  |  | 162d | 138d |  | 10-14-01 BUILDING SIGNAGE | SIGN | PROC | 0001 | PR | 3 |
|  | 1453 | **10 14 53 Onsite Traffic Signage (FIO)** |  |  |  |  |  |  |  |  |  |  |  |  |  |  |  |  |  |
|  | 2113 | **10 21 13 Toilet Compartments** |  | 2020-05-28 | 2021-09-27 |  |  |  |  |  |  |  |  |  |  |  |  |  |  |
| 101453-01 |  | SUBM - Toilet Compartments | 20d | 2020-05-28 A | 2021-07-29 | PM1050 |  | 20d | 2020-11-02 | 2020-12-02 | 159d | 0d |  | 10-22-01 TOILET COMPARTMENTS & ACCESSORIES | TOIL | PROC | 0001 | PR | 2 |
| 101453-02 |  | GOV APPR - Toilet Compartments | 30d | 2021-07-30 | 2021-08-28 | 101453-01 |  |  |  |  | 233d | 1d | 7-D | 10-22-01 TOILET COMPARTMENTS & ACCESSORIES | USAC | PROC | 0001 | PR | 2 |
| 101453-09 |  | PROC - Toilet Compartments | 20d | 2021-08-30 | 2021-09-27 | 101453-02 |  |  |  |  | 159d | 100d |  | 10-22-01 TOILET COMPARTMENTS & ACCESSORIES | TOIL | PROC | 0001 | PR | 3 |
|  | 2213 | **10 22 13 Wire Mesh Partitions (FIO)** |  | 2021-04-01 | 2021-07-29 |  |  |  |  |  |  |  |  |  |  |  |  |  |  |
| 102213-01 |  | SUBM - Wire Mesh Paritions | 60d | 2021-04-01 A | 2021-04-07 A | PM1050 | 100% |  | 2021-04-01 | 2021-06-24 |  |  |  | 10-22-13 WIRE MESH PARTITIONS | WIRE | PROC | 0001 | PR | 2 |
| 102213-02 |  | QC APPR - Wire Mesh Partitions | 10d | 2021-04-07 A | 2021-04-12 A | 102213-01 | 100% |  | 2021-06-25 | 2021-07-09 |  |  |  | 10-22-13 WIRE MESH PARTITIONS | PRIM | PROC | 0001 | PR | 2 |
| 102213-03 |  | GOV FIO - Wire Mesh Partitions | 7d | 2021-04-13 A | 2021-04-13 A | 102213-02 | 100% |  | 2021-07-10 | 2021-07-16 |  |  | 7-D | 10-22-13 WIRE MESH PARTITIONS | USAC | PROC | 0001 | PR | 2 |
| 102213-09 |  | PROC - Wire Mesh Partitions | 20d | 2021-04-14 A | 2021-07-29 | 102213-03 |  | 20d | 2021-07-19 | 2021-08-13 | 225d | 142d |  | 10-22-13 WIRE MESH PARTITIONS | WIRE | PROC | 0001 | PR | 3 |
|  | 2239 | **10 22 39 Folding Panel Partitions (FIO)** |  | 2020-05-28 | 2021-09-14 |  |  |  |  |  |  |  |  |  |  |  |  |  |  |
| 102239-01 |  | SUBM - Folding Panel Partition | 40d | 2020-05-28 A | 2021-06-03 A | PM1050 | 100% |  | 2020-11-02 | 2021-01-05 |  |  |  | 10-22-16 FOLDING PANEL PATITIONS | PART | PROC | 0001 | PR | 2 |
| 102239-02 |  | QC APPR - Fold Panel Partition | 15d | 2021-05-28 A | 2021-06-07 A | 102239-01 | 100% |  | 2021-06-08 | 2021-06-28 |  |  |  | 10-22-16 FOLDING PANEL PATITIONS | PRIM | PROC | 0005 | PR | 2 |
| 102239-12 |  | GOV FIO - Fold Panel Partition | 7d | 2021-06-08 A | 2021-07-01 | 102239-02 |  | 1d | 2021-06-08 | 2021-06-14 | 200d | 0d | 7-D | 10-22-16 FOLDING PANEL PATITIONS | USAC | PROC | 0005 | PR | 2 |
| 102239-08 |  | Field Measure - Fod Panel Part | 1d | 2021-07-02 | 2021-07-02 | 1STA100, 102239-12 |  |  |  |  | 135d | 0d |  | 10-22-16 FOLDING PANEL PATITIONS | PART | BLD1 | 0001 | PR | 3 |
| 102239-09 |  | PROC - Fold Panel Part Tracks | 30d | 2021-07-06 | 2021-08-16 | 102239-12, 102239-08 |  |  |  |  | 135d | 3d |  | 10-22-16 FOLDING PANEL PATITIONS | PART | PROC | 0001 | PR | 3 |
| 102239-10 |  | PROC - Fold Panel Part Panels | 50d | 2021-07-06 | 2021-09-14 | 102239-12, 102239-08 |  |  |  |  | 176d | 108d |  | 10-22-16 FOLDING PANEL PATITIONS | PART | PROC | 0001 | PR | 3 |
|  | 2600 | **10 26 00 Wall Protection** |  | 2021-07-01 | 2021-10-11 |  |  |  |  |  |  |  |  |  |  |  |  |  |  |
| 102600-01 |  | SUBM - Wall Protection | 20d | 2021-07-01 | 2021-07-29 | PM1050 |  |  |  |  | 130d | 0d |  | 10-26-01 WALL AND DOOR PROTECTION | PAIN | PROC | 0001 | PR | 2 |
| 102600-02 |  | GOV APPR - Wall Protection | 30d | 2021-07-30 | 2021-08-28 | 102600-01 |  |  |  |  | 192d | 1d | 7-D | 10-26-01 WALL AND DOOR PROTECTION | USAC | PROC | 0001 | PR | 2 |
| 102600-09 |  | PROC - Wall Protection | 30d | 2021-08-30 | 2021-10-11 | 102600-02 |  |  |  |  | 130d | 81d |  | 10-26-01 WALL AND DOOR PROTECTION | PAIN | PROC | 0001 | PR | 3 |

| ID | WBS | Activity | Duration | Start | Finish | Predecessors | Complete | Remaining | Planned start | Planned finish | Total float | Free float | Calendar | Specification | RESP | AREA | BIDI | PHAS | CATW |
| --- | --- | --- | --- | --- | --- | --- | --- | --- | --- | --- | --- | --- | --- | --- | --- | --- | --- | --- | --- |
|  | 2641 | **10 26 41 Bullet Resistant Panels** |  | 2021-03-01 | 2021-07-29 |  |  |  |  |  |  |  |  |  |  |  |  |  |  |
| 102641-01 |  | SUBM - Bullet Resistant Panels | 20d | 2021-03-01 A | 2021-04-26 A | PM1050 | 100% |  | 2021-04-01 | 2021-04-28 |  |  |  | 09-29-01 FRAMING & DRYWALL | FRAM | PROC | 0001 | PR | 2 |
| 102641-02 |  | GOV APPR - Bullet Resist Panel | 30d | 2021-04-14 A | 2021-05-18 A | 102641-01 | 100% |  | 2021-04-29 | 2021-05-28 |  |  | 7-D | 09-29-01 FRAMING & DRYWALL | USAC | PROC | 0001 | PR | 2 |
| 102641-09 |  | PROC - Bullet Resistant Panels | 20d | 2021-05-19 A | 2021-07-29 | 102641-02 |  | 20d | 2021-06-14 | 2021-07-12 | 66d | 31d |  | 09-29-01 FRAMING & DRYWALL | FRAM | PROC | 0001 | PR | 3 |
|  | 2813 | **10 28 13 Toilet Accessories** |  | 2020-05-28 | 2021-09-10 |  |  |  |  |  |  |  |  |  |  |  |  |  |  |
| 102813-01 |  | SUBM - Toilet Accessories | 20d | 2020-05-28 A | 2021-07-13 | PM1050 |  | 8d | 2020-11-02 | 2020-12-02 | 178d | 0d |  | 10-22-01 TOILET COMPARTMENTS & ACCESSORIES | TOIL | PROC | 0001 | PR | 2 |
| 102813-02 |  | GOV APPR - Toilet Accessories | 30d | 2021-07-14 | 2021-08-12 | 102813-01 |  |  |  |  | 259d | 0d | 7-D | 10-22-01 TOILET COMPARTMENTS & ACCESSORIES | USAC | PROC | 0001 | PR | 2 |
| 102813-09 |  | PROC - Toilet Accessories | 20d | 2021-08-13 | 2021-09-10 | 102813-02 |  |  |  |  | 178d | 119d |  | 10-22-01 TOILET COMPARTMENTS & ACCESSORIES | TOIL | PROC | 0001 | PR | 3 |
|  | 3500 | **10 35 00 Flagpoles (FIO)** |  | 2020-05-28 | 2021-08-19 |  |  |  |  |  |  |  |  |  |  |  |  |  |  |
| 103500-01 |  | SUBM - Flagpoles | 20d | 2020-05-28 A | 2021-06-01 A | PM1050 | 100% |  | 2020-11-02 | 2020-12-02 |  |  |  | 10-75-01 FLAGPOLES | TOIL | PROC | 0005 | PR | 2 |
| 103500-02 |  | QC APPR - Flagpoles | 15d | 2021-05-27 A | 2021-06-01 A | 103500-01 | 100% |  | 2021-06-29 | 2021-07-20 |  |  |  | 10-75-01 FLAGPOLES | PRIM | PROC | 0005 | PR | 2 |
| 103500-12 |  | GOV FIO - Flagpoles | 7d | 2021-06-02 A | 2021-06-07 A | 103500-02 | 100% |  | 2021-06-03 | 2021-06-09 |  |  | 7-D | 10-75-01 FLAGPOLES | USAC | PROC | 0005 | PR | 2 |
| 103500-09 |  | PROC - Flagpoles | 35d | 2021-06-08 A | 2021-08-19 | 103500-12 |  | 35d | 2021-06-10 | 2021-07-29 | 107d | 62d |  | 10-75-01 FLAGPOLES | TOIL | PROC | 0005 | PR | 3 |
|  | 4416 | **10 44 16 Fire Extinguishers** |  | 2020-05-28 | 2021-09-10 |  |  |  |  |  |  |  |  |  |  |  |  |  |  |
| 104416-01 |  | SUBM - Fire Extinguishers | 20d | 2020-05-28 A | 2021-07-13 | PM1050 |  | 8d | 2020-11-02 | 2020-12-02 | 178d | 0d |  | 10-44-13 FIRE EXTINGUSHERS | PRIM | PROC | 0001 | PR | 2 |
| 104416-02 |  | GOV APPR - Fire Extinguishers | 30d | 2021-07-14 | 2021-08-12 | 104416-01 |  |  |  |  | 259d | 0d | 7-D | 10-44-13 FIRE EXTINGUSHERS | USAC | PROC | 0001 | PR | 2 |
| 104416-09 |  | PROC - Fire Extinguishers | 20d | 2021-08-13 | 2021-09-10 | 104416-02 |  |  |  |  | 178d | 134d |  | 10-44-13 FIRE EXTINGUSHERS | PRIM | PROC | 0001 | PR | 3 |
|  | 5113 | **10 51 13 Metal Lockers** |  | 2021-07-01 | 2021-11-23 |  |  |  |  |  |  |  |  |  |  |  |  |  |  |
| 105113-01 |  | SUBM - Metal Lockers | 20d | 2021-07-01 | 2021-07-29 | PM1050 |  |  |  |  | 106d | 0d |  | 10-51-01 METAL LOCKERS | LCKR | PROC | 0001 | PR | 2 |
| 105113-02 |  | GOV APPR - Metal Lockers | 30d | 2021-07-30 | 2021-08-28 | 105113-01 |  |  |  |  | 158d | 1d | 7-D | 10-51-01 METAL LOCKERS | USAC | PROC | 0001 | PR | 2 |
| 105113-09 |  | PROC - Metal Lockers | 60d | 2021-08-30 | 2021-11-23 | 105113-02 |  |  |  |  | 107d | 26d |  | 10-51-01 METAL LOCKERS | LCKR | PROC | 0001 | PR | 3 |
|  | 5613 | **10 56 13 Shelving CFCI (FIO)** |  | 2021-07-01 | 2021-11-23 |  |  |  |  |  |  |  |  |  |  |  |  |  |  |
| 105613-01 |  | SUBM - Shelving | 20d | 2021-07-01 | 2021-07-29 | PM1050 |  |  |  |  | 116d | 0d |  | 10-56-13 SHELVING (CFCI) | LCKR | PROC | 0001 | PR | 2 |
| 105613-02 |  | GOV APPR - Shelving | 30d | 2021-07-30 | 2021-08-28 | 105613-01 |  |  |  |  | 172d | 1d | 7-D | 10-56-13 SHELVING (CFCI) | USAC | PROC | 0001 | PR | 2 |
| 105613-09 |  | PROC - Shelving | 60d | 2021-08-30 | 2021-11-23 | 105613-02 |  |  |  |  | 117d | 83d |  | 10-56-13 SHELVING (CFCI) | LCKR | PROC | 0001 | PR | 3 |

| ID | WBS | Activity | Duration | Start | Finish | Predecessors | Remaining | Planned start | Planned finish | Total float | Free float | Calendar | Resources | Cost | Specification | RESP | AREA | BIDI | PHAS | CATW | CS | WRKP |
| --- | --- | --- | --- | --- | --- | --- | --- | --- | --- | --- | --- | --- | --- | --- | --- | --- | --- | --- | --- | --- | --- | --- |
|  | 7000 | **10 70 00 Exterior Sun Control Devices** |  | 2021-03-01 | 2021-10-22 |  |  |  |  |  |  |  |  |  |  |  |  |  |  |  |  |  |
| 107000-01 |  | SUBM - Ext Sun Ctrl Devices | 60d | 2021-03-01 A | 2021-07-13 | PM1050 | 8d | 2021-03-01 | 2021-05-21 | 161d | 0d |  |  |  | 10-71-13 EXTERIOR SUN CONTROL DEVICES | GLAZ | PROC | 0001 | PR | 2 |  |  |
| 107000-02 |  | GOV APPR - Ext Sun Ctrl Device | 30d | 2021-03-24 A | 2021-08-12 | 107000-01 | 30d | 2021-05-22 | 2021-06-20 | 236d | 0d | 7-D |  |  | 10-71-13 EXTERIOR SUN CONTROL DEVICES | USAC | PROC | 0001 | PR | 2 |  |  |
| 107000-09 |  | PROC - Ext Sun Ctrl Devices | 50d | 2021-08-13 | 2021-10-22 | 107000-02 |  |  |  | 161d | 79d |  |  |  | 10-71-13 EXTERIOR SUN CONTROL DEVICES | GLAZ | PROC | 0001 | PR | 3 |  |  |
|  | 11 | **Division 11 - Equipment** |  | 2021-07-01 | 2022-01-21 |  |  |  |  |  |  |  |  |  |  |  |  |  |  |  |  |  |
|  | 3113 | **11 31 13 Electric Kitchen Equipment CFCI (FIO)** |  |  |  |  |  |  |  |  |  |  |  |  |  |  |  |  |  |  |  |  |
|  | 6613 | **11 66 13 Exercise Equipment CFCI (FIO)** |  |  |  |  |  |  |  |  |  |  |  |  |  |  |  |  |  |  |  |  |
|  | 6623 | **11 66 23 Combat Ring Panels (FIO)** |  |  |  |  |  |  |  |  |  |  |  |  |  |  |  |  |  |  |  |  |
|  | 9819 | **11 98 19 Detention Padding (FIO)** |  | 2021-07-01 | 2021-11-05 |  |  |  |  |  |  |  |  |  |  |  |  |  |  |  |  |  |
| 119819-01 |  | SUBM - Detention Padding | 45d | 2021-07-01 | 2021-09-02 | PM1050 |  |  |  | 138d | 0d |  |  |  | 10-25-16 DETENTION PADDING | DETN | PROC | 0001 | PR | 2 |  |  |
| 119819-02 |  | QC APPR - Detention Padding | 20d | 2021-09-03 | 2021-10-01 | 119819-01 |  |  |  | 138d | 0d |  |  |  | 10-25-16 DETENTION PADDING | PRIM | PROC | 0001 | PR | 2 |  |  |
| 119819-03 |  | GOV FIO - Detention Padding | 7d | 2021-10-02 | 2021-10-08 | 119819-02 |  |  |  | 202d | 2d | 7-D |  |  | 10-25-16 DETENTION PADDING | USAC | PROC | 0001 | PR | 2 |  |  |
| 119819-21 |  | PROC - Detention Padding | 20d | 2021-10-11 | 2021-11-05 | 119819-03 |  |  |  | 138d | 104d |  |  |  | 10-25-16 DETENTION PADDING | DETN | PROC | 0001 | PR | 3 |  |  |
|  | 1126 | **11 11 26 Vehicle Washing Equipment** |  | 2021-07-01 | 2022-01-21 |  |  |  |  |  |  |  |  |  |  |  |  |  |  |  |  |  |
| 111126-01 |  | SUBM - Vehicle Wash Equip | 60d | 2021-07-01 | 2021-09-24 | PM1070 |  |  |  | 57d | 0d |  |  |  |  | VWSH | PROC | 0009 | PR | 2 |  |  |
| 111126-02 |  | GOV APPR - Vehicle Wash Equip | 30d | 2021-09-25 | 2021-10-24 | 111126-01 |  |  |  | 86d | 0d | 7-D |  |  |  | USAC | PROC | 0009 | PR | 2 |  |  |
| 111126-09 |  | PROC - Vehicle Wash Equip | 60d | 2021-10-25 | 2022-01-21 | 111126-02 |  |  |  | 57d | 17d |  |  |  |  | VWSH | PROC | 0009 | PR | 3 |  |  |
|  | 12 | **Division 12 - Furnishings** |  | 2021-03-29 | 2021-11-15 |  |  |  |  |  |  |  |  |  |  |  |  |  |  |  |  |  |
|  | 2413 | **12 24 13 Roller Window Shades** |  | 2021-07-01 | 2021-10-29 |  |  |  |  |  |  |  |  |  |  |  |  |  |  |  |  |  |
| 122413-01 |  | SUBM - Roller Window Shades | 45d | 2021-07-01 | 2021-09-02 | PM1050 |  |  |  | 139d | 0d |  |  |  | 12-21-01 WINDOW COVERINGS | WSHD | PROC | 0001 | PR | 2 |  |  |
| 122413-02 |  | GOV APPR - Roller Window Shade | 30d | 2021-09-03 | 2021-10-02 | 122413-01 |  |  |  | 205d | 1d | 7-D |  |  | 12-21-01 WINDOW COVERINGS | USAC | PROC | 0001 | PR | 2 |  |  |
| 122413-09 |  | PROC - Roller Window Shades | 20d | 2021-10-04 | 2021-10-29 | 122413-02 |  |  |  | 140d | 87d |  |  |  | 12-21-01 WINDOW COVERINGS | WSHD | PROC | 0001 | PR | 3 |  |  |
|  | 3600 | **12 36 00 Countertops** |  | 2021-07-01 | 2021-11-15 |  |  |  |  |  |  |  |  |  |  |  |  |  |  |  |  |  |
| 123600-01 |  | SUBM - Countertops | 45d | 2021-07-01 | 2021-09-02 | PM1050 |  |  |  | 72d | 0d |  | COST [1800 h] | 1,800 | 06-40-01 CASEWORK / COUNTERTOPS | CASE | PROC | 0001 | PR | 2 | 1545 | 001 |
| 123600-02 |  | GOV APPR - Countertops | 30d | 2021-09-03 | 2021-10-02 | 123600-01 |  |  |  | 107d | 1d | 7-D |  |  | 06-40-01 CASEWORK / COUNTERTOPS | USAC | PROC | 0001 | PR | 2 |  |  |
| 123600-09 |  | FABR - Countertops | 30d | 2021-10-04 | 2021-11-15 | 123600-02, 064116-30 |  |  |  | 71d | 42d |  |  |  | 06-40-01 CASEWORK / COUNTERTOPS | CASE | PROC | 0001 | PR | 3 |  | 004 |

| ID | WBS | Activity | Duration | Start | Finish | Predecessors | Complete | Remaining | Planned start | Planned finish | Total float | Free float | Calendar | Resources | Cost | Actual cost | Specification | RESP | AREA | BIDI | PHAS | CATW | CS |
| --- | --- | --- | --- | --- | --- | --- | --- | --- | --- | --- | --- | --- | --- | --- | --- | --- | --- | --- | --- | --- | --- | --- | --- |
|  | 4813 | **12 48 13 Entrance Floor Mats and Frames** |  | 2021-03-29 | 2021-09-10 |  |  |  |  |  |  |  |  |  |  |  |  |  |  |  |  |  |  |
| 124813-01 |  | SUBM - Entrance Floor Mats | 45d | 2021-03-29 A | 2021-07-13 | PM1050 |  | 8d | 2021-07-01 | 2021-09-02 | 181d | 0d |  |  |  |  | 10-73-01 ENTRANCE FLOOR MATS & FRAMES | MATS | PROC | 0001 | PR | 2 |  |
| 124813-02 |  | GOV APPR - Entrance Floor Mats | 30d | 2021-07-14 | 2021-08-12 | 124813-01 |  |  |  |  | 264d | 0d | 7-D |  |  |  | 10-73-01 ENTRANCE FLOOR MATS & FRAMES | USAC | PROC | 0001 | PR | 2 |  |
| 124813-09 |  | PROC - Entrance Floor Mats | 20d | 2021-08-13 | 2021-09-10 | 124813-02 |  |  |  |  | 181d | 110d |  |  |  |  | 10-73-01 ENTRANCE FLOOR MATS & FRAMES | MATS | PROC | 0001 | PR | 3 |  |
|  | 13 | **Division 13 - Special Construction** |  | 2020-05-28 | 2021-12-22 |  |  |  |  |  |  |  |  |  |  |  |  |  |  |  |  |  |  |
|  | 0480 | **13 04 80 Canopy** |  | 2020-10-01 | 2021-09-03 |  |  |  |  |  |  |  |  |  |  |  |  |  |  |  |  |  |  |
| 130480-01 |  | SUBM - Canopy | 80d | 2020-10-01 A | 2020-12-30 A | PM1070 | 100% |  | 2020-11-02 | 2021-03-03 |  |  |  |  |  |  | 13-34-01 METAL BUILDING SYSTEMS | PEMB | PROC | 0017 | PR | 2 |  |
| 130480-02 |  | GOV REV - Canopy | 30d | 2020-12-30 A | 2021-01-20 A | 130480-01 | 100% |  | 2021-01-05 | 2021-02-16 |  |  |  |  |  |  | 13-34-01 METAL BUILDING SYSTEMS | USAC | PROC | 0009 | PR | 2 |  |
| 130480-03 |  | RESUBM - Canopy | 10d | 2021-01-20 A | 2021-01-20 A | 130480-02 | 100% |  | 2021-02-17 | 2021-03-02 |  |  |  |  |  |  | 13-34-01 METAL BUILDING SYSTEMS | PEMB | PROC | 0017 | PR | 2 |  |
| 130480-04 |  | GOV APPR - Canopy | 21d | 2021-01-20 A | 2021-01-20 A | 130480-03 | 100% |  | 2021-03-03 | 2021-03-23 |  |  | 7-D |  |  |  | 13-34-01 METAL BUILDING SYSTEMS | USAC | PROC | 0009 | PR | 2 |  |
| 130480-09 |  | Canopy Submittals Approved | 1d | 2021-01-20 A | 2021-07-01 | 130480-04 | 95% | 1d | 2021-03-24 | 2021-03-24 | 44d | 0d |  | COST [49300 h] | 49,300 | 46,835 | 13-34-01 METAL BUILDING SYSTEMS | PEMB | PROC | 0017 | PR | 2 | 47668 |
| 130480-12 |  | FABR Canopy | 45d | 2021-07-02 | 2021-09-03 | 130480-02, 130480-04, 130480-09 |  |  |  |  | 44d | 18d |  |  |  |  | 13-34-01 METAL BUILDING SYSTEMS | PEMB | PROC | 0017 | PR | 3 |  |
|  | 1931 | **13 19 31 Vertical Lift Kennel Doors** |  | 2021-07-01 | 2021-12-22 |  |  |  |  |  |  |  |  |  |  |  |  |  |  |  |  |  |  |
| 131931-01 |  | SUBM - Vert Lift Kennel Doors | 60d | 2021-07-01 | 2021-09-24 | PM1110 |  |  |  |  | 126d | 0d |  |  |  |  | KENNEL ENCLOSURE & GATES | KENL | PROC | 0013 | PR | 2 |  |
| 131931-02 |  | GOV APPR - Vert Lift Ken Doors | 30d | 2021-09-25 | 2021-10-24 | 131931-01 |  |  |  |  | 186d | 0d | 7-D |  |  |  | KENNEL ENCLOSURE & GATES | USAC | PROC | 0013 | PR | 2 |  |
| 131931-09 |  | PROC - Vert Lift Kennel Doors | 40d | 2021-10-25 | 2021-12-22 | 131931-02 |  |  |  |  | 128d | 42d |  |  |  |  | KENNEL ENCLOSURE & GATES | KENL | PROC | 0013 | PR | 3 |  |
|  | 3419 | **13 34 19 Metal Building Systems** |  | 2020-05-28 | 2021-08-12 |  |  |  |  |  |  |  |  |  |  |  |  |  |  |  |  |  |  |
|  | 1 | **Buildings 1, 1A, & 3** |  | 2020-05-28 | 2021-03-23 |  |  |  |  |  |  |  |  |  |  |  |  |  |  |  |  |  |  |
| 133419-01 |  | SUBM - Metal Bldgs - 1,1A,3 | 46d | 2020-05-28 A | 2020-08-25 A | PM1050 | 100% |  | 2020-05-28 | 2020-07-31 |  |  |  |  |  |  | 13-34-01 METAL BUILDING SYSTEMS | PEMB | PROC | 0001 | PR | 2 |  |
| 133419-21 |  | SUBM - AB Dwgs - 1, 1A, & 3 | 41d | 2020-05-28 A | 2020-08-25 A | PM1050 | 100% |  | 2020-05-28 | 2020-07-24 |  |  |  |  |  |  | 13-34-01 METAL BUILDING SYSTEMS | PEMB | PROC | 0001 | PR | 2 |  |
| 133419-02 |  | GOV REV - Metal Bldgs - 1,1A,3 | 30d | 2020-09-03 A | 2020-09-22 A | 133419-01 | 100% |  | 2020-09-01 | 2020-10-13 |  |  |  |  |  |  | 13-34-01 METAL BUILDING SYSTEMS | USAC | PROC | 0001 | PR | 2 |  |
| 133419-22 |  | GOV REV - AB Dwgs - 1, 1A, 3 | 30d | 2020-09-03 A | 2020-12-22 A | 133419-21 | 100% |  | 2020-09-01 | 2020-09-30 |  |  | 7-D |  |  |  | 13-34-01 METAL BUILDING SYSTEMS | USAC | PROC | 0001 | PR | 2 |  |
| 133419-03 |  | RESUBM - Metal Bldgs - 1,1A,3 | 10d | 2020-09-23 A | 2020-12-07 A | 133419-02, RFI53-120 FF | 100% |  | 2020-10-01 | 2020-10-14 |  |  |  |  |  |  | 13-34-01 METAL BUILDING SYSTEMS | PEMB | PROC | 0001 | PR | 2 |  |
| 133419-04 |  | GOV APPR - Metal Bldg - 1,1A,3 | 21d | 2020-12-07 A | 2021-03-11 A | 133419-03 | 100% |  | 2020-12-03 | 2020-12-23 |  |  | 7-D |  |  |  | 13-34-01 METAL BUILDING SYSTEMS | USAC | PROC | 0001 | PR | 2 |  |
| 133419-09 |  | Metal Bldgs 1 & 1A Approved | 1d | 2020-12-14 A | 2021-03-11 A | 133419-04 | 100% |  | 2021-01-12 | 2021-01-12 |  |  |  | COST [122000 h] | 122,000 | 122,000 | 13-34-01 METAL BUILDING SYSTEMS | PEMB | PROC | 0001 | PR | 2 | 118723.7 |
| 133419-12 |  | FABR Metal Bldgs - 1, 1A, 3 | 70d | 2020-12-15 A | 2021-03-23 A | 133419-02, 133419-04, 133419-09, 133419-10 | 100% |  | 2021-01-13 | 2021-04-21 |  |  |  |  |  |  | 13-34-01 METAL BUILDING SYSTEMS | PEMB | PROC | 0001 | PR | 3 |  |
| 133419-29 |  | FABR - Anchor Bolts - 1, 1A, 3 | 15d | 2021-01-26 A | 2021-02-04 A | 133419-22 | 100% |  | 2021-01-15 | 2021-02-04 |  |  |  |  |  |  | 13-34-01 METAL BUILDING SYSTEMS | PEMB | PROC | 0001 | PR | 3 |  |
| 133419-10 |  | Metal Bldg 3 Approved | 1d | 2021-03-11 A | 2021-03-11 A | 133419-04 | 100% |  | 2021-03-02 | 2021-03-02 |  |  |  | COST [28000 h] | 28,000 | 28,000 | 13-34-01 METAL BUILDING SYSTEMS | PEMB | PROC | 0003 | PR | 2 | 25609 |

Notes:
- 130480-02: Activity Notes: 30 Working Days for initial plan review by the Contracting Officer / Representative per Plan Sheet GS102, note 3 under Deferred / Submittals.
- 130480-09: Activity Notes: RFI-0070 - Bldg 4 Foundation vs Finish Grade
- 133419-02: Activity Notes: 30 Working Days for initial plan review by the Contracting Officer / Representative per Plan Sheet GS102, note 3 under Deferred / Submittals.
- 133419-03: Activity Notes: RFI 29 - PEMB Beam Depth Conflicts / RFI 42 - PEMB Re-Design Parameters / RFI 53 - Updated PEMB Design Criteria Confirmation

| ID | WBS | Activity | Duration | Start | Finish | Predecessors | Complete | Remaining | Planned start | Planned finish | Total float | Free float | Calendar | Resources | Cost | Actual cost | Specification | RESP | AREA | BIDI | PHAS | CATW | CS |
| --- | --- | --- | --- | --- | --- | --- | --- | --- | --- | --- | --- | --- | --- | --- | --- | --- | --- | --- | --- | --- | --- | --- | --- |
|  | 2 | **Building 5** |  | 2020-10-01 | 2021-08-12 |  |  |  |  |  |  |  |  |  |  |  |  |  |  |  |  |  |  |
| 133419-50 |  | SUBM - Metal Bldgs - B5 | 80d | 2020-10-01 A | 2020-12-30 A | PM1110 | 100% |  | 2020-11-02 | 2021-03-03 |  |  |  |  |  |  | 13-34-01 METAL BUILDING SYSTEMS | PEMB | PROC | 0013 | PR | 2 |  |
| 133419-51 |  | GOV REV - Metal Bldgs - B5 | 30d | 2020-12-30 A | 2021-01-20 A | 133419-50 | 100% |  | 2021-01-05 | 2021-02-16 |  |  |  |  |  |  | 13-34-01 METAL BUILDING SYSTEMS | USAC | PROC | 0013 | PR | 2 |  |
| 133419-52 |  | RESUBM - Metal Bldgs - B5 | 10d | 2021-01-20 A | 2021-01-20 A | 133419-51 | 100% |  | 2021-02-17 | 2021-03-02 |  |  |  |  |  |  | 13-34-01 METAL BUILDING SYSTEMS | PEMB | PROC | 0013 | PR | 2 |  |
| 133419-53 |  | GOV APPR - Metal Bldgs - B5 | 21d | 2021-01-20 A | 2021-01-20 A | 133419-52 | 100% |  | 2021-03-03 | 2021-03-23 |  |  | 7-D |  |  |  | 13-34-01 METAL BUILDING SYSTEMS | USAC | PROC | 0013 | PR | 2 |  |
| 133419-54 |  | Metal Bldg 5 Approved | 1d | 2021-01-20 A | 2021-02-10 A | 133419-53 | 100% |  | 2021-03-24 | 2021-03-24 |  |  |  | COST [16200 h] | 16,200 | 16,200 | 13-34-01 METAL BUILDING SYSTEMS | PEMB | PROC | 0013 | PR | 2 | 14941.9 |
| 133419-59 |  | FABR Metal Bldgs - B5 | 45d | 2021-02-11 A | 2021-08-12 | 133419-51, 133419-53, 133419-54 |  | 30d | 2021-04-01 | 2021-06-03 | 87d | 48d |  |  |  |  | 13-34-01 METAL BUILDING SYSTEMS | PEMB | PROC | 0013 | PR | 3 |  |
|  | 4800 | **13 48 00 Seismic Protection for Miscellaneous Equipment** |  |  |  |  |  |  |  |  |  |  |  |  |  |  |  |  |  |  |  |  |  |
|  | 21 | **Division 21 - Fire Suppression** |  | 2020-11-02 | 2021-09-24 |  |  |  |  |  |  |  |  |  |  |  |  |  |  |  |  |  |  |
| 210000-01 |  | SUBM - FP Specialist | 14d | 2020-11-02 A | 2020-11-19 A | PM1050 | 100% |  | 2020-11-02 | 2020-11-20 |  |  |  |  |  |  | 21-13-13 FIRE SPRINKLER SYSTEMS | FIRE | PROC | 0001 | PR | 2 |  |
| 210000-02 |  | GOV REV - FP Specialist | 30d | 2020-11-23 A | 2020-11-30 A | 210000-01 | 100% |  | 2020-11-21 | 2020-12-20 |  |  | 7-D |  |  |  | 21-13-13 FIRE SPRINKLER SYSTEMS | USAC | PROC | 0001 | PR | 2 |  |
|  | 1313 | **21 13 13 Wet Pipe Sprinkler System, Fire Protection** |  | 2020-11-02 | 2021-06-22 |  |  |  |  |  |  |  |  |  |  |  |  |  |  |  |  |  |  |
| 211313-01 |  | SUBM - Wet Pipe Sprink Sys | 45d | 2020-11-02 A | 2021-01-20 A | 210000-01 | 100% |  | 2020-12-01 | 2021-02-05 |  |  |  |  |  |  | 21-13-13 FIRE SPRINKLER SYSTEMS | FIRE | PROC | 0001 | PR | 2 |  |
| 211313-03 |  | GOV REV - Wet Pipe Sprink Sys | 30d | 2020-12-03 A | 2021-02-10 A | 211313-01, 210000-02 | 100% |  | 2021-02-13 | 2021-03-14 |  |  | 7-D |  |  |  | 21-13-13 FIRE SPRINKLER SYSTEMS | USAC | PROC | 0001 | PR | 2 |  |
| 211313-04 |  | RESUBM - Wet Pipe Sprink Sys | 10d | 2021-02-11 A | 2021-03-23 A | 211313-03 | 100% |  | 2021-02-17 | 2021-03-02 |  |  |  |  |  |  | 21-13-13 FIRE SPRINKLER SYSTEMS | FIRE | PROC | 0001 | PR | 2 |  |
| 211313-06 |  | GOV APPR - Wet Pipe Sprink Sys | 21d | 2021-03-24 A | 2021-06-22 A | 211313-04 | 100% |  | 2021-03-15 | 2021-04-12 |  |  |  |  |  |  | 21-13-13 FIRE SPRINKLER SYSTEMS | USAC | PROC | 0001 | PR | 2 |  |
| 211313-12 |  | PROC - Wet Pipe Sprink Sys | 20d | 2021-05-03 A | 2021-06-10 A | 211313-06 | 100% |  | 2021-06-04 | 2021-07-01 |  |  |  |  |  |  | 21-13-13 FIRE SPRINKLER SYSTEMS | FIRE | PROC | 0001 | PR | 3 |  |
|  | 1317 | **21 13 17 Dry Pipe Sprinkler System, Fire Protection** |  | 2020-11-02 | 2021-07-29 |  |  |  |  |  |  |  |  |  |  |  |  |  |  |  |  |  |  |
| 211317-01 |  | SUBM - Dry Pipe Sprink Sys | 45d | 2020-11-02 A | 2021-01-20 A | 210000-01 | 100% |  | 2020-12-01 | 2021-02-05 |  |  |  |  |  |  | 21-13-13 FIRE SPRINKLER SYSTEMS | FIRE | PROC | 0001 | PR | 2 |  |
| 211317-03 |  | GOV REV - Dry Pipe Sprink Sys | 30d | 2021-01-19 A | 2021-02-11 A | 211317-01, 210000-02 | 100% |  | 2021-02-13 | 2021-03-14 |  |  | 7-D |  |  |  | 21-13-13 FIRE SPRINKLER SYSTEMS | USAC | PROC | 0001 | PR | 2 |  |
| 211317-04 |  | RESUBM - Dry Pipe Sprink Sys | 10d | 2021-02-12 A | 2021-03-23 A | 211317-03 | 100% |  | 2021-03-08 | 2021-03-19 |  |  |  |  |  |  | 21-13-13 FIRE SPRINKLER SYSTEMS | FIRE | PROC | 0001 | PR | 2 |  |
| 211317-06 |  | GOV APPR - Dry Pipe Sprink Sys | 21d | 2021-03-24 A | 2021-06-25 A | 211317-04 | 100% |  | 2021-03-15 | 2021-04-12 |  |  |  |  |  |  | 21-13-13 FIRE SPRINKLER SYSTEMS | USAC | PROC | 0001 | PR | 2 |  |
| 211317-12 |  | PROC - Dry Pipe Sprink Sys | 20d | 2021-06-28 A | 2021-07-29 | 211317-06 |  | 20d | 2021-07-09 | 2021-08-05 | 36d | 9d |  |  |  |  | 21-13-13 FIRE SPRINKLER SYSTEMS | FIRE | PROC | 0001 | PR | 3 |  |
|  | 3000 | **21 30 00 Fire Pumps** |  | 2020-11-02 | 2021-09-24 |  |  |  |  |  |  |  |  |  |  |  |  |  |  |  |  |  |  |
| 213000-01 |  | SUBM - Fire Pumps | 45d | 2020-11-02 A | 2021-01-19 A | 210000-01 | 100% |  | 2020-12-01 | 2021-02-05 |  |  |  |  |  |  | 21-13-13 FIRE SPRINKLER SYSTEMS | FIRE | PROC | 0001 | PR | 2 |  |
| 213000-03 |  | GOV REV - Fire Pumps | 30d | 2021-01-19 A | 2021-02-03 A | 213000-01, 210000-02 | 100% |  | 2021-02-13 | 2021-03-14 |  |  | 7-D |  |  |  | 21-13-13 FIRE SPRINKLER SYSTEMS | USAC | PROC | 0001 | PR | 2 |  |
| 213000-04 |  | RESUBM - Fire Pumps | 10d | 2021-02-04 A | 2021-04-22 A | 213000-03 | 100% |  | 2021-06-07 | 2021-06-18 |  |  |  |  |  |  | 21-13-13 FIRE SPRINKLER SYSTEMS | FIRE | PROC | 0001 | PR | 2 |  |
| 213000-06 |  | GOV APPR - Fire Pumps | 21d | 2021-03-25 A | 2021-07-15 | 213000-04 |  | 10d | 2021-06-21 | 2021-07-20 | 51d | 0d |  |  |  |  | 21-13-13 FIRE SPRINKLER SYSTEMS | USAC | PROC | 0001 | PR | 2 |  |
| 213000-12 |  | PROC - Fire Pumps | 50d | 2021-07-16 | 2021-09-24 | 213000-06 |  |  |  |  | 51d | 41d |  |  |  |  | 21-13-13 FIRE SPRINKLER SYSTEMS | FIRE | PROC | 0001 | PR | 3 |  |

Notes:
- 133419-51: Activity Notes: 30 Working Days for initial plan review by the Contracting Officer / Representative per Plan Sheet GS102, note 3 under Deferred / Submittals.

| ID | WBS | Activity | Duration | Start | Finish | Predecessors | Complete | Remaining | Planned start | Planned finish | Total float | Free float | Calendar | Specification | RESP | AREA | BIDI | PHAS | CATW |
| --- | --- | --- | --- | --- | --- | --- | --- | --- | --- | --- | --- | --- | --- | --- | --- | --- | --- | --- | --- |
|  | 22 | **Division 22 - Plumbing** |  | 2020-09-01 | 2021-09-11 |  |  |  |  |  |  |  |  |  |  |  |  |  |  |
|  | 0000 | **22 00 00 Plumbing General Purpose** |  | 2020-09-01 | 2021-08-27 |  |  |  |  |  |  |  |  |  |  |  |  |  |  |
| 220000-01 |  | SUBM - Plumbing Sys | 45d | 2020-09-01 A | 2021-07-01 | PM1050 | 25% | 1d | 2020-09-01 | 2020-11-03 | 170d | 0d |  | 22-05-01 PLUMBING | PLUM | PROC | 0001 | PR | 2 |
| 220000-02 |  | GOV APPR - Plumbing Sys | 30d | 2020-09-29 A | 2021-07-16 | 220000-01 |  | 15d | 2020-10-10 | 2020-11-08 | 250d | 2d | 7-D | 22-05-01 PLUMBING | USAC | PROC | 0001 | PR | 2 |
| 220000-09 |  | PROC - Plumbing Fixtures | 30d | 2021-07-19 | 2021-08-27 | 220000-02 |  |  |  |  | 171d | 112d |  | 22-05-01 PLUMBING | PLUM | PROC | 0001 | PR | 3 |
|  | 0548 | **22 05 48 Mechanical Sound, Vibration, and Seismic Control (FIO)** |  |  |  |  |  |  |  |  |  |  |  |  |  |  |  |  |  |
|  | 0719 | **22 07 19 Plumbing Piping Insulation** |  | 2021-05-03 | 2021-09-11 |  |  |  |  |  |  |  |  |  |  |  |  |  |  |
| 220719-01 |  | SUBM - Plumbing Insulation | 45d | 2021-05-03 A | 2021-08-12 | PM1050 |  | 30d | 2021-06-01 | 2021-08-03 | 16d | 0d |  | 22-05-01 PLUMBING | PLUM | PROC | 0001 | PR | 2 |
| 220719-02 |  | GOV APPR - Plumbing Insulation | 30d | 2021-08-13 | 2021-09-11 | 220719-01 |  |  |  |  | 23d | 2d | 7-D | 22-05-01 PLUMBING | USAC | PROC | 0001 | PR | 2 |
|  | 3100 | **22 31 00 Water Softeners, Cation-Exchange Sodium Cycle (FIO)** |  |  |  |  |  |  |  |  |  |  |  |  |  |  |  |  |  |
|  | 23 | **Division 23 - HVAC** |  | 2020-05-28 | 2021-12-12 |  |  |  |  |  |  |  |  |  |  |  |  |  |  |
|  | 0000 | **23 00 00 Air Supply, Distribution, Ventilation, and Exhaust Systems** |  | 2020-05-28 | 2021-09-27 |  |  |  |  |  |  |  |  |  |  |  |  |  |  |
| 230000-01 |  | SUBM - HVAC Sys | 81d | 2020-05-28 A | 2021-07-15 | PM1050 |  | 10d | 2020-11-02 | 2021-03-04 | 29d | 0d |  | 23-05-01 HVAC | HVAC | PROC | 0001 | PR | 2 |
| 230000-02 |  | GOV APPR - HVAC Sys | 30d | 2021-03-19 A | 2021-07-30 | 230000-01 |  | 15d | 2021-04-10 | 2021-05-09 | 41d | 2d | 7-D | 23-05-01 HVAC | USAC | PROC | 0001 | PR | 2 |
| 230000-22 |  | PROC - SDB - VAVs | 30d | 2021-04-05 A | 2021-09-13 | 230000-02 |  | 30d | 2021-06-07 | 2021-07-19 | 28d | 0d |  | 23-05-01 HVAC | HVAC | PROC | 0001 | PR | 3 |
| 230000-32 |  | PROC - CRAC Units | 40d | 2021-04-05 A | 2021-09-27 | 230000-02 |  | 40d | 2021-06-07 | 2021-08-02 | 83d | 50d |  | 23-05-01 HVAC | HVAC | PROC | 0001 | PR | 3 |
|  | 0515 | **23 05 15 Common Piping for HVAC** |  | 2020-05-28 | 2021-06-08 |  |  |  |  |  |  |  |  |  |  |  |  |  |  |
| 230515-01 |  | SUBM - Piping for HVAC | 81d | 2020-05-28 A | 2021-06-01 A | PM1050 | 100% |  | 2020-11-02 | 2021-03-04 |  |  |  | 23-05-01 HVAC | HVAC | PROC | 0001 | PR | 2 |
| 230515-02 |  | GOV APPR - Piping for HVAC | 30d | 2021-05-11 A | 2021-06-08 A | 230515-01 | 100% |  | 2021-06-15 | 2021-07-14 |  |  | 7-D | 23-05-01 HVAC | USAC | PROC | 0001 | PR | 2 |
|  | 0548 | **23 05 48 Vibration and Seismic Controls for HVAC Piping and Equipment** |  | 2020-05-28 | 2021-08-28 |  |  |  |  |  |  |  |  |  |  |  |  |  |  |
| 230548-01 |  | SUBM - Vibr & Seis Ctrl - HVAC | 81d | 2020-05-28 A | 2021-07-29 | PM1050 |  | 20d | 2020-11-02 | 2021-03-04 | 41d | 0d |  | 23-05-01 HVAC | HVAC | PROC | 0001 | PR | 2 |
| 230548-02 |  | GOV APPR - Vib & Seis Ctr HVAC | 30d | 2021-07-30 | 2021-08-28 | 230548-01 |  |  |  |  | 60d | 1d | 7-D | 23-05-01 HVAC | USAC | PROC | 0001 | PR | 2 |
|  | 0593 | **23 05 93 Testing, Adjusting, and Balancing for HVAC** |  | 2021-07-01 | 2021-12-12 |  |  |  |  |  |  |  |  |  |  |  |  |  |  |
| 230593-01 |  | SUBM - TAB Specialist | 45d | 2021-07-01 | 2021-08-14 | PM1050 |  |  |  |  | 93d | 0d | 7-D | 23-05-93 TEST, ADJUST & BALANCING | TABA | PROC | 0001 | PR | 2 |
| 230593-11 |  | SUBM - TAB Agency & Personnel | 45d | 2021-07-01 | 2021-08-14 | PM1050 |  |  |  |  | 93d | 0d | 7-D | 23-05-93 TEST, ADJUST & BALANCING | TABA | PROC | 0001 | PR | 2 |
| 230593-02 |  | GOV APPR - TAB Specialist | 30d | 2021-08-15 | 2021-09-13 | 230593-01 |  |  |  |  | 93d | 0d | 7-D | 23-05-93 TEST, ADJUST & BALANCING | USAC | PROC | 0001 | PR | 2 |
| 230593-12 |  | GOV APPR - TAB Agency & Person | 30d | 2021-08-15 | 2021-09-13 | 230593-11 |  |  |  |  | 93d | 0d | 7-D | 23-05-93 TEST, ADJUST & BALANCING | USAC | PROC | 0001 | PR | 2 |
| 230593-22 |  | Schedule Pre-Dalt/TAB Meeting | 7d | 2021-09-14 | 2021-09-20 | 230593-12, 1RIC150 |  |  |  |  | 119d | 0d | 7-D | 23-05-93 TEST, ADJUST & BALANCING | TABA | PROC | 0001 | CO | 2 |
| 230593-32 |  | SUBM - TAB Design Review | 60d | 2021-09-14 | 2021-11-12 | 230593-02, 230593-12, 230593-12 FF |  |  |  |  | 93d | 0d | 7-D | 23-05-93 TEST, ADJUST & BALANCING | TABA | PROC | 0001 | PR | 2 |
| 230593-23 |  | Pre-Dalt/TAB Meeting | 1d | 2021-09-21 | 2021-09-21 | 230593-22 |  |  |  |  | 80d | 25d |  | 23-05-93 TEST, ADJUST & BALANCING | TABA | PROC | 0001 | CO | 2 |
| 230593-33 |  | GOV APPR - TAB Design Review | 30d | 2021-11-13 | 2021-12-12 | 230593-32 |  |  |  |  | 93d | 92d | 7-D | 23-05-93 TEST, ADJUST & BALANCING | USAC | PROC | 0001 | PR | 2 |

Notes:
- 230000-01: Activity Notes: RFI-0181 - High Volume Low Speed Fans
- 230548-02: Activity Notes: May 2021 Update - This spec section only applies to electrical equipment / with motors. This submittal was incorrectly driving OH electrical rough in / activities. Corrected logic to now drive Generator and Switchgear / activities.

| ID | WBS | Activity | Duration | Start | Finish | Predecessors | Complete | Remaining | Planned start | Planned finish | Total float | Free float | Calendar | Resources | Cost | Specification | RESP | AREA | BIDI | PHAS | CATW |
| --- | --- | --- | --- | --- | --- | --- | --- | --- | --- | --- | --- | --- | --- | --- | --- | --- | --- | --- | --- | --- | --- |
|  | 0700 | **23 07 00 Thermal Insulation for Mechanical Systems** |  | 2020-05-28 | 2021-09-25 |  |  |  |  |  |  |  |  |  |  |  |  |  |  |  |  |
| 230700-01 |  | SUBM - Insulation for Mech | 81d | 2020-05-28 A | 2021-08-26 | PM1050 |  | 40d | 2020-11-02 | 2021-03-04 | 85d | 0d |  |  |  | 23-05-01 HVAC | HVAC | PROC | 0001 | PR | 2 |
| 230700-02 |  | GOV APPR - Insulation for Mech | 30d | 2021-08-27 | 2021-09-25 | 230700-01 |  |  |  |  | 129d | 36d | 7-D |  |  | 23-05-01 HVAC | USAC | PROC | 0001 | PR | 2 |
|  | 0900 | **23 09 00 Instrumentation and Control for HVAC** |  | 2021-07-01 | 2021-10-24 |  |  |  |  |  |  |  |  |  |  |  |  |  |  |  |  |
| 230900-01 |  | SUBM - Instrument & Ctrl HVAC | 60d | 2021-07-01 | 2021-09-24 | PM1050 |  |  |  |  | 65d | 0d |  | COST [34400 h] | 34,400 | 23-09-01 DDC CONTROLS | CTRL | PROC | 0001 | PR | 2 |
| 230900-02 |  | GOV APPR - Instrmt & Ctrl HVAC | 30d | 2021-09-25 | 2021-10-24 | 230900-01 |  |  |  |  | 98d | 29d | 7-D |  |  | 23-09-01 DDC CONTROLS | USAC | PROC | 0001 | PR | 2 |
|  | 1125 | **23 11 25 Facility Gas Piping** |  | 2020-05-28 | 2021-08-21 |  |  |  |  |  |  |  |  |  |  |  |  |  |  |  |  |
| 231125-01 |  | SUBM - Facility Gas Piping | 81d | 2020-05-28 A | 2021-07-22 | PM1050 |  | 15d | 2020-11-02 | 2021-03-04 | 16d | 0d |  |  |  | 23-05-01 HVAC | HVAC | PROC | 0001 | PR | 2 |
| 231125-02 |  | GOV APPR - Facility Gas Piping | 30d | 2021-07-23 | 2021-08-21 | 231125-01 |  |  |  |  | 23d | 1d | 7-D |  |  | 23-05-01 HVAC | USAC | PROC | 0001 | PR | 2 |
|  | 2123 | **23 21 23 Hydronic Pumps** |  | 2020-05-28 | 2021-08-26 |  |  |  |  |  |  |  |  |  |  |  |  |  |  |  |  |
| 232123-01 |  | SUBM - Hydronic Pumps | 81d | 2020-05-28 A | 2021-06-02 A | PM1050 | 100% |  | 2020-11-02 | 2021-03-04 |  |  |  |  |  | 23-05-01 HVAC | HVAC | PROC | 0001 | PR | 2 |
| 232123-02 |  | GOV APPR - Hydronic Pumps | 30d | 2021-05-11 A | 2021-06-07 A | 232123-01 | 100% |  | 2021-07-14 | 2021-08-12 |  |  | 7-D |  |  | 23-05-01 HVAC | USAC | PROC | 0001 | PR | 2 |
| 232123-12 |  | PROC - Hydronic Pumps | 40d | 2021-06-08 A | 2021-08-26 | 232123-02 |  | 40d | 2021-06-08 | 2021-08-03 | 72d | 0d |  |  |  | 23-05-01 HVAC | HVAC | PROC | 0001 | PR | 3 |
|  | 2500 | **23 25 00 Chemical Treatment of Water for Mechanical Systems** |  | 2020-05-28 | 2021-10-10 |  |  |  |  |  |  |  |  |  |  |  |  |  |  |  |  |
| 232500-01 |  | SUBM - Water Treatment Sys | 81d | 2020-05-28 A | 2021-09-10 | PM1050 |  | 50d | 2020-11-02 | 2021-03-04 | 100d | 0d |  |  |  | 23-05-01 HVAC | HVAC | PROC | 0001 | PR | 2 |
| 232500-02 |  | GOV APPR - Water Treatment Sys | 30d | 2021-09-11 | 2021-10-10 | 232500-01 |  |  |  |  | 149d | 126d | 7-D |  |  | 23-05-01 HVAC | USAC | PROC | 0001 | PR | 2 |
|  | 5200 | **23 52 00 Heating Boilers** |  | 2020-05-28 | 2021-10-11 |  |  |  |  |  |  |  |  |  |  |  |  |  |  |  |  |
| 235200-01 |  | SUBM - Heating Boilers | 81d | 2020-05-28 A | 2021-07-15 | PM1050 |  | 10d | 2020-11-02 | 2021-03-04 | 40d | 0d |  |  |  | 23-05-01 HVAC | HVAC | PROC | 0001 | PR | 2 |
| 235200-02 |  | GOV APPR - Heating Boilers | 30d | 2021-05-11 A | 2021-08-14 | 235200-01 |  | 30d | 2021-07-14 | 2021-08-12 | 59d | 1d | 7-D |  |  | 23-05-01 HVAC | USAC | PROC | 0001 | PR | 2 |
| 235200-12 |  | PROC - Heating Boilers | 40d | 2021-08-16 | 2021-10-11 | 235200-02 |  |  |  |  | 41d | 0d |  |  |  | 23-05-01 HVAC | HVAC | PROC | 0001 | PR | 3 |
|  | 5416 | **23 54 16 Heating System; Gas-Fired Heaters (FIO)** |  | 2020-05-28 | 2021-08-26 |  |  |  |  |  |  |  |  |  |  |  |  |  |  |  |  |
| 235416-01 |  | SUBM - Gas-Fired Heaters | 81d | 2020-05-28 A | 2021-02-17 A | PM1050 | 100% |  | 2020-11-02 | 2021-03-04 |  |  |  |  |  | 23-05-01 HVAC | HVAC | PROC | 0001 | PR | 2 |
| 235416-02 |  | QC APPR - Gas-Fired Heaters | 20d | 2021-02-17 A | 2021-02-17 A | 235416-01 | 100% |  | 2021-04-13 | 2021-05-10 |  |  |  |  |  | 23-05-01 HVAC | PRIM | PROC | 0001 | PR | 2 |
| 235416-22 |  | GOV FIO - Gas-Fired Heaters | 7d | 2021-02-17 A | 2021-02-22 A | 235416-02 | 100% |  | 2021-05-11 | 2021-05-17 |  |  | 7-D |  |  | 23-05-01 HVAC | USAC | PROC | 0001 | PR | 2 |
| 235416-12 |  | PROC - Gas-Fired Heaters | 40d | 2021-02-23 A | 2021-08-26 | 235416-22 |  | 40d | 2021-05-18 | 2021-07-14 | 161d | 95d |  |  |  | 23-05-01 HVAC | HVAC | PROC | 0001 | PR | 3 |

Notes:
- 232123-01: Activity Notes: RFI-0175 - Chilled Water Pump Efficiency
- 235200-01: Activity Notes: RFI-0169 - Boiler Efficiency

| ID | WBS | Activity | Duration | Start | Finish | Predecessors | Complete | Remaining | Planned start | Planned finish | Total float | Free float | Calendar | Resources | Cost | Specification | RESP | AREA | BIDI | PHAS | CATW | CS |
| --- | --- | --- | --- | --- | --- | --- | --- | --- | --- | --- | --- | --- | --- | --- | --- | --- | --- | --- | --- | --- | --- | --- |
|  | 6410 | **23 64 10 Water Chillers, Vapor Compression Type** |  | 2020-05-28 | 2021-09-10 |  |  |  |  |  |  |  |  |  |  |  |  |  |  |  |  |  |
| 236410-01 |  | SUBM - Water Chillers | 81d | 2020-05-28 A | 2021-05-10 A | PM1050 | 100% |  | 2020-11-02 | 2021-03-04 |  |  |  |  |  | 23-05-01 HVAC | HVAC | PROC | 0001 | PR | 2 |  |
| 236410-02 |  | GOV APPR - Water Chillers | 30d | 2021-03-24 A | 2021-05-10 A | 236410-01 | 100% |  | 2021-05-08 | 2021-06-06 |  |  | 7-D |  |  | 23-05-01 HVAC | USAC | PROC | 0001 | PR | 2 |  |
| 236410-12 |  | PROC - Water Chillers | 50d | 2021-05-10 A | 2021-09-10 | 236410-02 |  | 50d | 2021-06-28 | 2021-09-07 | 62d | 0d |  |  |  | 23-05-01 HVAC | HVAC | PROC | 0001 | PR | 3 |  |
|  | 6426 | **23 64 26 Chilled, Chilled-Hot, and Condenser Water Piping Systems** |  | 2020-05-28 | 2021-09-13 |  |  |  |  |  |  |  |  |  |  |  |  |  |  |  |  |  |
| 236426-01 |  | SUBM - Hydronic Piping | 81d | 2020-05-28 A | 2021-07-15 | PM1050 |  | 10d | 2020-11-02 | 2021-03-04 | 55d | 0d |  |  |  | 23-05-01 HVAC | HVAC | PROC | 0001 | PR | 2 |  |
| 236426-02 |  | GOV APPR - Hydronic Piping | 30d | 2021-05-11 A | 2021-08-14 | 236426-01 |  | 30d | 2021-07-14 | 2021-08-12 | 79d | 1d | 7-D |  |  | 23-05-01 HVAC | USAC | PROC | 0001 | PR | 2 |  |
| 236426-12 |  | PROC - Hydronic Piping | 20d | 2021-08-16 | 2021-09-13 | 236426-02 |  |  |  |  | 55d | 31d |  |  |  | 23-05-01 HVAC | HVAC | PROC | 0001 | PR | 3 |  |
|  | 7313 | **23 73 13 Modular Indoor Central-Station Air-Handling Units** |  | 2020-05-28 | 2021-09-10 |  |  |  |  |  |  |  |  |  |  |  |  |  |  |  |  |  |
| 237313-01 |  | SUBM - Indoor AHUs | 81d | 2020-05-28 A | 2021-03-19 A | PM1050 | 100% |  | 2020-11-02 | 2021-03-04 |  |  |  |  |  | 23-05-01 HVAC | HVAC | PROC | 0001 | PR | 2 |  |
| 237313-02 |  | GOV APPR - Indoor AHUs | 30d | 2021-01-07 A | 2021-04-05 A | 237313-01 | 100% |  | 2021-03-30 | 2021-04-28 |  |  | 7-D |  |  | 23-05-01 HVAC | USAC | PROC | 0001 | PR | 2 |  |
| 237313-12 |  | PROC - Indoor AHUs | 50d | 2021-02-12 A | 2021-09-10 | 237313-02 |  | 50d | 2021-03-01 | 2021-05-07 | 61d | 0d |  |  |  | 23-05-01 HVAC | HVAC | PROC | 0001 | PR | 3 |  |
|  | 7600 | **23 76 00 Evaporative Cooling System** |  |  |  |  |  |  |  |  |  |  |  |  |  |  |  |  |  |  |  |  |
|  | 26 | **Division 26 - Electrical** |  | 2020-07-01 | 2021-12-08 |  |  |  |  |  |  |  |  |  |  |  |  |  |  |  |  |  |
|  | 0500 | **26 05 00 Common Work Results for Electrical** |  | 2020-07-01 | 2021-08-07 |  |  |  |  |  |  |  |  |  |  |  |  |  |  |  |  |  |
| 260000-01 |  | SUBM - Common Work Result Elec | 30d | 2020-07-01 A | 2021-07-08 | PM1050 |  | 5d | 2020-11-02 | 2020-12-16 | 81d | 0d |  | COST [900 h] | 900 | 26-05-01 BUILDING ELECTRICAL | ELEC | PROC | 0001 | PR | 2 | 800 |
| 260000-02 |  | GOV APPR - Common Wrk Res Elec | 30d | 2021-07-09 | 2021-08-07 | 260000-01 |  |  |  |  | 116d | 1d | 7-D |  |  | 26-05-01 BUILDING ELECTRICAL | USAC | PROC | 0001 | PR | 2 |  |
|  | 0519 | **26 05 19 Insulated Wire and Cable** |  | 2020-07-01 | 2021-08-11 |  |  |  |  |  |  |  |  |  |  |  |  |  |  |  |  |  |
| 260519-01 |  | SUBM - Insulated Wire & Cable | 30d | 2020-07-01 A | 2021-07-12 | PM1050 |  | 7d | 2020-11-02 | 2020-12-16 | 92d | 0d |  | COST [900 h] | 900 | 26-05-01 BUILDING ELECTRICAL | ELEC | PROC | 0001 | PR | 2 | 800 |
| 260519-02 |  | GOV APPR - Insul Wire & Cable | 30d | 2021-07-13 | 2021-08-11 | 260519-01 |  |  |  |  | 131d | 81d | 7-D |  |  | 26-05-01 BUILDING ELECTRICAL | USAC | PROC | 0001 | PR | 2 |  |
|  | 0548 | **26 05 48 Seismic Protection for Electrical Equipment** |  | 2020-07-01 | 2021-08-28 |  |  |  |  |  |  |  |  |  |  |  |  |  |  |  |  |  |
| 260548-01 |  | SUBM - Seis Protect for Elec | 30d | 2020-07-01 A | 2021-07-29 | PM1050 |  | 20d | 2020-11-02 | 2020-12-16 | 71d | 0d |  | COST [900 h] | 900 | 26-05-01 BUILDING ELECTRICAL | ELEC | PROC | 0001 | PR | 2 | 800 |
| 260548-02 |  | GOV APPR - Seis Protect Elec | 30d | 2021-07-30 | 2021-08-28 | 260548-01 |  |  |  |  | 102d | 81d | 7-D |  |  | 26-05-01 BUILDING ELECTRICAL | USAC | PROC | 0001 | PR | 2 |  |
|  | 0571 | **26 05 71 Low Voltage Overcurrent Protective Devices** |  | 2020-07-01 | 2021-08-14 |  |  |  |  |  |  |  |  |  |  |  |  |  |  |  |  |  |
| 260571-01 |  | SUBM - LV Overcurr Protect Dev | 30d | 2020-07-01 A | 2021-07-15 | PM1050 |  | 10d | 2020-11-02 | 2020-12-16 | 21d | 0d |  | COST [900 h] | 900 | 26-05-01 BUILDING ELECTRICAL | ELEC | PROC | 0001 | PR | 2 | 800 |
| 260571-02 |  | GOV APPR - LV Overcur Prot Dev | 30d | 2021-07-16 | 2021-08-14 | 260571-01 |  |  |  |  | 29d | 1d | 7-D |  |  | 26-05-01 BUILDING ELECTRICAL | USAC | PROC | 0001 | PR | 2 |  |

| ID | WBS | Activity | Duration | Start | Finish | Predecessors | Complete | Remaining | Planned start | Planned finish | Total float | Free float | Calendar | Resources | Cost | Actual cost | Specification | CS | RESP | AREA | BIDI | PHAS | CATW |
| --- | --- | --- | --- | --- | --- | --- | --- | --- | --- | --- | --- | --- | --- | --- | --- | --- | --- | --- | --- | --- | --- | --- | --- |
|  | 0800 | **26 08 00 Apparatus Inspection and Testing** |  | 2021-07-01 | 2021-08-28 |  |  |  |  |  |  |  |  |  |  |  |  |  |  |  |  |  |  |
| 260800-01 |  | SUBM - Accept Test & Insp | 20d | 2021-07-01 | 2021-07-29 | 262413-02, 262300-02 |  |  |  |  | 101d | 0d |  | COST [900 h] | 900 |  | 26-05-01 BUILDING ELECTRICAL | 800 | ELEC | PROC | 0001 | PR | 2 |
| 260800-02 |  | GOV APPR - Accept Test & Insp | 30d | 2021-07-30 | 2021-08-28 | 260800-01 |  |  |  |  | 149d | 114d | 7-D |  |  |  | 26-05-01 BUILDING ELECTRICAL |  | USAC | PROC | 0001 | PR | 2 |
|  | 0923 | **26 09 23 Lighting Control Devices** |  | 2020-07-01 | 2021-10-02 |  |  |  |  |  |  |  |  |  |  |  |  |  |  |  |  |  |  |
| 260923-01 |  | SUBM - Lighting Ctrl Devices | 45d | 2020-07-01 A | 2021-09-02 | PM1050 |  | 45d | 2020-11-02 | 2021-01-12 | 95d | 0d |  | COST [1100 h] | 1,100 |  | 26-05-01 BUILDING ELECTRICAL | 1000 | ELEC | PROC | 0001 | PR | 2 |
| 260923-02 |  | GOV APPR - Lighting Ctr Device | 30d | 2021-09-03 | 2021-10-02 | 260923-01 |  |  |  |  | 143d | 102d | 7-D |  |  |  | 26-05-01 BUILDING ELECTRICAL |  | USAC | PROC | 0001 | PR | 2 |
|  | 2000 | **26 20 00 Interior Distribution System** |  | 2020-07-01 | 2021-08-14 |  |  |  |  |  |  |  |  |  |  |  |  |  |  |  |  |  |  |
| 262000-01 |  | SUBM - Int Distribution System | 45d | 2020-07-01 A | 2021-07-15 | PM1050 |  | 10d | 2020-11-02 | 2021-01-12 | 16d | 0d |  | COST [1100 h] | 1,100 |  | 26-05-01 BUILDING ELECTRICAL | 1000 | ELEC | PROC | 0001 | PR | 2 |
| 262000-02 |  | GOV APPR - Int Distrib Sys | 30d | 2021-03-16 A | 2021-08-14 | 262000-01 |  | 30d | 2021-05-01 | 2021-05-30 | 23d | 1d | 7-D |  |  |  | 26-05-01 BUILDING ELECTRICAL |  | USAC | PROC | 0001 | PR | 2 |
|  | 2300 | **26 23 00 Switchboards and Switchgear** |  | 2020-07-01 | 2021-11-08 |  |  |  |  |  |  |  |  |  |  |  |  |  |  |  |  |  |  |
| 262300-01 |  | SUBM - Switchboards/Switchgear | 45d | 2020-07-01 A | 2021-04-07 A | PM1050 | 100% |  | 2020-11-02 | 2021-01-12 |  |  |  | COST [1100 h] | 1,100 | 1,100 | 26-05-01 BUILDING ELECTRICAL | 1000 | ELEC | PROC | 0001 | PR | 2 |
| 262300-02 |  | GOV APPR - Switchbrds/Switchgr | 30d | 2021-03-16 A | 2021-04-07 A | 262300-01 | 100% |  | 2021-05-01 | 2021-05-30 |  |  | 7-D |  |  |  | 26-05-01 BUILDING ELECTRICAL |  | USAC | PROC | 0001 | PR | 2 |
| 262300-12 |  | PROC - Switchboards/Switchgear | 60d | 2021-04-08 A | 2021-11-08 | 262300-02, 260571-02 |  | 60d | 2021-07-15 | 2021-10-07 | 19d | 6d |  |  |  |  | 26-05-01 BUILDING ELECTRICAL |  | ELEC | PROC | 0001 | PR | 3 |
|  | 2413 | **26 24 13 Switchboards** |  | 2020-07-01 | 2021-10-22 |  |  |  |  |  |  |  |  |  |  |  |  |  |  |  |  |  |  |
| 262413-01 |  | SUBM - Switchboards | 45d | 2020-07-01 A | 2021-04-07 A | PM1050 | 100% |  | 2020-11-02 | 2021-01-12 |  |  |  | COST [1100 h] | 1,100 | 1,100 | 26-05-01 BUILDING ELECTRICAL | 1000 | ELEC | PROC | 0001 | PR | 2 |
| 262413-03 |  | SUBM - Power Coordination | 60d | 2020-07-01 A | 2021-04-20 A | PM1050 | 100% |  | 2020-11-02 | 2021-02-02 |  |  |  |  |  |  |  |  | ELEC | PROC | 0001 | PR | 2 |
| 262413-05 |  | SUBM - Arc-Flash Study | 60d | 2020-07-01 A | 2021-04-20 A | PM1050 | 100% |  | 2020-11-02 | 2021-02-02 |  |  |  |  |  |  |  |  | ELEC | PROC | 0001 | PR | 2 |
| 262413-07 |  | SUBM - Short Circ Study | 60d | 2020-07-01 A | 2021-04-20 A | PM1050 | 100% |  | 2020-11-02 | 2021-02-02 |  |  |  |  |  |  |  |  | ELEC | PROC | 0001 | PR | 2 |
| 262413-02 |  | GOV APPR - Switchboards | 30d | 2021-04-07 A | 2021-04-09 A | 262413-01 | 100% |  | 2021-04-29 | 2021-05-28 |  |  | 7-D |  |  |  | 26-05-01 BUILDING ELECTRICAL |  | USAC | PROC | 0001 | PR | 2 |
| 262413-04 |  | GOV FIO - Power Coordination | 14d | 2021-04-22 A | 2021-05-11 A | 262413-03 | 100% |  | 2021-04-29 | 2021-05-12 |  |  | 7-D |  |  |  |  |  | USAC | PROC | 0001 | PR | 2 |
| 262413-06 |  | GOV FIO - Arc-Flash Study | 14d | 2021-04-22 A | 2021-05-11 A | 262413-05 | 100% |  | 2021-05-29 | 2021-06-11 |  |  | 7-D |  |  |  |  |  | USAC | PROC | 0001 | PR | 2 |
| 262413-08 |  | GOV FIO - Short Circ Study | 14d | 2021-04-22 A | 2021-05-11 A | 262413-07 | 100% |  | 2021-05-29 | 2021-06-11 |  |  | 7-D |  |  |  |  |  | USAC | PROC | 0001 | PR | 2 |
| 262413-12 |  | PROC - Main Switchboards MSB1 | 80d | 2021-05-12 A | 2021-10-22 | 262413-02, 262413-04, 262413-06, 262413-08 |  | 80d | 2021-05-03 | 2021-08-24 | 28d | 15d |  |  |  |  | 26-05-01 BUILDING ELECTRICAL |  | ELEC | PROC | 0001 | PR | 3 |
|  | 2416 | **26 24 16 Panelboards** |  | 2020-07-01 | 2021-08-26 |  |  |  |  |  |  |  |  |  |  |  |  |  |  |  |  |  |  |
| 262416-01 |  | SUBM - Panelboards | 45d | 2020-07-01 A | 2021-04-07 A | PM1050 | 100% |  | 2020-11-02 | 2021-01-12 |  |  |  | COST [1100 h] | 1,100 | 1,100 | 26-05-01 BUILDING ELECTRICAL | 1000 | ELEC | PROC | 0001 | PR | 2 |
| 262416-02 |  | GOV APPR - Panelboards | 30d | 2021-04-07 A | 2021-04-07 A | 262416-01 | 100% |  | 2021-04-29 | 2021-05-28 |  |  | 7-D |  |  |  | 26-05-01 BUILDING ELECTRICAL |  | USAC | PROC | 0001 | PR | 2 |
| 262416-12 |  | PROC - Panelboards | 40d | 2021-04-08 A | 2021-08-26 | 262416-02 |  | 40d | 2021-05-03 | 2021-06-28 | 53d | 0d |  |  |  |  | 26-05-01 BUILDING ELECTRICAL |  | ELEC | PROC | 0001 | PR | 3 |

Notes:
- 262413-01: Delay Impacts: RFP 04 - Utility Reroute
- 262413-03: Delay Impacts: RFP 04 - Utility Reroute
- 262413-05: Delay Impacts: RFP 04 - Utility Reroute / Activity Notes: RFI 162 - AIC Rating Problems
- 262413-07: Delay Impacts: RFP 04 - Utility Reroute
- 262416-12: Activity Notes: RFI-0167 - 225a Breaker Feeding Transformer NT-12

| ID | WBS | Activity | Duration | Start | Finish | Predecessors | Complete | Remaining | Planned start | Planned finish | Total float | Free float | Calendar | Resources | Cost | Actual cost | Specification | RESP | AREA | BIDI | PHAS | CATW | CS |
| --- | --- | --- | --- | --- | --- | --- | --- | --- | --- | --- | --- | --- | --- | --- | --- | --- | --- | --- | --- | --- | --- | --- | --- |
|  | 2800 | **26 28 00 Switchboards and Panelboards** |  |  |  |  |  |  |  |  |  |  |  |  |  |  |  |  |  |  |  |  |  |
|  | 2801 | **26 28 01 Coordinated Power System Protection (FIO)** |  |  |  |  |  |  |  |  |  |  |  |  |  |  |  |  |  |  |  |  |  |
|  | 2923 | **26 29 23 Variable Frequency Drive Systems Under 600 Volts** |  | 2020-07-01 | 2021-12-01 |  |  |  |  |  |  |  |  |  |  |  |  |  |  |  |  |  |  |
| 262923-01 |  | SUBM - Variable Freq Drive Sys | 45d | 2020-07-01 A | 2021-09-02 | PM1050 |  | 45d | 2020-11-02 | 2021-01-12 | 35d | 0d |  |  |  |  | 23-05-01 HVAC | HVAC | PROC | 0001 | PR | 2 |  |
| 262923-02 |  | GOV APPR - Variable Freq Drive | 30d | 2021-09-03 | 2021-10-02 | 262923-01 |  |  |  |  | 52d | 1d | 7-D |  |  |  | 23-05-01 HVAC | USAC | PROC | 0001 | PR | 2 |  |
| 262923-12 |  | PROC - Variable Freq Drive Sys | 40d | 2021-10-04 | 2021-12-01 | 262923-02 |  |  |  |  | 36d | 0d |  |  |  |  | 23-05-01 HVAC | HVAC | PROC | 0001 | PR | 3 |  |
|  | 3215 | **26 32 15 Diesel-Generator Set Stationaly 100-2500 KW, With Auxiliaries** |  | 2020-07-01 | 2021-10-22 |  |  |  |  |  |  |  |  |  |  |  |  |  |  |  |  |  |  |
| 263215-01 |  | SUBM - Diesel-Generator Set | 60d | 2020-07-01 A | 2021-07-01 | PM1050 | 90% | 0d | 2020-11-02 | 2021-02-02 | 41d | 0d |  | COST [3400 h] | 3,400 | 3,060 | 26-05-01 BUILDING ELECTRICAL | ELEC | PROC | 0001 | PR | 2 | 3000 |
| 263215-02 |  | GOV APPR - Diesel-Generator | 30d | 2021-06-03 A | 2021-06-07 A | 263215-01 | 100% |  | 2021-06-03 | 2021-07-02 |  |  | 7-D |  |  |  | 26-05-01 BUILDING ELECTRICAL | USAC | PROC | 0001 | PR | 2 |  |
| 263215-12 |  | PROC - Diesel-Generator Set | 80d | 2021-06-08 A | 2021-10-22 | 263215-02 |  | 80d | 2021-07-06 | 2021-10-26 | 41d | 0d |  |  |  |  | 26-05-01 BUILDING ELECTRICAL | ELEC | PROC | 0001 | PR | 3 |  |
|  | 3233 | **26 32 33 Uninterruptible Power Supply UPS System Above 15KVA Capacity (FIO)** |  |  |  |  |  |  |  |  |  |  |  |  |  |  |  |  |  |  |  |  |  |
|  | 3353 | **26 33 53 Uninterruptible Power Supply UPS** |  | 2020-07-01 | 2021-09-24 |  |  |  |  |  |  |  |  |  |  |  |  |  |  |  |  |  |  |
| 263353-01 |  | SUBM - UPS | 60d | 2020-07-01 A | 2021-04-07 A | PM1050 | 100% |  | 2020-11-02 | 2021-02-02 |  |  |  | COST [1100 h] | 1,100 | 1,100 | 26-05-01 BUILDING ELECTRICAL | ELEC | PROC | 0001 | PR | 2 | 1000 |
| 263353-02 |  | GOV APPR - UPS | 30d | 2021-04-07 A | 2021-05-18 A | 263353-01 | 100% |  | 2021-06-15 | 2021-07-14 |  |  | 7-D |  |  |  | 26-05-01 BUILDING ELECTRICAL | USAC | PROC | 0001 | PR | 2 |  |
| 263353-12 |  | PROC - UPS | 60d | 2021-05-18 A | 2021-09-24 | 263353-02 |  | 60d | 2021-07-15 | 2021-10-07 | 78d | 0d |  |  |  |  | 26-05-01 BUILDING ELECTRICAL | ELEC | PROC | 0001 | PR | 3 |  |
|  | 41000 | **26 41 00 Lightning Protection System** |  | 2020-07-01 | 2021-05-11 |  |  |  |  |  |  |  |  |  |  |  |  |  |  |  |  |  |  |
| 264100-01 |  | SUBM - Lightning Protection | 60d | 2020-07-01 A | 2021-04-28 A | PM1050 | 100% |  | 2020-11-02 | 2021-02-02 |  |  |  | COST [1100 h] | 1,100 | 1,100 | 26-05-01 BUILDING ELECTRICAL | ELEC | PROC | 0001 | PR | 2 | 1000 |
| 264100-02 |  | GOV APPR - Lightning Protect | 30d | 2021-04-29 A | 2021-05-11 A | 264100-01 | 100% |  | 2021-06-15 | 2021-07-14 |  |  | 7-D |  |  |  | 26-05-01 BUILDING ELECTRICAL | USAC | PROC | 0001 | PR | 2 |  |
|  | 4214 | **26 42 14 Cathodic Protection System Sacrificial Anode** |  | 2020-07-01 | 2020-11-27 |  |  |  |  |  |  |  |  |  |  |  |  |  |  |  |  |  |  |
| 264214-01 |  | SUBM - Cathodic Protection | 60d | 2020-07-01 A | 2020-11-16 A | PM1050 | 100% |  | 2020-11-02 | 2021-02-02 |  |  |  |  |  |  | 33-16-01 WATER STORAGE TANKS | WTNK | PROC | 0005 | PR | 2 |  |
| 264214-02 |  | GOV APPR - Cathodic Protection | 30d | 2020-11-16 A | 2020-11-27 A | 264214-01 | 100% |  | 2021-02-03 | 2021-03-04 |  |  | 7-D |  |  |  | 33-16-01 WATER STORAGE TANKS | USAC | PROC | 0001 | PR | 2 |  |
|  | 4215 | **26 42 15 Cathodic Protection System Steel Water Tanks (FIO)** |  |  |  |  |  |  |  |  |  |  |  |  |  |  |  |  |  |  |  |  |  |
|  | 5100 | **26 51 00 Interior Lighting** |  | 2020-07-01 | 2021-11-23 |  |  |  |  |  |  |  |  |  |  |  |  |  |  |  |  |  |  |
| 265100-01 |  | SUBM - Interior Lighting | 60d | 2020-07-01 A | 2021-07-29 | PM1050 |  | 20d | 2020-11-02 | 2021-02-02 | 55d | 0d |  | COST [2300 h] | 2,300 |  | 26-05-01 BUILDING ELECTRICAL | ELEC | PROC | 0001 | PR | 2 | 2000 |
| 265400-02 |  | GOV APPR - Interior Lighting | 30d | 2021-07-30 | 2021-08-28 | 265100-01 |  |  |  |  | 80d | 1d | 7-D |  |  |  | 26-05-01 BUILDING ELECTRICAL | USAC | PROC | 0001 | PR | 2 |  |
| 265400-12 |  | PROC - Interior Lighting | 60d | 2021-08-30 | 2021-11-23 | 265400-02 |  |  |  |  | 55d | 0d |  |  |  |  | 26-05-01 BUILDING ELECTRICAL | ELEC | PROC | 0001 | PR | 3 |  |

| ID | WBS | Activity | Duration | Start | Finish | Predecessors | Complete | Remaining | Planned start | Planned finish | Total float | Free float | Calendar | Resources | Cost | Actual cost | Specification | CS | RESP | AREA | BIDI | PHAS | CATW |
| --- | --- | --- | --- | --- | --- | --- | --- | --- | --- | --- | --- | --- | --- | --- | --- | --- | --- | --- | --- | --- | --- | --- | --- |
|  | 5200 | **26 52 00 Emergency Lighting** |  | 2020-07-01 | 2021-09-24 |  |  |  |  |  |  |  |  |  |  |  |  |  |  |  |  |  |  |
| 265200-01 |  | SUBM - Emergency Lighting | 60d | 2020-07-01 A | 2021-05-19 A | PM1050 | 100% |  | 2020-11-02 | 2021-02-02 |  |  |  | COST [1100 h] | 1,100 | 1,100 | 26-05-01 BUILDING ELECTRICAL | 1000 | ELEC | PROC | 0001 | PR | 2 |
| 265200-02 |  | GOV APPR - Emergency Lighting | 30d | 2021-05-20 A | 2021-05-20 A | 265200-01 | 100% |  | 2021-06-15 | 2021-07-14 |  |  | 7-D |  |  |  | 26-05-01 BUILDING ELECTRICAL |  | USAC | PROC | 0001 | PR | 2 |
| 265200-12 |  | PROC - Emergency Lighting | 60d | 2021-05-24 A | 2021-09-24 | 265200-02 |  | 60d | 2021-07-15 | 2021-10-07 | 96d | 0d |  |  |  |  | 26-05-01 BUILDING ELECTRICAL |  | ELEC | PROC | 0001 | PR | 3 |
|  | 5300 | **26 53 00 Exit Signs** |  | 2020-07-01 | 2021-08-12 |  |  |  |  |  |  |  |  |  |  |  |  |  |  |  |  |  |  |
| 265300-01 |  | SUBM - Exit Signs | 60d | 2020-07-01 A | 2021-05-19 A | PM1050 | 100% |  | 2020-11-02 | 2021-02-02 |  |  |  | COST [900 h] | 900 | 900 | 26-05-01 BUILDING ELECTRICAL | 800 | ELEC | PROC | 0001 | PR | 2 |
| 265300-02 |  | GOV APPR - Exit Signs | 30d | 2021-05-20 A | 2021-05-20 A | 265300-01 | 100% |  | 2021-06-15 | 2021-07-14 |  |  | 7-D |  |  |  | 26-05-01 BUILDING ELECTRICAL |  | USAC | PROC | 0001 | PR | 2 |
| 265300-12 |  | PROC - Exit Signs | 30d | 2021-05-24 A | 2021-08-12 | 265300-02 |  | 30d | 2021-07-15 | 2021-08-25 | 128d | 0d |  |  |  |  | 26-05-01 BUILDING ELECTRICAL |  | ELEC | PROC | 0001 | PR | 3 |
|  | 5421 | **26 51 21 Helipad Lighting & Visual Navigation Aids** |  | 2020-07-01 | 2021-11-01 |  |  |  |  |  |  |  |  |  |  |  |  |  |  |  |  |  |  |
| 265421-01 |  | SUBM - Helipad Light/Vis Nav | 60d | 2020-07-01 A | 2021-07-08 | PM1080 |  | 5d | 2020-11-02 | 2021-02-02 | 131d | 0d |  | COST [2600 h] | 2,600 |  | 26-05-01 BUILDING ELECTRICAL | 2000 | ELEC | PROC | 0010 | PR | 2 |
| 265421-02 |  | GOV APPR - Helipad Ltg/Vis Nav | 30d | 2021-06-17 A | 2021-08-07 | 265421-01 |  | 30d | 2021-07-14 | 2021-08-12 | 193d | 1d | 7-D |  |  |  | 26-05-01 BUILDING ELECTRICAL |  | USAC | PROC | 0010 | PR | 2 |
| 265421-12 |  | PROC - Helipad Light/Vis Nav | 60d | 2021-08-09 | 2021-11-01 | 265421-02 |  |  |  |  | 132d | 62d |  |  |  |  | 26-05-01 BUILDING ELECTRICAL |  | ELEC | PROC | 0010 | PR | 3 |
|  | 5553 | **26 55 53 Security Lighting** |  | 2020-07-01 | 2021-12-08 |  |  |  |  |  |  |  |  |  |  |  |  |  |  |  |  |  |  |
| 265553-01 |  | SUBM - Security Lighting | 60d | 2020-07-01 A | 2021-08-12 | PM1050 |  | 30d | 2020-11-02 | 2021-02-02 | 45d | 0d |  | COST [900 h] | 900 |  | 26-05-01 BUILDING ELECTRICAL | 800 | ELEC | PROC | 0001 | PR | 2 |
| 265553-02 |  | GOV APPR - Security Lighting | 30d | 2021-08-13 | 2021-09-11 | 265553-01 |  |  |  |  | 66d | 1d | 7-D |  |  |  | 26-05-01 BUILDING ELECTRICAL |  | USAC | PROC | 0001 | PR | 2 |
| 265553-12 |  | PROC - Security Lighting | 60d | 2021-09-13 | 2021-12-08 | 265553-02 |  |  |  |  | 46d | 0d |  |  |  |  | 26-05-01 BUILDING ELECTRICAL |  | ELEC | PROC | 0001 | PR | 3 |
|  | 5600 | **26 56 00 Exterior Lighting** |  | 2020-07-01 | 2021-12-08 |  |  |  |  |  |  |  |  |  |  |  |  |  |  |  |  |  |  |
| 265600-01 |  | SUBM - Exterior Lighting | 60d | 2020-07-01 A | 2021-08-12 | PM1050 |  | 30d | 2020-11-02 | 2021-02-02 | 72d | 0d |  | COST [1400 h] | 1,400 |  | 26-05-01 BUILDING ELECTRICAL | 1000 | ELEC | PROC | 0005 | PR | 2 |
| 265600-02 |  | GOV APPR - Exterior Lighting | 30d | 2021-08-13 | 2021-09-11 | 265600-01 |  |  |  |  | 106d | 1d | 7-D |  |  |  | 26-05-01 BUILDING ELECTRICAL |  | USAC | PROC | 0005 | PR | 2 |
| 265600-12 |  | PROC - Exterior Lighting | 60d | 2021-09-13 | 2021-12-08 | 265600-02 |  |  |  |  | 71d | 20d |  |  |  |  | 26-05-01 BUILDING ELECTRICAL |  | ELEC | PROC | 0005 | PR | 3 |
|  | 27 | **Division 27 - Communications** |  | 2020-07-01 | 2021-10-24 |  |  |  |  |  |  |  |  |  |  |  |  |  |  |  |  |  |  |
|  | 0514 | **27 05 14 Cable Television Premises Distribution System (FIO)** |  |  |  |  |  |  |  |  |  |  |  |  |  |  |  |  |  |  |  |  |  |
|  | 0528 | **27 05 28 Cable Trays for Communications Systems** |  | 2020-07-01 | 2021-09-13 |  |  |  |  |  |  |  |  |  |  |  |  |  |  |  |  |  |  |
| 270528-01 |  | SUBM - Cable Trays | 60d | 2020-07-01 A | 2021-07-01 | PM1050 |  | 1d | 2020-11-02 | 2021-02-02 | 84d | 0d |  | COST [900 h] | 900 |  | 26-05-01 BUILDING ELECTRICAL | 800 | ELEC | PROC | 0001 | PR | 2 |
| 270528-02 |  | GOV APPR - Cable Trays | 30d | 2021-07-02 | 2021-07-31 | 270528-01 |  |  |  |  | 121d | 1d | 7-D |  |  |  | 26-05-01 BUILDING ELECTRICAL |  | USAC | PROC | 0001 | PR | 2 |
| 270528-12 |  | PROC - Cable Trays | 30d | 2021-08-02 | 2021-09-13 | 270528-02 |  |  |  |  | 82d | 0d |  |  |  |  | 26-05-01 BUILDING ELECTRICAL |  | ELEC | PROC | 0001 | PR | 3 |

| ID | WBS | Activity | Duration | Start | Finish | Predecessors | Remaining | Planned start | Planned finish | Total float | Free float | Calendar | Resources | Cost | Specification | CS | RESP | AREA | BIDI | PHAS | CATW |
| --- | --- | --- | --- | --- | --- | --- | --- | --- | --- | --- | --- | --- | --- | --- | --- | --- | --- | --- | --- | --- | --- |
|  | 1000 | **27 10 00 Building Telecommunications Cabling System** |  | 2020-07-01 | 2021-10-24 |  |  |  |  |  |  |  |  |  |  |  |  |  |  |  |  |
| 271000-01 |  | SUBM - Bldg Telecom Cabling | 60d | 2020-07-01 A | 2021-09-24 | PM1050 | 60d | 2020-11-02 | 2021-02-02 | 42d | 0d |  | COST [900 h] | 900 | 26-05-01 BUILDING ELECTRICAL | 800 | ELEC | PROC | 0001 | PR | 2 |
| 271000-02 |  | GOV APPR - Bldg Telecom Cable | 30d | 2021-09-25 | 2021-10-24 | 271000-01 |  |  |  | 64d | 44d | 7-D |  |  | 26-05-01 BUILDING ELECTRICAL |  | USAC | PROC | 0001 | PR | 2 |
|  | 1323 | **27 13 23 Communications Optical Backbone Cabling** |  | 2020-07-01 | 2021-10-24 |  |  |  |  |  |  |  |  |  |  |  |  |  |  |  |  |
| 271323-01 |  | SUBM - Comm Opt Backbone Cable | 60d | 2020-07-01 A | 2021-09-24 | PM1050 | 60d | 2020-11-02 | 2021-02-02 | 42d | 0d |  | COST [900 h] | 900 | 26-05-01 BUILDING ELECTRICAL | 800 | ELEC | PROC | 0001 | PR | 2 |
| 271323-02 |  | GOV APPR - Comm Opt Backbone | 30d | 2021-09-25 | 2021-10-24 | 271323-01 |  |  |  | 64d | 44d | 7-D |  |  | 26-05-01 BUILDING ELECTRICAL |  | USAC | PROC | 0001 | PR | 2 |
|  | 2100 | **27 21 00 Intercommunication System (FIO)** |  |  |  |  |  |  |  |  |  |  |  |  |  |  |  |  |  |  |  |
|  | 2110 | **27 21 10 Fiber Optic Data Transmission System** |  | 2020-07-01 | 2021-10-24 |  |  |  |  |  |  |  |  |  |  |  |  |  |  |  |  |
| 272100-01 |  | SUBM - FO Data Transmission | 60d | 2020-07-01 A | 2021-09-24 | PM1050 | 60d | 2020-11-02 | 2021-02-02 | 65d | 0d |  | COST [900 h] | 900 | 26-05-01 BUILDING ELECTRICAL | 800 | ELEC | PROC | 0001 | PR | 2 |
| 272100-02 |  | GOV APPR -FO Data Transmission | 30d | 2021-09-25 | 2021-10-24 | 272100-01 |  |  |  | 99d | 57d | 7-D |  |  | 26-05-01 BUILDING ELECTRICAL |  | USAC | PROC | 0001 | PR | 2 |
|  | 5400 | **27 54 00 Community Antenna Television CATV Systems** |  | 2020-07-01 | 2021-10-24 |  |  |  |  |  |  |  |  |  |  |  |  |  |  |  |  |
| 275400-01 |  | SUBM - Community Antenna CATV | 60d | 2020-07-01 A | 2021-09-24 | PM1050 | 60d | 2020-11-02 | 2021-02-02 | 65d | 0d |  | COST [900 h] | 900 | 26-05-01 BUILDING ELECTRICAL | 800 | ELEC | PROC | 0001 | PR | 2 |
| 275400-02 |  | GOV APPR - Community Ant CATV | 30d | 2021-09-25 | 2021-10-24 | 275400-01 |  |  |  | 99d | 57d | 7-D |  |  | 26-05-01 BUILDING ELECTRICAL |  | USAC | PROC | 0001 | PR | 2 |
|  | 28 | **Division 28 - Electronic Safety and Security** |  | 2020-07-01 | 2021-12-22 |  |  |  |  |  |  |  |  |  |  |  |  |  |  |  |  |
|  | 0526 | **28 05 26 Grounding and Bonding for Electronic Safety and Security** |  | 2020-07-01 | 2021-08-05 |  |  |  |  |  |  |  |  |  |  |  |  |  |  |  |  |
| 280526-01 |  | SUBM - Grounding & Bonding ESS | 60d | 2020-07-01 A | 2021-07-06 | PM1050 | 3d | 2020-11-02 | 2021-02-02 | 119d | 0d |  | COST [900 h] | 900 | 26-05-01 BUILDING ELECTRICAL | 800 | ELEC | PROC | 0001 | PR | 2 |
| 280526-02 |  | GOV APPR - Ground & Bond ESS | 30d | 2021-07-07 | 2021-08-05 | 280526-01 |  |  |  | 174d | 157d | 7-D |  |  | 26-05-01 BUILDING ELECTRICAL |  | USAC | PROC | 0001 | PR | 2 |
|  | 0810 | **28 08 10 Electronic Security System Acceptance Testing** |  | 2021-07-01 | 2021-10-24 |  |  |  |  |  |  |  |  |  |  |  |  |  |  |  |  |
| 280810-01 |  | SUBM - ESS Test Plan | 60d | 2021-07-01 | 2021-09-24 | PM1050 |  |  |  | 144d | 0d |  | COST [900 h] | 900 | 26-05-01 BUILDING ELECTRICAL | 800 | ELEC | PROC | 0001 | PR | 2 |
| 280810-02 |  | GOV APPR - ESS Test Plan | 30d | 2021-09-25 | 2021-10-24 | 280810-01 |  |  |  | 210d | 196d | 7-D |  |  | 26-05-01 BUILDING ELECTRICAL |  | USAC | PROC | 0001 | PR | 2 |
|  | 1005 | **28 10 05 Electronic Security System (ESS)** |  | 2020-07-01 | 2021-12-22 |  |  |  |  |  |  |  |  |  |  |  |  |  |  |  |  |
| 281005-01 |  | SUBM - ESS | 120d | 2020-07-01 A | 2021-08-26 | PM1050 | 40d | 2020-11-02 | 2021-04-28 | 35d | 0d |  | COST [1100 h] | 1,100 | 26-05-01 BUILDING ELECTRICAL | 1000 | ELEC | PROC | 0001 | PR | 2 |
| 281005-02 |  | GOV APPR - ESS | 30d | 2021-08-27 | 2021-09-25 | 281005-01 |  |  |  | 52d | 1d | 7-D |  |  | 26-05-01 BUILDING ELECTRICAL |  | USAC | PROC | 0001 | PR | 2 |
| 281005-12 |  | PROC - ESS | 60d | 2021-09-27 | 2021-12-22 | 281005-02 |  |  |  | 36d | 0d |  |  |  | 26-05-01 BUILDING ELECTRICAL |  | ELEC | PROC | 0001 | PR | 3 |

| ID | WBS | Activity | Duration | Start | Finish | Predecessors | Remaining | Planned start | Planned finish | Total float | Free float | Calendar | Resources | Cost | Specification | CS | RESP | AREA | BIDI | PHAS | CATW |
| --- | --- | --- | --- | --- | --- | --- | --- | --- | --- | --- | --- | --- | --- | --- | --- | --- | --- | --- | --- | --- | --- |
|  | 3164 | **28 31 64 Fire Detection and Alarm System, Addressable** |  | 2020-07-01 | 2021-10-11 |  |  |  |  |  |  |  |  |  |  |  |  |  |  |  |  |
| 283164-01 |  | SUBM - FA Sys | 120d | 2020-07-01 A | 2021-07-15 | PM1050 | 10d | 2020-11-02 | 2021-04-28 | 120d | 0d |  | COST [3400 h] | 3,400 | 26-05-01 BUILDING ELECTRICAL | 3000 | ELEC | PROC | 0001 | PR | 2 |
| 283164-02 |  | GOV APPR - FA Sys | 30d | 2020-10-05 A | 2021-08-14 | 283164-01 | 30d | 2021-01-30 | 2021-02-28 | 176d | 1d | 7-D |  |  | 26-05-01 BUILDING ELECTRICAL |  | USAC | PROC | 0001 | PR | 2 |
| 283164-12 |  | PROC - FA Sys | 40d | 2021-08-16 | 2021-10-11 | 283164-02 |  |  |  | 133d | 0d |  |  |  | 26-05-01 BUILDING ELECTRICAL |  | ELEC | PROC | 0001 | PR | 3 |
|  | 31 | **Division 31 - Earthwork** |  |  |  |  |  |  |  |  |  |  |  |  |  |  |  |  |  |  |  |
|  | 32 | **Division 32 - Exterior Improvements** |  | 2021-04-01 | 2021-10-08 |  |  |  |  |  |  |  |  |  |  |  |  |  |  |  |  |
|  | 0119 | **32 01 19 Field Molded Sealants for Sealing Joints in Rigid Pavements** |  |  |  |  |  |  |  |  |  |  |  |  |  |  |  |  |  |  |  |
|  | 1123 | **32 11 23 Aggregate Base Courses** |  | 2021-07-01 | 2021-10-02 |  |  |  |  |  |  |  |  |  |  |  |  |  |  |  |  |
| 321123-01 |  | SUBM - Aggregate Base Courses | 45d | 2021-07-01 | 2021-09-02 | PM1050 |  |  |  | 92d | 0d |  |  |  | 31-20-01 EARTHWORK |  | GRAD | PROC | 0005 | PR | 2 |
| 321123-02 |  | GOV APPR - Agg Base Courses | 30d | 2021-09-03 | 2021-10-02 | 321123-01 |  |  |  | 138d | 60d | 7-D |  |  | 31-20-01 EARTHWORK |  | USAC | PROC | 0005 | PR | 2 |
|  | 1216 | **32 12 16 Hot-Mix Asphalt (HMA) For Roads** |  | 2021-07-01 | 2021-10-02 |  |  |  |  |  |  |  |  |  |  |  |  |  |  |  |  |
| 321216-01 |  | SUBM - HMA for Roads | 45d | 2021-07-01 | 2021-09-02 | PM1050 |  |  |  | 131d | 0d |  |  |  | 32-12-16 ASPHALT PAVING |  | PAVE | PROC | 0005 | PR | 2 |
| 321216-02 |  | GOV APPR - HMA for Roads | 30d | 2021-09-03 | 2021-10-02 | 321216-01 |  |  |  | 194d | 60d | 7-D |  |  | 32-12-16 ASPHALT PAVING |  | USAC | PROC | 0005 | PR | 2 |
|  | 1313 | **32 13 13 Portland Cement Concrete Pavement for Roads and Site Facilities** |  | 2021-07-01 | 2021-10-02 |  |  |  |  |  |  |  |  |  |  |  |  |  |  |  |  |
| 321313-01 |  | SUBM - Concrete Pavement | 45d | 2021-07-01 | 2021-09-02 | PM1050 |  |  |  | 105d | 0d |  |  |  | 32-13-13 SITE CONCRETE PAVING |  | CONC | PROC | 0005 | PR | 2 |
| 321313-02 |  | GOV APPR - Concrete Pavement | 30d | 2021-09-03 | 2021-10-02 | 321313-01 |  |  |  | 156d | 115d | 7-D |  |  | 32-13-13 SITE CONCRETE PAVING |  | USAC | PROC | 0005 | PR | 2 |
|  | 1500 | **32 15 00 Aggregate Surfacing** |  | 2021-07-01 | 2021-10-02 |  |  |  |  |  |  |  |  |  |  |  |  |  |  |  |  |
| 321500-01 |  | SUBM - Aggregate Surfacing | 45d | 2021-07-01 | 2021-09-02 | PM1050 |  |  |  | 169d | 0d |  |  |  | 31-20-01 EARTHWORK |  | GRAD | PROC | 0005 | PR | 2 |
| 321500-02 |  | GOV APPR - Aggregate Surfacing | 30d | 2021-09-03 | 2021-10-02 | 321500-01 |  |  |  | 246d | 152d | 7-D |  |  | 31-20-01 EARTHWORK |  | USAC | PROC | 0005 | PR | 2 |
|  | 1613 | **32 16 13 Concrete Sidewalks and Curbs and Gutters (FIO)** |  |  |  |  |  |  |  |  |  |  |  |  |  |  |  |  |  |  |  |
|  | 1723 | **32 17 23 Pavement Markings** |  | 2021-07-01 | 2021-10-02 |  |  |  |  |  |  |  |  |  |  |  |  |  |  |  |  |
| 321613-01 |  | SUBM - Pavement Markings | 45d | 2021-07-01 | 2021-09-02 | PM1050 |  |  |  | 174d | 0d |  |  |  | 32-12-16 ASPHALT PAVING |  | PAVE | PROC | 0005 | PR | 2 |
| 321613-02 |  | GOV APPR - Pavement Markings | 30d | 2021-09-03 | 2021-10-02 | 321613-01 |  |  |  | 253d | 205d | 7-D |  |  | 32-12-16 ASPHALT PAVING |  | USAC | PROC | 0005 | PR | 2 |
|  | 3113 | **32 31 13 Chain Link Fences and Gates** |  | 2021-04-01 | 2021-10-08 |  |  |  |  |  |  |  |  |  |  |  |  |  |  |  |  |
| 323113-01 |  | SUBM - Chain Link Fences/Gates | 40d | 2021-04-01 A | 2021-07-13 | PM1050 | 8d | 2021-05-03 | 2021-06-28 | 104d | 0d |  |  |  | 32-31-13 CHAIN LINK FENCING / HIGH SECURITY |  | FENC | PROC | 0005 | PR | 2 |
| 323113-02 |  | GOV APPR - Chain Link Fence/Gt | 30d | 2021-04-27 A | 2021-08-12 | 323113-01 | 30d | 2021-06-29 | 2021-07-28 | 152d | 0d | 7-D |  |  | 32-31-13 CHAIN LINK FENCING / HIGH SECURITY |  | USAC | PROC | 0005 | PR | 2 |
| 323113-12 |  | PROC - Chain Link Fences/Gates | 20d | 2021-08-13 | 2021-09-10 | 323113-02 |  |  |  | 122d | 81d |  |  |  | 32-31-13 CHAIN LINK FENCING / HIGH SECURITY |  | FENC | PROC | 0005 | PR | 3 |
| 323113-22 |  | PROC - Gate Oper/Pivot Gates | 40d | 2021-08-13 | 2021-10-08 | 323113-02 |  |  |  | 102d | 61d |  |  |  | 32-31-13 CHAIN LINK FENCING / HIGH SECURITY |  | FENC | PROC | 0005 | PR | 3 |

Notes:
- 283164-01: Activity Notes: RFI-0177 - Fire Alarm Supervising System

| ID | WBS | Activity | Duration | Start | Finish | Predecessors | Complete | Remaining | Planned start | Planned finish | Total float | Free float | Calendar | Resources | Cost | Actual cost | Specification | RESP | AREA | BIDI | PHAS | CATW | CS |
| --- | --- | --- | --- | --- | --- | --- | --- | --- | --- | --- | --- | --- | --- | --- | --- | --- | --- | --- | --- | --- | --- | --- | --- |
|  | 33 | **Division 33 - Utilities** |  | 2020-09-01 | 2021-12-22 |  |  |  |  |  |  |  |  |  |  |  |  |  |  |  |  |  |  |
|  | 1100 | **33 11 00 Water Utility Distribution Piping (FIO)** |  |  |  |  |  |  |  |  |  |  |  |  |  |  |  |  |  |  |  |  |  |
|  | 1113 | **33 11 13 Potable Water Supply Wells (FIO)** |  |  |  |  |  |  |  |  |  |  |  |  |  |  |  |  |  |  |  |  |  |
|  | 1615 | **33 16 15 Water Storage Steel Tanks** |  | 2021-02-01 | 2021-11-08 |  |  |  |  |  |  |  |  |  |  |  |  |  |  |  |  |  |  |
| 331615-01 |  | SUBM - Water Storage Tanks | 60d | 2021-02-01 A | 2021-07-15 | PM1050 |  | 10d | 2021-03-01 | 2021-05-21 | 40d | 0d |  |  |  |  | 33-16-01 WATER STORAGE TANKS | WELL | PROC | 0005 | PR | 2 |  |
| 331615-02 |  | GOV APPR - Water Storage Tanks | 30d | 2021-02-17 A | 2021-08-14 | 331615-01 |  | 30d | 2021-05-22 | 2021-06-20 | 59d | 1d | 7-D |  |  |  | 33-16-01 WATER STORAGE TANKS | PRIM | PROC | 0005 | PR | 2 |  |
| 331615-12 |  | PROC - Water Storage Tanks | 60d | 2021-08-16 | 2021-11-08 | 331615-02 |  |  |  |  | 41d | 0d |  |  |  |  | 33-16-01 WATER STORAGE TANKS | WELL | PROC | 0005 | PR | 3 |  |
|  | 3000 | **33 30 00 Sanitary Sewerage (FIO)** |  | 2020-09-29 | 2021-08-12 |  |  |  |  |  |  |  |  |  |  |  |  |  |  |  |  |  |  |
| 333000-01 |  | SUBM - Sanitary Sewerage | 30d | 2020-09-29 A | 2021-07-15 | PM1050 | 45% | 10d | 2020-09-01 | 2020-10-13 | 24d | 0d |  | COST [5500 h] | 5,500 | 2,475 | 33-10-01 SITE UTILITIES | GRAD | PROC | 0005 | PR | 2 | 4000 |
| 333000-02 |  | QC APPR - Sanitary Sewerage | 5d | 2020-09-29 A | 2021-07-22 | 333000-01 |  | 5d | 2020-11-25 | 2020-12-04 | 24d | 0d |  |  |  |  | 33-10-01 SITE UTILITIES | PRIM | PROC | 0005 | PR | 2 |  |
| 333000-03 |  | GOV FIO - Sanitary Sewerage | 7d | 2020-09-29 A | 2021-07-29 | 333000-02 |  | 7d | 2020-12-04 | 2020-12-11 | 34d | 0d | 7-D |  |  |  | 33-10-01 SITE UTILITIES | USAC | PROC | 0005 | PR | 2 |  |
| 333000-12 |  | PROC - Sanitary Sewerage | 10d | 2021-07-30 | 2021-08-12 | 333000-02, 333000-03 |  |  |  |  | 24d | 0d |  |  |  |  | 33-10-01 SITE UTILITIES | GRAD | PROC | 0005 | PR | 3 |  |
|  | 3213 | **33 32 13 Packaged Sewage Lift Stations, Wet Well Type (FIO)** |  | 2021-02-01 | 2021-08-24 |  |  |  |  |  |  |  |  |  |  |  |  |  |  |  |  |  |  |
| 333213-01 |  | SUBM - Sewer Lift Station | 30d | 2021-02-01 A | 2021-07-13 | PM1050 |  | 8d | 2021-07-01 | 2021-08-12 | 90d | 0d |  | COST [6000 h] | 6,000 |  | 33-10-01 SITE UTILITIES | GRAD | PROC | 0005 | PR | 2 | 4400 |
| 333213-02 |  | QC APPR - Sewer Lift Station | 5d | 2021-07-14 | 2021-07-20 | 333213-01 |  |  |  |  | 90d | 0d |  |  |  |  | 33-10-01 SITE UTILITIES | PRIM | PROC | 0005 | PR | 2 |  |
| 333213-03 |  | GOV FIO - Sewer Lift Station | 7d | 2021-07-21 | 2021-07-27 | 333213-02 |  |  |  |  | 132d | 0d | 7-D |  |  |  | 33-10-01 SITE UTILITIES | USAC | PROC | 0005 | PR | 2 |  |
| 333213-12 |  | PROC - Sewer Lift Station | 20d | 2021-07-28 | 2021-08-24 | 333213-02, 333213-03 |  |  |  |  | 90d | 71d |  |  |  |  | 33-10-01 SITE UTILITIES | GRAD | PROC | 0005 | PR | 3 |  |
|  | 4000 | **33 40 00 Storm Drainage Utilities (FIO)** |  | 2020-09-30 | 2021-07-08 |  |  |  |  |  |  |  |  |  |  |  |  |  |  |  |  |  |  |
| 334000-01 |  | SUBM - Storm Drainage Utility | 30d | 2020-09-30 A | 2020-12-03 A | PM1050 | 100% |  | 2020-09-01 | 2020-10-13 |  |  |  | COST [5500 h] | 5,500 | 5,500 | 33-10-01 SITE UTILITIES | GRAD | PROC | 0005 | PR | 2 | 4000 |
| 334000-02 |  | QC APPR - Storm Drainage Util | 5d | 2020-10-02 A | 2020-11-18 A | 334000-01 | 100% |  | 2020-12-07 | 2020-12-14 |  |  |  |  |  |  | 33-10-01 SITE UTILITIES | PRIM | PROC | 0005 | PR | 2 |  |
| 334000-03 |  | GOV FIO - Storm Drainage Util | 7d | 2020-10-08 A | 2020-11-18 A | 334000-02 | 100% |  | 2020-12-14 | 2020-12-21 |  |  | 7-D |  |  |  | 33-10-01 SITE UTILITIES | USAC | PROC | 0005 | PR | 2 |  |
| 334000-12 |  | PROC - RCP Storm Drain & MHs | 10d | 2020-10-27 A | 2021-07-08 | 334000-02, 334000-03 | 50% | 5d | 2020-12-01 | 2020-12-14 | 37d | 0d |  |  |  |  | 33-10-01 SITE UTILITIES | GRAD | PROC | 0005 | PR | 3 |  |
|  | 5210 | **33 52 10 Service Piping, Fuel Systems** |  | 2020-10-01 | 2021-11-08 |  |  |  |  |  |  |  |  |  |  |  |  |  |  |  |  |  |  |
| 335210-01 |  | SUBM - Service Pipe, Fuel Sys | 60d | 2020-10-01 A | 2021-07-15 | PM1130 |  | 10d | 2020-11-02 | 2021-02-02 | 55d | 0d |  |  |  |  | 33-##-## FUEL SYSTEMS | FUEL | PROC | 0017 | PR | 2 |  |
| 335210-02 |  | GOV APPR - Serv Pipe, Fuel Sys | 30d | 2020-11-11 A | 2021-08-14 | 335210-01 |  | 30d | 2021-02-13 | 2021-03-14 | 80d | 1d | 7-D |  |  |  | 33-##-## FUEL SYSTEMS | USAC | PROC | 0017 | PR | 2 |  |
| 335210-12 |  | PROC - Service Pipe, Fuel Sys | 60d | 2020-11-11 A | 2021-11-08 | 335210-02 |  | 60d | 2021-03-15 | 2021-06-07 | 56d | 0d |  |  |  |  | 33-##-## FUEL SYSTEMS | FUEL | PROC | 0017 | PR | 3 |  |

| ID | WBS | Activity | Duration | Start | Finish | Predecessors | Complete | Remaining | Planned start | Planned finish | Total float | Free float | Calendar | Resources | Cost | Specification | RESP | AREA | BIDI | PHAS | CATW | CS |
| --- | --- | --- | --- | --- | --- | --- | --- | --- | --- | --- | --- | --- | --- | --- | --- | --- | --- | --- | --- | --- | --- | --- |
|  | 5610 | **33 56 10 Factory-Fabricated Fuel Storage Tanks** |  | 2020-10-01 | 2021-12-22 |  |  |  |  |  |  |  |  |  |  |  |  |  |  |  |  |  |
| 335610-01 |  | SUBM - Fuel Storage Tanks | 60d | 2020-10-01 A | 2020-10-29 A | PM1130 | 100% |  | 2020-11-02 | 2021-02-02 |  |  |  |  |  | 33-##-## FUEL SYSTEMS | FUEL | PROC | 0017 | PR | 2 |  |
| 335610-02 |  | GOV APPR - Fuel Storage Tanks | 30d | 2020-10-29 A | 2020-11-05 A | 335610-01 | 100% |  | 2020-12-17 | 2021-01-15 |  |  | 7-D |  |  | 33-##-## FUEL SYSTEMS | USAC | PROC | 0017 | PR | 2 |  |
| 335610-12 |  | PROC - Fuel Storage Tanks | 120d | 2020-11-05 A | 2021-12-22 | 335610-02 |  | 120d | 2021-02-01 | 2021-07-21 | 78d | 52d |  |  |  | 33-##-## FUEL SYSTEMS | FUEL | PROC | 0017 | PR | 3 |  |
|  | 5800 | **33 58 00 Leak Detection for Fueling Systems** |  | 2021-07-01 | 2021-10-24 |  |  |  |  |  |  |  |  |  |  |  |  |  |  |  |  |  |
| 335800-01 |  | SUBM - Leak Detect Fueling Sys | 60d | 2021-07-01 | 2021-09-24 | PM1130 |  |  |  |  | 65d | 0d |  |  |  | 33-##-## FUEL SYSTEMS | FUEL | PROC | 0017 | PR | 2 |  |
| 335800-02 |  | GOV APPR -Leak Detect Fuel Sys | 30d | 2021-09-25 | 2021-10-24 | 335800-01 |  |  |  |  | 100d | 15d | 7-D |  |  | 33-##-## FUEL SYSTEMS | USAC | PROC | 0017 | PR | 2 |  |
|  | 7102 | **33 71 02 Underground Electrical Distribution** |  | 2020-09-01 | 2021-07-02 |  |  |  |  |  |  |  |  |  |  |  |  |  |  |  |  |  |
| 337102-01 |  | SUBM - UG Elec Dist | 45d | 2020-09-01 A | 2021-07-01 | PM1050 |  | 1d | 2020-10-01 | 2020-12-07 | 66d | 0d |  | COST [1400 h] | 1,400 | 26-05-01 BUILDING ELECTRICAL | ELEC | PROC | 0005 | PR | 2 | 1000 |
| 337102-02 |  | GOV APPR - UG Elec Dist | 30d | 2020-09-22 A | 2021-07-02 | 337102-01 |  | 1d | 2020-12-08 | 2021-01-06 | 96d | 0d | 7-D |  |  | 26-05-01 BUILDING ELECTRICAL | USAC | PROC | 0005 | PR | 2 |  |
| 337102-12 |  | PROC - UG Elec Dist | 20d | 2020-10-26 A | 2021-01-04 A | 337102-02 | 100% |  | 2021-02-03 | 2021-03-03 |  |  |  |  |  | 26-05-01 BUILDING ELECTRICAL | ELEC | PROC | 0005 | PR | 3 |  |
|  | 43 | **Division 43 - Process Gas and Liquid Handling, Purification, and Storage Equipment** |  | 2021-07-01 | 2021-09-24 |  |  |  |  |  |  |  |  |  |  |  |  |  |  |  |  |  |
|  | 2120 | **43 21 20 - Potable Water Treatment Equipment (FIO)** |  | 2021-07-01 | 2021-09-24 |  |  |  |  |  |  |  |  |  |  |  |  |  |  |  |  |  |
| 432120-01 |  | SUBM -Pot Water Treatment Eqp | 30d | 2021-07-01 | 2021-08-12 | PM1050 |  |  |  |  | 67d | 0d |  |  |  | 33-21-01 WATER WELLS | WELL | PROC | 0005 | PR | 2 |  |
| 432120-02 |  | QC APPR - Pot Water Treatment | 5d | 2021-08-13 | 2021-08-19 | 432120-01 |  |  |  |  | 67d | 0d |  |  |  | 33-21-01 WATER WELLS | PRIM | PROC | 0005 | PR | 2 |  |
| 432120-03 |  | GOV FIO - Pot Water Treatment | 7d | 2021-08-20 | 2021-08-26 | 432120-02 |  |  |  |  | 98d | 0d | 7-D |  |  | 33-21-01 WATER WELLS | USAC | PROC | 0005 | PR | 2 |  |
| 432120-12 |  | PROC - Pot Water Treatment Eqp | 20d | 2021-08-27 | 2021-09-24 | 432120-02, 432120-03 |  |  |  |  | 66d | 56d |  |  |  | 33-21-01 WATER WELLS | WELL | PROC | 0005 | PR | 3 |  |
|  | 99 | **Material Deliveries / FOB Materials** |  | 2021-02-05 | 2022-01-18 |  |  |  |  |  |  |  |  |  |  |  |  |  |  |  |  |  |
| 133419-90 |  | DELV Metal Bldg Anchor Bolts | 2d | 2021-02-05 A | 2021-02-05 A | 133419-29 | 100% |  | 2021-02-23 | 2021-02-24 |  |  |  |  |  | 13-34-01 METAL BUILDING SYSTEMS | PEMB | PROC | 0001 | PR | 3 |  |
| 083463-90 |  | DELV Detention HM Frames | 2d | 2021-07-29 | 2021-07-30 | 083463-21, 1SGE150 |  |  |  |  | 1d | 0d |  | COST [57300 h] | 57,300 | 08-34-63 DETENTION DOORS, FRAMES & HARDWARE | DETN | PROC | 0001 | PR | 3 |  |
| 081113-90 |  | DELV HM Frames - Area E CMU | 2d | 2021-07-30 | 2021-08-02 | 1SGE150, 081113-21 |  |  |  |  | 47d | 0d |  | COST [11500 h] | 11,500 | 08-11-01 DOORS, FRAMES & HARDWARE | DOOR | PROC | 0001 | PR | 3 |  |
| 081113-91 |  | DELV HM Frames - Areas A - D | 2d | 2021-08-03 | 2021-08-04 | 081113-90 |  |  |  |  | 47d | 0d |  | COST [45800 h] | 45,800 | 08-11-01 DOORS, FRAMES & HARDWARE | DOOR | PROC | 0001 | PR | 3 |  |
| 265300-90 |  | DELV Exit Signs | 3d | 2021-08-13 | 2021-08-17 | 265300-12 |  |  |  |  | 128d | 100d |  | COST [15000 h] | 15,000 | 26-05-01 BUILDING ELECTRICAL | ELEC | PROC | 0001 | PR | 3 | 12889 |
| 262416-90 |  | DELV Panelboards | 5d | 2021-08-27 | 2021-09-02 | 262416-12 |  |  |  |  | 53d | 47d |  | COST [116000 h] | 116,000 | 26-05-01 BUILDING ELECTRICAL | ELEC | PROC | 0001 | PR | 3 | 101298 |
| 270528-90 |  | DELV Cable Trays | 5d | 2021-09-14 | 2021-09-20 | 270528-12 |  |  |  |  | 82d | 54d |  | COST [14500 h] | 14,500 | 26-05-01 BUILDING ELECTRICAL | ELEC | PROC | 0001 | PR | 3 | 12683 |
| 263353-90 |  | DELV UPS | 5d | 2021-09-27 | 2021-10-01 | 263353-02, 263353-12 |  |  |  |  | 78d | 65d |  | COST [283100 h] | 283,100 | 26-05-01 BUILDING ELECTRICAL | ELEC | PROC | 0001 | PR | 3 | 247242 |
| 265200-90 |  | DELV Emergency Lighting | 5d | 2021-09-27 | 2021-10-01 | 265200-12 |  |  |  |  | 96d | 68d |  | COST [73800 h] | 73,800 | 26-05-01 BUILDING ELECTRICAL | ELEC | PROC | 0001 | PR | 3 | 64444 |
| 283164-90 |  | DELV FA Sys | 3d | 2021-10-12 | 2021-10-14 | 283164-12 |  |  |  |  | 133d | 59d |  | COST [37400 h] | 37,400 | 26-05-01 BUILDING ELECTRICAL | ELEC | PROC | 0001 | PR | 3 | 32690 |
| 087100-90 |  | DELV Storefront Hardware | 1d | 2021-11-17 | 2021-11-17 | 087100-21, 1EX140 SS |  |  |  |  | 56d | 37d |  | COST [5700 h] | 5,700 | 08-11-01 DOORS, FRAMES & HARDWARE | DOOR | PROC | 0001 | PR | 3 |  |
| 103500-90 |  | DELV Sleeve for Flagpole Ftg | 2d | 2021-11-18 | 2021-11-19 | 103500-09, 1ENT200 SS |  |  |  |  | 45d | 4d |  | COST [800 h] | 800 | 10-75-01 FLAGPOLES | TOIL | PROC | 0005 | PR | 3 |  |
| 265100-90 |  | DELV Interior Lighting | 5d | 2021-11-24 | 2021-12-02 | 265400-02, 265400-12 |  |  |  |  | 55d | 9d |  | COST [300100 h] | 300,100 | 26-05-01 BUILDING ELECTRICAL | ELEC | PROC | 0001 | PR | 3 | 262074 |
| 265553-90 |  | DELV Security Lighting | 5d | 2021-12-09 | 2021-12-15 | 265553-12 |  |  |  |  | 46d | 0d |  | COST [19700 h] | 19,700 | 26-05-01 BUILDING ELECTRICAL | ELEC | PROC | 0001 | PR | 3 | 17185 |
| 281005-90 |  | DELV ESS | 5d | 2021-12-23 | 2021-12-30 | 281005-12 |  |  |  |  | 74d | 0d |  | COST [172500 h] | 172,500 | 26-05-01 BUILDING ELECTRICAL | ELEC | PROC | 0001 | PR | 3 | 150612 |
| 062000-90 |  | DELV Finish Carpentry | 5d | 2022-01-12 | 2022-01-18 | 062000-32, 1FIC180, 1FIA190 |  |  |  |  | 29d | 0d |  | COST [7500 h] | 7,500 | 06-40-01 CASEWORK / COUNTERTOPS | CASE | PROC | 0001 | PR | 3 | 6914 |
| 064116-90 |  | DELV P-Lam Cabinets | 5d | 2022-01-12 | 2022-01-18 | 064116-32, 1FIC180, 1FIA190 |  |  |  |  | 29d | 0d |  | COST [27000 h] | 27,000 | 06-40-01 CASEWORK / COUNTERTOPS | CASE | PROC | 0001 | PR | 3 | 24195 |
| 066116-90 |  | DELV Solid Surfacing Fabs | 5d | 2022-01-12 | 2022-01-18 | 066116-32, 1FIC180, 1FIA190 |  |  |  |  | 29d | 0d |  | COST [20000 h] | 20,000 | 06-40-01 CASEWORK / COUNTERTOPS | CASE | PROC | 0001 | PR | 3 | 17800 |

| ID | WBS | Activity | Duration | Start | Finish | Predecessors | Complete | Planned start | Planned finish | Total float | Free float | Specification | RESP | AREA | BIDI | PHAS | CATW | FOW |
| --- | --- | --- | --- | --- | --- | --- | --- | --- | --- | --- | --- | --- | --- | --- | --- | --- | --- | --- |
|  | 2 | **QC Preparatory Meetings** |  | 2020-07-28 | 2022-04-26 |  |  |  |  |  |  |  |  |  |  |  |  |  |
| PREP1020 |  | Prep Mtg - Clear/Grub/Grading | 1d | 2020-07-28 A | 2020-07-28 A | GRD1000 SS | 100% | 2020-09-04 | 2020-09-08 |  |  | 01-00-00 GENERAL CONDITIONS | PRIM | PREP | 0005 | CO | 5 | CLEAR/GRUB/GRADING |
| PREP1120 |  | Prep Mtg - Electrical | 1d | 2020-10-20 A | 2020-10-20 A | PREP1100 | 100% | 2021-01-25 | 2021-01-25 |  |  | 01-00-00 GENERAL CONDITIONS | PRIM | PREP | 0001 | CO | 5 | ROUGH ELECTRICAL |
| PREP1180 |  | Prep Mtg - UG Elec Distr | 1d | 2020-10-20 A | 2020-10-20 A | GRD1140 | 100% | 2021-03-08 | 2021-03-09 |  |  | 01-00-00 GENERAL CONDITIONS | PRIM | PREP | 0005 | CO | 5 | U/G ELECTRICAL DIST |
| PREP1100 |  | Prep Mtg - Plumbing | 1d | 2020-10-27 A | 2020-10-27 A | GRD1140 SS | 100% | 2020-11-18 | 2020-11-18 |  |  | 01-00-00 GENERAL CONDITIONS | PRIM | PREP | 0001 | CO | 5 | PLUMBING |
| PREP1000 |  | Prep Mtg - SWPPP | 1d | 2020-11-04 A | 2020-11-04 A | MOB1000 | 100% | 2020-11-02 | 2020-11-02 |  |  | 01-00-00 GENERAL CONDITIONS | PRIM | PREP | 0005 | CO | 5 | SWPPP |
| PREP1040 |  | Prep Mtg - Storm Drainage | 1d | 2020-11-09 A | 2020-11-09 A | GRD1040 FF, 334000-03 | 100% | 2020-12-01 | 2020-12-01 |  |  | 01-00-00 GENERAL CONDITIONS | PRIM | PREP | 0005 | CO | 5 | STORM DRAINAGE |
| PREP1060 |  | Prep Mtg - CIP Concrete | 1d | 2021-01-04 A | 2021-01-04 A | 031113-02, 033000-02, GRD1040 FF | 100% | 2021-01-15 | 2021-01-15 |  |  | 01-00-00 GENERAL CONDITIONS | PRIM | PREP | 0001 | CO | 5 | CIP CONCRETE |
| PREP1080 |  | Prep Mtg - Rebar | 1d | 2021-01-14 A | 2021-01-14 A | PREP1060, 032000-22 | 100% | 2021-01-18 | 2021-01-18 |  |  | 01-00-00 GENERAL CONDITIONS | PRIM | PREP | 0001 | CO | 5 | CONCRETE REINFORCE |
| PREP1220 |  | Prep Mtg - Waterproofing | 1d | 2021-04-05 A | 2021-04-05 A | RW1130 SS | 100% | 2021-05-03 | 2021-05-03 |  |  | 01-00-00 GENERAL CONDITIONS | PRIM | PREP | 0005 | CO | 5 | WATERPROOFING |
| PREP1260 |  | Prep Mtg - Metal Bldg System | 1d | 2021-04-28 A | 2021-04-28 A | 133419-22, 133419-12 | 100% | 2021-05-03 | 2021-05-03 |  |  | 01-00-00 GENERAL CONDITIONS | PRIM | PREP | 0001 | CO | 5 | METAL BUILDING SYS |
| PREP1240 |  | Prep Mtg - Concrete Piers | 1d | 2021-05-10 A | 2021-05-10 A | 1SGA150 | 100% | 2021-06-22 | 2021-06-22 |  |  | 01-00-00 GENERAL CONDITIONS | PRIM | PREP | 0005 | CO | 5 | CONCRETE PIERS |
| PREP1500 |  | Prep Mtg - Wet Pipe Sprinkler | 1d | 2021-06-23 A | 2021-06-23 A | 211313-06, 1STC140 FF | 100% | 2021-06-22 | 2021-06-22 |  |  | 01-00-00 GENERAL CONDITIONS | PRIM | PREP | 0001 | CO | 5 | WET PIPE SPRINKLER |
| PREP1580 |  | Prep Mtg - Dry Pipe Fire Sprnk | 1d | 2021-06-23 A | 2021-06-23 A | 211317-06, 1RIE140 SS | 100% | 2021-08-12 | 2021-08-12 |  |  | 01-00-00 GENERAL CONDITIONS | PRIM | PREP | 0001 | CO | 5 | DRY PIPE SPRINKLER |
| PREP1480 |  | Prep Mtg - Metal Stud Framing | 1d | 2021-06-28 A | 2021-06-28 A | 092200-02, 054000-02, 1STC140 FF | 100% | 2021-07-20 | 2021-07-20 |  |  | 01-00-00 GENERAL CONDITIONS | PRIM | PREP | 0001 | CO | 5 | METAL STUD FRAMING |
| PREP1340 |  | Prep Mtg - Masonry | 1d | 2021-07-02 | 2021-07-02 | 042000-22, 1STE110 SS |  |  |  | 20d | 19d | 01-00-00 GENERAL CONDITIONS | PRIM | PREP | 0001 | CO | 5 | MASONRY |
| PREP1420 |  | Prep Mtg - Tube Daylight Dev | 1d | 2021-07-02 | 2021-07-02 | 086200-02, 1STC140 SS |  |  |  | 69d | 18d | 01-00-00 GENERAL CONDITIONS | PRIM | PREP | 0001 | CO | 5 | TUBULAR DAYLIGHTING |
| PREP1140 |  | Prep Mtg - Site Sewer | 1d | 2021-07-30 | 2021-07-30 | SD1160 SS, 333000-03 |  |  |  | 35d | 11d | 01-00-00 GENERAL CONDITIONS | PRIM | PREP | 0005 | CO | 5 | SITE SEWER |
| PREP1540 |  | Prep Mtg - Gypsum Board | 1d | 2021-08-04 | 2021-08-04 | 092900-02, 1RIC140 FF |  |  |  | 59d | 0d | 01-00-00 GENERAL CONDITIONS | PRIM | PREP | 0001 | CO | 5 | GYPSUM BOARD |
| PREP1360 |  | Prep Mtg - Water Storage Tanks | 1d | 2021-08-16 | 2021-08-16 | 331615-02, 3FN160 SS |  |  |  | 100d | 59d | 01-00-00 GENERAL CONDITIONS | PRIM | PREP | 0003 | CO | 5 | WATER STORAGE TANKS |
| PREP1560 |  | Prep Mtg - Fire Alarm System | 1d | 2021-08-16 | 2021-08-16 | 283164-02, 1STC140 SS |  |  |  | 119d | 68d | 01-00-00 GENERAL CONDITIONS | PRIM | PREP | 0001 | CO | 5 | FIRE ALARM SYSTEM |
| PREP1620 |  | Prep Mtg - Folding Panel Part | 1d | 2021-08-19 | 2021-08-19 | 102239-12, 1RIA140 FF |  |  |  | 132d | 0d | 01-00-00 GENERAL CONDITIONS | PRIM | PREP | 0001 | CO | 5 | FOLDING PANEL PART |
| PREP1520 |  | Prep Mtg - HVAC | 1d | 2021-08-30 | 2021-08-30 | PREP1480, 230000-02, 230515-02, 230548-02 |  |  |  | 42d | 0d | 01-00-00 GENERAL CONDITIONS | PRIM | PREP | 0001 | CO | 5 | HVAC |
| PREP1640 |  | Prep Mtg - Bullet Resist Panel | 1d | 2021-08-30 | 2021-08-30 | 102641-02, 1RIA180 SS+5d |  |  |  | 44d | 9d | 01-00-00 GENERAL CONDITIONS | PRIM | PREP | 0001 | CO | 5 | BULLET RESISTANT PAN |
| PREP1160 |  | Prep Mtg - Site Telecom | 1d | 2021-08-31 | 2021-08-31 | 337102-02, SS1060 FF |  |  |  | 28d | 0d | 01-00-00 GENERAL CONDITIONS | PRIM | PREP | 0005 | CO | 5 | SITE TELECOM |
| PREP1440 |  | Prep Mtg - Wall Insulation | 1d | 2021-08-31 | 2021-08-31 | 1STE120 SS+20d |  |  |  | 17d | 16d | 01-00-00 GENERAL CONDITIONS | PRIM | PREP | 0001 | CO | 5 | WALL INSULATION |
| PREP1200 |  | Prep Mtg - Site Water | 1d | 2021-09-13 | 2021-09-13 | EL1320 SS, EL1340 SS |  |  |  | 34d | 5d | 01-00-00 GENERAL CONDITIONS | PRIM | PREP | 0005 | CO | 5 | SITE WATER |
| PREP1320 |  | Prep Mtg - Slope Protection | 1d | 2021-09-13 | 2021-09-13 | SLP1000 |  |  |  | 58d | 0d | 01-00-00 GENERAL CONDITIONS | PRIM | PREP | 0005 | CO | 5 | SLOPE PROTECTION |
| PREP1380 |  | Prep Mtg - Air Barrier | 1d | 2021-09-23 | 2021-09-23 | 072710-13, 072719-02, 1STC100 FF |  |  |  | 5d | 0d | 01-00-00 GENERAL CONDITIONS | PRIM | PREP | 0001 | CO | 5 | AIR BARRIER |
| PREP1400 |  | Prep Mtg - Storefront/Glazing | 1d | 2021-09-24 | 2021-09-24 | 084113-03, 088100-03, PREP1380 |  |  |  | 10d | 4d | 01-00-00 GENERAL CONDITIONS | PRIM | PREP | 0001 | CO | 5 | ALUM DOOR/FRAME/GLAZ |
| PREP1600 |  | Prep Mtg - Set Elec Equip | 1d | 2021-10-11 | 2021-10-11 | 1AST130, 3ST120, 1STE180, 260571-02, 262300-02, 262413-02, 262416-02 |  |  |  | 27d | 21d | 01-00-00 GENERAL CONDITIONS | PRIM | PREP | 0001 | CO | 5 | SET ELECTRICAL EQUIP |
| PREP1660 |  | Prep Mtg - Doors & Frames | 1d | 2021-10-11 | 2021-10-11 | 1EX120 SS, 081113-02, 081400-02, 082200-02, 087100-02 |  |  |  | 91d | 17d | 01-00-00 GENERAL CONDITIONS | PRIM | PREP | 0001 | CO | 5 | DOORS AND FRAMES |
| PREP1680 |  | Prep Mtg - Finish Electrical | 1d | 2021-10-18 | 2021-10-18 | 1FIC110 SS, 265400-02, 265200-02, 265300-02, 265553-02, 265600-02 |  |  |  | 110d | 39d | 01-00-00 GENERAL CONDITIONS | PRIM | PREP | 0001 | CO | 5 | FINISH ELECTRICAL |
| PREP1280 |  | Prep Mtg - Facility Gas Piping | 1d | 2021-10-25 | 2021-10-25 | WA1040 SS |  |  |  | 56d | 4d | 01-00-00 GENERAL CONDITIONS | PRIM | PREP | 0005 | CO | 5 | FACILITY GAS PIPING |
| PREP1700 |  | Prep Mtg - Painting | 1d | 2021-11-01 | 2021-11-01 | 099000-03, 1FIC120 SS |  |  |  | 15d | 1d | 01-00-00 GENERAL CONDITIONS | PRIM | PREP | 0001 | CO | 5 | PAINTING |
| PREP1720 |  | Prep Mtg - Mech Sys Insulation | 1d | 2021-11-01 | 2021-11-01 | 230700-02, 1RIC250 FF |  |  |  | 62d | 9d | 01-00-00 GENERAL CONDITIONS | PRIM | PREP | 0001 | CO | 5 | MECH SYS INSULATION |
| PREP1740 |  | Prep Mtg - Fire Pumps | 1d | 2021-11-23 | 2021-11-23 | 213000-06, 3FI190 SS |  |  |  | 10d | 0d | 01-00-00 GENERAL CONDITIONS | PRIM | PREP | 0003 | CO | 5 | FIRE PUMPS |
| PREP1820 |  | Prep Mtg - HVAC Controls | 1d | 2021-11-23 | 2021-11-23 | 230900-02, 1FIC130 SS |  |  |  | 45d | 9d | 01-00-00 GENERAL CONDITIONS | PRIM | PREP | 0001 | CO | 5 | HVAC CONTROLS |
| PREP1840 |  | Prep Mtg - Acoustical Ceilings | 1d | 2021-11-23 | 2021-11-23 | 095100-03, 1FIC130 SS |  |  |  | 46d | 9d | 01-00-00 GENERAL CONDITIONS | PRIM | PREP | 0001 | CO | 5 | ACOUSTIC CEILINGS |
| PREP1860 |  | Prep Mtg - Coiling Counter Drs | 1d | 2021-11-23 | 2021-11-23 | 083313-13, 1FIC130 SS |  |  |  | 129d | 9d | 01-00-00 GENERAL CONDITIONS | PRIM | PREP | 0001 | CO | 5 | COILING COUNTER DOOR |
| PREP1760 |  | Prep Mtg - Water Treat Equip | 1d | 2021-11-24 | 2021-11-24 | 3FI220 SS, 432120-03 |  |  |  | 24d | 14d | 01-00-00 GENERAL CONDITIONS | PRIM | PREP | 0003 | CO | 5 | WATER TREATMENT EQP |
| PREP1300 |  | Prep Mtg - Diesel Generator | 1d | 2021-11-29 | 2021-11-29 | 263215-02, PRE-1200, SFND1140 |  |  |  | 20d | 0d | 01-00-00 GENERAL CONDITIONS | PRIM | PREP | 0005 | CO | 5 | DIESEL GENERATOR |
| PREP1880 |  | Prep Mtg - Static Ctrl Floor | 1d | 2021-11-30 | 2021-11-30 | 096238-02, 1LVD110 SS |  |  |  | 24d | 2d | 01-00-00 GENERAL CONDITIONS | PRIM | PREP | 0001 | CO | 5 | STATIC CONTROL FLOOR |
| PREP1460 |  | Prep Mtg - Hot Mix Asphalt | 1d | 2021-12-02 | 2021-12-02 | 321216-02, SIT1100 SS |  |  |  | 128d | 11d | 01-00-00 GENERAL CONDITIONS | PRIM | PREP | 0005 | CO | 5 | HOT MIX ASPHALT |
| PREP1780 |  | Prep Mtg - Water Supply Wells | 1d | 2021-12-03 | 2021-12-03 | 3FI250 SS |  |  |  | 32d | 19d | 01-00-00 GENERAL CONDITIONS | PRIM | PREP | 0003 | CO | 5 | WATER SUPPLY WELLS |
| PREP1900 |  | Prep Mtg - Communications Bldg | 1d | 2021-12-08 | 2021-12-08 | 270528-02, 271000-02, 271323-02, 1FIC130 FF |  |  |  | 13d | 0d | 01-00-00 GENERAL CONDITIONS | PRIM | PREP | 0001 | CO | 5 | COMMUNICATIONS (BLD) |
| PREP1920 |  | Prep Mtg - Quartz Flooring | 1d | 2021-12-09 | 2021-12-09 | 096726-03, 1FIC180 SS |  |  |  | 55d | 6d | 01-00-00 GENERAL CONDITIONS | PRIM | PREP | 0001 | CO | 5 | QUARTZ FLOORING |
| PREP1940 |  | Prep Mtg - Ceramic Tiling | 1d | 2021-12-15 | 2021-12-15 | 093010-03, 1FIC200 SS |  |  |  | 71d | 2d | 01-00-00 GENERAL CONDITIONS | PRIM | PREP | 0001 | CO | 5 | CERAMIC/QUARRY TILE |
| PREP1960 |  | Prep Mtg - ESS | 1d | 2021-12-20 | 2021-12-20 | 281005-02, 1RIC350 FF |  |  |  | 81d | 7d | 01-00-00 GENERAL CONDITIONS | PRIM | PREP | 0001 | CO | 5 | ELECTRONIC SECURITY |
| PREP1980 |  | Prep Mtg - Metal Lockers | 1d | 2021-12-20 | 2021-12-20 | 105113-02, 1FIC700 SS |  |  |  | 90d | 9d | 01-00-00 GENERAL CONDITIONS | PRIM | PREP | 0001 | CO | 5 | METAL LOCKERS |
| PREP2000 |  | Prep Mtg - UPS | 1d | 2021-12-23 | 2021-12-23 | 263353-02, 1LVD160 SS |  |  |  | 22d | 9d | 01-00-00 GENERAL CONDITIONS | PRIM | PREP | 0001 | CO | 5 | UPS |
| PREP2040 |  | Prep Mtg - Cement Stucco | 1d | 2021-12-23 | 2021-12-23 | 092423-13, 1FIE730 SS |  |  |  | 14d | 4d | 01-00-00 GENERAL CONDITIONS | PRIM | PREP | 0001 | CO | 5 | CEMENT STUCCO |
| PREP1800 |  | Prep Mtg - Chain Link Fencing | 1d | 2022-01-10 | 2022-01-10 | 323113-02, SIT2200 SS+10d |  |  |  | 41d | 0d | 01-00-00 GENERAL CONDITIONS | PRIM | PREP | 0005 | CO | 5 | CHAIN LINK FENCE |
| PREP2140 |  | Prep Mtg - Casework | 1d | 2022-01-12 | 2022-01-12 | 062000-22, 064116-22, 066116-22, 123600-02, 1FIA190 |  |  |  | 33d | 4d | 01-00-00 GENERAL CONDITIONS | PRIM | PREP | 0001 | CO | 5 | CASEWORK |
| PREP2060 |  | Prep Mtg - Carpeting | 1d | 2022-01-13 | 2022-01-13 | 096800-03, 1FIC230 SS |  |  |  | 37d | 0d | 01-00-00 GENERAL CONDITIONS | PRIM | PREP | 0001 | CO | 5 | CARPETING |
| PREP2100 |  | Prep Mtg - Resilient Flooring | 1d | 2022-01-14 | 2022-01-14 | 096500-03, 096566-03, PREP2060 |  |  |  | 83d | 23d | 01-00-00 GENERAL CONDITIONS | PRIM | PREP | 0001 | CO | 5 | RESILIENT FLOORING |
| PREP2180 |  | Prep Mtg - Wall & Door Protect | 1d | 2022-01-26 | 2022-01-26 | 102600-02, 1FIC290 SS |  |  |  | 60d | 9d | 01-00-00 GENERAL CONDITIONS | PRIM | PREP | 0001 | CO | 5 | WALL & DOOR PROTECT |
| PREP2200 |  | Prep Mtg - Finish Plumbing | 1d | 2022-01-26 | 2022-01-26 | 1FIA710 SS, 220000-02 |  |  |  | 69d | 10d | 01-00-00 GENERAL CONDITIONS | PRIM | PREP | 0001 | CO | 5 | FINISH PLUMBING |
| PREP2220 |  | Prep Mtg - Access Flooring | 1d | 2022-01-27 | 2022-01-27 | 096919-13, 1FIA220 SS |  |  |  | 62d | 6d | 01-00-00 GENERAL CONDITIONS | PRIM | PREP | 0001 | CO | 5 | ACCESS FLOORING |
| PREP2120 |  | Prep Mtg - Ext Sun Ctrl Device | 1d | 2022-02-01 | 2022-02-01 | 107000-02, 1EX180 SS+10d |  |  |  | 94d | 12d | 01-00-00 GENERAL CONDITIONS | PRIM | PREP | 0001 | CO | 5 | EXTERIOR SUN CONTROL |
| PREP2240 |  | Prep Mtg - Toilet Accessories | 1d | 2022-02-10 | 2022-02-10 | 101453-02, 102813-02, 1FIC770 SS |  |  |  | 66d | 7d | 01-00-00 GENERAL CONDITIONS | PRIM | PREP | 0001 | CO | 5 | TOILET ACCESSORIES |
| PREP2260 |  | Prep Mtg - OH Coiling Doors | 1d | 2022-02-22 | 2022-02-22 | 083313-03, 083323-02, 1FIE820 SS+10d |  |  |  | 84d | 1d | 01-00-00 GENERAL CONDITIONS | PRIM | PREP | 0001 | CO | 5 | OH COILING DOORS |
| PREP2280 |  | Prep Mtg - Wire Mesh Partition | 1d | 2022-02-22 | 2022-02-22 | 1FIE820 SS+10d, 102213-03 |  |  |  | 84d | 1d | 01-00-00 GENERAL CONDITIONS | PRIM | PREP | 0001 | CO | 5 | WIRE MESH PARTITIONS |
| PREP2300 |  | Prep Mtg - Exercise Equipment | 1d | 2022-02-24 | 2022-02-24 | 1FIC400 SS |  |  |  | 60d | 4d | 01-00-00 GENERAL CONDITIONS | PRIM | PREP | 0001 | CO | 5 | EXERCISE EQUIPMENT |
| PREP2020 |  | Prep Mtg - Riprap | 1d | 2022-02-25 | 2022-02-25 | SIT1120 SS, SIT1110 SS |  |  |  | 75d | 10d | 01-00-00 GENERAL CONDITIONS | PRIM | PREP | 0005 | CO | 5 | RIPRAP |
| PREP2320 |  | Prep Mtg - Roller Window Shade | 1d | 2022-03-03 | 2022-03-03 | 122413-02, 1FIA410 SS |  |  |  | 57d | 4d | 01-00-00 GENERAL CONDITIONS | PRIM | PREP | 0001 | CO | 5 | ROLLER WINDOW SHADES |
| PREP2080 |  | Prep Mtg - Aggregate Surfacing | 1d | 2022-03-04 | 2022-03-04 | 321500-02, CRR1000 SS |  |  |  | 65d | 10d | 01-00-00 GENERAL CONDITIONS | PRIM | PREP | 0005 | CO | 5 | AGGREGATE SURFACING |
| PREP2340 |  | Prep Mtg - Detention Doors/Frm | 1d | 2022-03-09 | 2022-03-09 | 083463-02, 1FIE930 SS |  |  |  | 22d | 12d | 01-00-00 GENERAL CONDITIONS | PRIM | PREP | 0001 | CO | 5 | DETENTION DOORS |
| PREP2360 |  | Prep Mtg - Vault Door/Day Gate | 1d | 2022-03-09 | 2022-03-09 | 083459-02, 1FIE930 SS |  |  |  | 22d | 12d | 01-00-00 GENERAL CONDITIONS | PRIM | PREP | 0001 | CO | 5 | VAULT DOOR DAY GATE |
| PREP2160 |  | Prep Mtg - Flagpoles | 1d | 2022-03-11 | 2022-03-11 | 103500-12, SIT2480, SIT2580 SS |  |  |  | 71d | 10d | 01-00-00 GENERAL CONDITIONS | PRIM | PREP | 0001 | CO | 5 | FLAG POLES |

| ID | WBS | Activity | Duration | Start | Finish | Predecessors | Complete | Planned start | Planned finish | Total float | Free float | Calendar | Resources | Cost | Actual cost | Specification | RESP | AREA | BIDI | PHAS | CATW | FOW | NOTES |
| --- | --- | --- | --- | --- | --- | --- | --- | --- | --- | --- | --- | --- | --- | --- | --- | --- | --- | --- | --- | --- | --- | --- | --- |
| PREP2400 |  | Prep Mtg - Shelving | 1d | 2022-03-16 | 2022-03-16 | 105613-02, 1FIA420 FF |  |  |  | 41d | 7d |  |  |  |  | 01-00-00 GENERAL CONDITIONS | PRIM | PREP | 0001 | CO | 5 | SHELVING |  |
| PREP2420 |  | Prep Mtg - Detention Padding | 1d | 2022-03-25 | 2022-03-25 | 119819-03, 1FIE930 FF |  |  |  | 44d | 10d |  |  |  |  | 01-00-00 GENERAL CONDITIONS | PRIM | PREP | 0001 | CO | 5 | DETENTION PADDING |  |
| PREP2440 |  | Prep Mtg - Kitchen Equipment | 1d | 2022-04-11 | 2022-04-11 | 1FIE1050 SS |  |  |  | 33d | 4d |  |  |  |  | 01-00-00 GENERAL CONDITIONS | PRIM | PREP | 0001 | CO | 5 | ELECTRIC KITCHEN EQP |  |
| PREP2460 |  | Prep Mtg - Signage | 1d | 2022-04-11 | 2022-04-11 | 101400-03, 101400-21, 1FIE1050 SS |  |  |  | 28d | 4d |  |  |  |  | 01-00-00 GENERAL CONDITIONS | PRIM | PREP | 0001 | CO | 5 | SIGNAGE |  |
| PREP2380 |  | Prep Mtg - Pavement Markings | 1d | 2022-04-26 | 2022-04-26 | 321613-02, SIT2640 SS |  |  |  | 33d | 9d |  |  |  |  | 01-00-00 GENERAL CONDITIONS | PRIM | PREP | 0005 | CO | 5 | PAVEMENT MARKINGS |  |
|  | 5 | **Construction** |  | 2020-06-04 | 2022-06-23 |  |  |  |  |  |  |  |  |  |  |  |  |  |  |  |  |  |  |
|  | 1 | **Mobilization** |  | 2020-06-04 | 2021-01-12 |  |  |  |  |  |  |  |  |  |  |  |  |  |  |  |  |  |  |
| MOB1210 |  | Permit Consultant/Procurement | 5d | 2020-06-04 A | 2020-07-10 A | PM1050 | 100% | 2021-01-04 | 2021-01-08 |  |  |  | COST [22000 h] | 22,000 | 22,000 | 01-00-00 GENERAL CONDITIONS | PRIM | MOBI | 0005 | CO | 4 |  | 1/20/21 - Added |
| MOB1280 |  | Traffic Ctrl Plan for Entrance | 5d | 2020-06-22 A | 2020-08-11 A | PM1050 | 100% | 2021-01-04 | 2021-01-08 |  |  |  | COST [1970 h] | 1,970 | 1,970 | 01-00-00 GENERAL CONDITIONS | PRIM | MOBI | 0005 | CO | 4 |  | 1/20/21 - Added |
| MOB1250 |  | Temp Piping from 1st Pond | 5d | 2020-07-02 A | 2020-07-14 A | MOB1220 | 100% | 2021-01-11 | 2021-01-15 |  |  |  | COST [14050 h] | 14,050 | 14,050 | 01-00-00 GENERAL CONDITIONS | PRIM | MOBI | 0005 | CO | 4 |  | 1/20/21 - Added |
| MOB1000 |  | Survey Limits of Proj/Ctrls | 2d | 2020-07-07 A | 2020-07-28 A | 013526-02, 013526-12, 014504-11, PRE-1090, PRE-1100, PRE-1000, PRE-1070, PRE-1040, PRE-1010 | 100% | 2020-07-07 | 2020-07-08 |  |  | 5-DW | COST [6000 h] | 6,000 | 6,000 | 01-00-00 GENERAL CONDITIONS | SURV | MOBI | 0005 | CO | 4 | SURVEY |  |
| MOB1170 |  | Survey for Temp Fence | 2d | 2020-07-10 A | 2020-07-21 A | MOB1000 | 100% | 2021-01-04 | 2021-01-05 |  |  |  | COST [4400 h] | 4,400 | 4,400 | 01-00-00 GENERAL CONDITIONS | PRIM | MOBI | 0005 | CO | 4 |  | 1/20/21 - Added |
| MOB1190 |  | Temp Generator Prior to SDGE | 5d | 2020-07-13 A | 2021-01-11 A | PM1050 | 100% | 2021-01-04 | 2021-01-08 |  |  |  | COST [10100 h] | 10,100 | 10,100 | 01-00-00 GENERAL CONDITIONS | PRIM | MOBI | 0005 | CO | 4 |  | 1/20/21 - Added |
| MOB1200 |  | Temp Highway Signage | 5d | 2020-07-13 A | 2020-07-13 A | MOB1280 | 100% | 2021-01-11 | 2021-01-15 |  |  |  | COST [2200 h] | 2,200 | 2,200 | 01-00-00 GENERAL CONDITIONS | PRIM | MOBI | 0005 | CO | 4 |  | 1/20/21 - Added |
| MOB1020 |  | Scan for Existing Utilities | 10d | 2020-07-17 A | 2020-07-31 A | MOB1000 | 100% | 2020-07-09 | 2020-07-23 |  |  | 5-DW | COST [7500 h] | 7,500 | 7,500 | 01-00-00 GENERAL CONDITIONS | PRIM | MOBI | 0005 | CO | 4 |  |  |
| MOB1080 |  | Notify Gov Prior to Excavation | 15d | 2020-07-17 A | 2020-07-17 A | MOB1100 FF, PRE-1070 | 100% | 2020-07-17 | 2020-07-31 |  |  | 7-D |  |  |  | 01-00-00 GENERAL CONDITIONS | PRIM | MOBI | 0001 | CO | 4 |  |  |
| MOB1040 |  | Install Temp Fencing | 3d | 2020-07-21 A | 2020-07-29 A | MOB1000, MOB1170 | 100% | 2020-07-09 | 2020-07-13 |  |  | 5-DW | COST [7500 h] | 7,500 | 7,500 | 01-00-00 GENERAL CONDITIONS | PRIM | MOBI | 0001 | CO | 4 |  |  |
| MOB1100 |  | Install Temp Water | 10d | 2020-07-21 A | 2020-07-29 A | MOB1060 FF, 015000-02 | 100% | 2020-07-20 | 2020-07-31 |  |  | 5-DW | COST [20000 h] | 20,000 | 20,000 | 01-00-00 GENERAL CONDITIONS | PRIM | MOBI | 0001 | CO | 4 |  |  |
| MOB1180 |  | Grade & Prep for Job Trailer | 5d | 2020-07-21 A | 2020-07-21 A | MOB1000 | 100% | 2021-01-04 | 2021-01-08 |  |  |  | COST [19930 h] | 19,930 | 19,930 | 01-00-00 GENERAL CONDITIONS | PRIM | MOBI | 0005 | CO | 4 |  | 1/20/21 - Added |
| MOB1060 |  | Install BMPs | 5d | 2020-07-29 A | 2020-09-11 A | MOB1040, 015719-31 | 100% | 2020-07-14 | 2020-07-21 |  |  | 5-DW | COST [15000 h] | 15,000 | 15,000 | 01-00-00 GENERAL CONDITIONS | PRIM | MOBI | 0001 | CO | 4 | SWPPP |  |
| MOB1220 |  | 1st Pond Development | 5d | 2020-08-03 A | 2020-08-21 A | MOB1000 | 100% | 2021-01-04 | 2021-01-08 |  |  |  | COST [74200 h] | 74,200 | 74,200 | 01-00-00 GENERAL CONDITIONS | PRIM | MOBI | 0005 | CO | 4 |  | 1/20/21 - Added |
| MOB1160 |  | Mark Out Access Roads | 3d | 2020-08-04 A | 2020-08-11 A | MOB1000, GRD1040 | 100% | 2020-08-07 | 2020-08-11 |  |  | 5-DW | COST [2500 h] | 2,500 | 2,500 | 01-00-00 GENERAL CONDITIONS | PRIM | MOBI | 0001 | CO | 4 |  |  |
| MOB1260 |  | Construction Entrance | 2d | 2020-08-11 A | 2020-08-24 A | MOB1060 SS | 100% | 2021-01-06 | 2021-01-07 |  |  |  | COST [17650 h] | 17,650 | 17,650 | 01-00-00 GENERAL CONDITIONS | PRIM | MOBI | 0005 | CO | 4 |  | 1/20/21 - Added |
| MOB1270 |  | Setup Temp Trailer for QA | 5d | 2020-08-11 A | 2020-08-12 A | MOB1180, MOB1190 FF | 100% | 2021-01-11 | 2021-01-15 |  |  |  | COST [10000 h] | 10,000 | 10,000 | 01-00-00 GENERAL CONDITIONS | PRIM | MOBI | 0005 | CO | 4 |  | 1/20/21 - Added |
| MOB1140 |  | DELV & Setup Job Trailers | 15d | 2020-08-24 A | 2020-08-27 A | 015000-02, GRD1000, MOB1120 FF, MOB1180, MOB1190 FF, MOB1270 FF | 100% | 2020-08-06 | 2020-08-27 |  |  | 5-DW | COST [30000 h] | 30,000 | 30,000 | 01-00-00 GENERAL CONDITIONS | PRIM | MOBI | 0001 | CO | 4 |  |  |
| MOB1120 |  | Install Temp Power Onsite | 20d | 2020-08-27 A | 2021-01-12 A | MOB1000, 015000-02 | 100% | 2020-07-20 | 2020-08-17 |  |  | 5-DW | COST [60000 h] | 60,000 | 60,000 | 01-00-00 GENERAL CONDITIONS | PRIM | MOBI | 0001 | CO | 4 |  |  |
| MOB1230 |  | 2nd Pond Development | 5d | 2020-09-03 A | 2020-09-14 A | MOB1220 | 100% | 2021-01-11 | 2021-01-15 |  |  |  | COST [43000 h] | 43,000 | 43,000 | 01-00-00 GENERAL CONDITIONS | PRIM | MOBI | 0005 | CO | 4 |  | 1/20/21 - Added |
| MOB1240 |  | Truck in Water for Grading | 5d | 2020-09-14 A | 2021-01-06 A | MOB1230 | 100% | 2021-01-18 | 2021-01-22 |  |  |  | COST [588500 h] | 588,500 | 588,500 | 01-00-00 GENERAL CONDITIONS | PRIM | MOBI | 0005 | CO | 4 |  | 1/20/21 - Added |

Notes:
- MOB1080: Activity Notes: Per 01 11 00 - 1.14.1

| ID | WBS | Activity | Duration | Start | Finish | Predecessors | Complete | Remaining | Planned start | Planned finish | Total float | Free float | Calendar | Resources | Cost | Actual cost | Specification | CS | RESP | WRKP | AREA | BIDI | PHAS | CATW | FOW | Sheet |
| --- | --- | --- | --- | --- | --- | --- | --- | --- | --- | --- | --- | --- | --- | --- | --- | --- | --- | --- | --- | --- | --- | --- | --- | --- | --- | --- |
|  | 2 | **Site Development** |  | 2020-08-10 | 2022-02-10 |  |  |  |  |  |  |  |  |  |  |  |  |  |  |  |  |  |  |  |  |  |
|  | 1 | **Earthwork** |  | 2020-08-10 | 2021-08-30 |  |  |  |  |  |  |  |  |  |  |  |  |  |  |  |  |  |  |  |  |  |
| GRD1000 |  | Mobilize Grading Equip | 3d | 2020-08-10 A | 2020-09-30 A | MOB1080, 013201-11, MOB1100, MOB1200 | 100% |  | 2020-08-03 | 2020-08-05 |  |  | 5-DW | COST [195000 h] | 195,000 | 195,000 | 31-20-01 EARTHWORK | 180000 | GRAD | 005 | SITD | 0005 | CO | 4 | CLEAR/GRUB/GRADING |  |
| GRD1040 |  | Clear & Grub / Rip Soil | 3d | 2020-08-10 A | 2020-08-21 A | GRD1000 SS+1d, 013526-32, MOB1020, GRD1020 SS+1d, PREP1020, MOB1260 | 100% |  | 2020-08-04 | 2020-08-06 |  |  | 5-DW | COST [50000 h] | 50,000 | 50,000 | 31-20-01 EARTHWORK | 42000 | GRAD | 003 | SITD | 0005 | CO | 4 | CLEAR/GRUB/GRADING |  |
| GRD1060 |  | Pre-Water Site | 10d | 2020-08-24 A | 2020-09-30 A | GRD1040, MOB1250 | 100% |  | 2020-08-07 | 2020-08-21 |  |  | 5-DW | COST [11000 h] | 11,000 | 11,000 | 31-20-01 EARTHWORK |  | GRAD | 002 | SITD | 0005 | CO | 5 | CLEAR/GRUB/GRADING |  |
| GRD1020 |  | Survey Rough Grade | 2d | 2020-09-15 A | 2020-09-21 A | MOB1100, MOB1100 FF | 100% |  | 2020-09-04 | 2020-09-10 |  |  | 5-DW | COST [6000 h] | 6,000 | 6,000 | 01-00-00 GENERAL CONDITIONS |  | SURV |  | SITD | 0005 | CO | 4 | SURVEY |  |
| GRD1080 |  | Overex & Bench at Fill Areas | 8d | 2020-09-24 A | 2020-12-22 A | GRD1060, MOB1240 | 100% |  | 2020-09-18 | 2020-10-01 |  |  | 5-DW | COST [50000 h] | 50,000 | 50,000 | 31-20-01 EARTHWORK | 45400 | GRAD | 015 | SITD | 0005 | CO | 4 | CLEAR/GRUB/GRADING | GS104 |
| GRD1100 |  | Cut & Fill Site | 18d | 2020-09-28 A | 2021-01-15 A | GRD1080 FF, MOB1160, GRD1020 FF | 100% |  | 2020-11-20 | 2020-12-23 |  |  | 5-DW | COST [860000 h] | 860,000 | 860,000 | 31-20-01 EARTHWORK | 627390 | GRAD | 015 | SITD | 0005 | CO | 4 | CLEAR/GRUB/GRADING |  |
| GRD1140 |  | Fine Grade Bldg Pads | 3d | 2020-10-14 A | 2021-07-01 | GRD1100 SS | 95% | 1d | 2020-10-22 | 2020-10-27 | 2d | 0d | 5-DW | COST [53000 h] | 53,000 | 50,350 | 31-20-01 EARTHWORK | 38250 | GRAD | 005 | SITD | 0005 | CO | 4 | CLEAR/GRUB/GRADING |  |
| GRD1180 |  | Crush & Stockpile Onsite Mtrl | 10d | 2020-10-15 A | 2021-07-19 | GRD1160, GRD1120 | 5% | 9d | 2020-11-06 | 2020-11-23 | 85d | 42d | 5-DW | COST [328000 h] | 328,000 | 16,400 | 31-20-01 EARTHWORK | 238700 | GRAD | 005 | SITD | 0005 | CO | 4 | CLEAR/GRUB/GRADING |  |
| GRD1120 |  | Rock Excavation | 3d | 2020-10-28 A | 2020-10-30 A | GRD1100 FF, GRD1100 SS | 100% |  | 2020-10-16 | 2020-10-22 |  |  | 5-DW | COST [58000 h] | 58,000 | 58,000 | 31-20-01 EARTHWORK | 17000 | GRAD | 015 | SITD | 0007 | CO | 4 | CLEAR/GRUB/GRADING |  |
| GRD1200 |  | Install BMP's at Slopes | 5d | 2020-11-09 A | 2021-07-06 | GRD1140, PREP1000 | 90% | 2d | 2020-11-04 | 2020-11-10 | 75d | 44d | 5-DW | COST [4000 h] | 4,000 | 3,600 | 01-00-00 GENERAL CONDITIONS |  | PRIM |  | SITD | 0005 | CO | 4 | SWPPP |  |
| GRD1240 |  | Backfill Retaining Walls | 5d | 2021-04-19 A | 2021-08-30 | RW1150, RW4140, RW4150 | 60% | 2d | 2021-06-28 | 2021-07-02 | 60d | 14d | 5-DW | COST [34900 h] | 34,900 | 20,940 | 31-20-01 EARTHWORK | 25500 | GRAD | 005 | SITD | 0005 | CO | 4 | CLEAR/GRUB/GRADING |  |
| GRD1160 |  | Mobilize Crusher Operation | 2d | 2021-07-01 | 2021-07-02 | GRD1100 |  |  |  |  | 85d | 0d | 5-DW | COST [42000 h] | 42,000 |  | 31-20-01 EARTHWORK | 30000 | GRAD | 002 | SITD | 0005 | CO | 4 | CLEAR/GRUB/GRADING |  |
|  | 2 | **Site Utilities** |  | 2020-10-26 | 2022-02-10 |  |  |  |  |  |  |  |  |  |  |  |  |  |  |  |  |  |  |  |  |  |
|  | 1 | **Storm Drain** |  | 2020-11-09 | 2021-08-13 |  |  |  |  |  |  |  |  |  |  |  |  |  |  |  |  |  |  |  |  |  |
| SD1080 |  | RCP Storm Drain & MH - SD-D | 7d | 2020-11-09 A | 2021-07-15 | GRD1100 SS+3d, SD1060 | 95% | 2d | 2021-01-11 | 2021-01-21 | 35d | 0d | 5-DW | COST [70000 h] | 70,000 | 66,500 | 33-10-01 SITE UTILITIES | 50000 | GRAD | 009 | SITD | 0005 | CO | 4 | STORM DRAINAGE | CD103, CD107 |
| SD1020 |  | Receive/Unload RCP & Manholes | 5d | 2020-11-10 A | 2021-07-12 | 334000-02, 334000-03, 334000-12 | 90% | 2d | 2020-12-16 | 2020-12-23 | 35d | 0d | 5-DW | COST [165000 h] | 165,000 | 148,500 | 33-10-01 SITE UTILITIES | 120000 | GRAD |  | SITD | 0005 | CO | 4 |  |  |
| SD1060 |  | RCP Storm Drain & MH - SD-F | 10d | 2020-11-16 A | 2021-07-12 | GRD1080 SS+5d, 334000-12, SD1020 SS | 90% | 2d | 2020-12-16 | 2021-01-08 | 35d | 0d | 5-DW | COST [110000 h] | 110,000 | 99,000 | 33-10-01 SITE UTILITIES | 80000 | GRAD | 009 | SITD | 0005 | CO | 4 | STORM DRAINAGE | CD104, CD108 |
| SD1100 |  | RCP Storm Drain & MH -SD-B Lwr | 6d | 2021-04-14 A | 2021-07-19 | SD1080 | 95% | 2d | 2021-04-19 | 2021-04-26 | 35d | 0d | 5-DW | COST [32000 h] | 32,000 | 30,400 | 33-10-01 SITE UTILITIES | 23000 | GRAD | 009 | SITD | 0005 | CO | 4 | STORM DRAINAGE | CD103, CD107 |
| SD1200 |  | RCP Storm Drain - SD-B Upper | 4d | 2021-05-03 A | 2021-05-14 A | SD1100, SD1160 | 100% |  | 2021-06-22 | 2021-06-25 |  |  | 5-DW | COST [25000 h] | 25,000 | 25,000 | 33-10-01 SITE UTILITIES | 18000 | GRAD | 009 | SITD | 0005 | CO | 4 | STORM DRAINAGE |  |
| SD1140 |  | RCP Storm Drain & MH - SD-A | 8d | 2021-05-10 A | 2021-07-21 | SD1100 | 95% | 2d | 2021-05-25 | 2021-06-04 | 35d | 0d | 5-DW | COST [70000 h] | 70,000 | 66,500 | 33-10-01 SITE UTILITIES | 50000 | GRAD | 009 | SITD | 0005 | CO | 4 | STORM DRAINAGE | CD102, CD103 |
| SD1160 |  | RCP Storm Drain & MH - SD-C | 10d | 2021-05-17 A | 2021-07-28 | SD1140 | 50% | 5d | 2021-06-07 | 2021-06-21 | 35d | 0d | 5-DW | COST [90000 h] | 90,000 | 45,000 | 33-10-01 SITE UTILITIES | 65000 | GRAD | 009 | SITD | 0005 | CO | 4 | STORM DRAINAGE | CD103, CD104 |
| SD1120 |  | Set Box Culvert - SD-H | 5d | 2021-05-26 A | 2021-07-08 | GRD1100 SS+10d | 50% | 5d | 2021-05-18 | 2021-05-24 | 29d | 0d | 5-DW | COST [70000 h] | 70,000 | 35,000 | 33-10-01 SITE UTILITIES | 50000 | GRAD | 005 | SITD | 0005 | CO | 4 | STORM DRAINAGE | CD302 |
| SD1220 |  | RCP Storm Drain & MH - SD-G | 5d | 2021-06-17 A | 2021-07-30 | SD1200 | 90% | 2d | 2021-07-08 | 2021-07-15 | 176d | 0d | 5-DW | COST [25000 h] | 25,000 | 22,500 | 33-10-01 SITE UTILITIES | 18000 | GRAD | 009 | SITD | 0005 | CO | 4 | STORM DRAINAGE | CD105 |
| SD1000 |  | Set Box Culvert to Stock Pile | 5d | 2021-07-09 | 2021-07-16 | GRD1040, 334000-12, PREP1040, SD1020 SS |  |  |  |  | 85d | 0d | 5-DW | COST [48000 h] | 48,000 |  | 33-10-01 SITE UTILITIES |  | GRAD | 005 | SITD | 0005 | CO | 4 | STORM DRAINAGE |  |
| SD1040 |  | Backfill Stock Pile Culvert | 2d | 2021-07-19 | 2021-07-20 | SD1000 |  |  |  |  | 85d | 36d | 5-DW | COST [6900 h] | 6,900 |  | 33-10-01 SITE UTILITIES |  | GRAD | 009 | SITD | 0005 | CO | 4 | CLEAR/GRUB/GRADING |  |
| SD1180 |  | PVC Storm Drain to Bldgs | 5d | 2021-07-29 | 2021-08-04 | SD1160 |  |  |  |  | 75d | 52d | 5-DW | COST [41000 h] | 41,000 |  | 33-10-01 SITE UTILITIES | 30000 | GRAD | 009 | SITD | 0005 | CO | 4 | STORM DRAINAGE | CD601 |
| SD1240 |  | PVC Backdrain - BD-L | 5d | 2021-08-02 | 2021-08-06 | SD1220 |  |  |  |  | 191d | 163d | 5-DW | COST [25000 h] | 25,000 |  | 33-10-01 SITE UTILITIES | 19000 | GRAD | 009 | SITD | 0005 | CO | 4 | STORM DRAINAGE | CD105 |
| SD1260 |  | RCP Storm Drain & MH - SD-I | 5d | 2021-08-02 | 2021-08-06 | SD1220, SD1020 |  |  |  |  | 176d | 0d | 5-DW | COST [15000 h] | 15,000 |  | 33-10-01 SITE UTILITIES | 11000 | GRAD | 009 | SITD | 0005 | CO | 4 | STORM DRAINAGE | CD105 |
| SD1280 |  | Replace Drain Pipe -Campbell R | 5d | 2021-08-09 | 2021-08-13 | SD1260 |  |  |  |  | 176d | 124d | 5-DW | COST [3000 h] | 3,000 |  | 33-10-01 SITE UTILITIES |  | PRIM |  | SITD | 0005 | CO | 4 | STORM DRAINAGE |  |

Notes:
- GRD1060: Delay Impacts: PCO 04 - SDG&E Power Outages due to the Valley Fire from 09/07/2020 to / 09/11/2020.
- GRD1080: Activity Notes: Corrected October 2020 billing period from 97% to 95%
- GRD1100: Activity Notes: Corrected October 2020 billing period from 97% to 95%
- GRD1180: Activity Notes: RFI 73 - No On-Site Source for Rip Rap Material

| ID | WBS | Activity | Duration | Start | Finish | Predecessors | Complete | Remaining | Planned start | Planned finish | Total float | Free float | Calendar | Resources | Cost | Actual cost | Specification | CS | RESP | AREA | BIDI | PHAS | CATW | WRKP | FOW | NOTES | Sheet |
| --- | --- | --- | --- | --- | --- | --- | --- | --- | --- | --- | --- | --- | --- | --- | --- | --- | --- | --- | --- | --- | --- | --- | --- | --- | --- | --- | --- |
|  | 2 | **Sanitary Sewer** |  | 2020-11-06 | 2022-02-10 |  |  |  |  |  |  |  |  |  |  |  |  |  |  |  |  |  |  |  |  |  |  |
| SS1000 |  | Receive/Unload Sanitary Sewer | 3d | 2020-11-06 A | 2021-08-16 | 333000-12, SD1160 SS | 30% | 2d | 2021-02-18 | 2021-02-22 | 22d | 0d | 5-DW | COST [125000 h] | 125,000 | 37,500 | 33-10-01 SITE UTILITIES | 90000 | GRAD | SITD | 0005 | CO | 4 |  |  |  |  |
| SS1040 |  | Sewer Main/MH -CO-29 to Septic | 5d | 2021-08-17 | 2021-08-24 | SD1160, 333000-12, PREP1140, SS1000 |  |  |  |  | 22d | 0d | 5-DW | COST [21000 h] | 21,000 |  | 33-10-01 SITE UTILITIES | 15000 | GRAD | SITD | 0005 | CO | 4 | 008 | SITE SEWER |  |  |
| SS1060 |  | Sewer & MH - Bldg 4 to MH-02 | 5d | 2021-08-25 | 2021-08-31 | SS1040 |  |  |  |  | 22d | 0d | 5-DW | COST [21000 h] | 21,000 |  | 33-10-01 SITE UTILITIES | 15000 | GRAD | SITD | 0005 | CO | 4 | 008 | SITE SEWER |  |  |
| SS1080 |  | Sewer Force Main - Sec 50 & 51 | 5d | 2021-09-01 | 2021-09-09 | SS1060 |  |  |  |  | 32d | 7d | 5-DW | COST [10000 h] | 10,000 |  | 33-10-01 SITE UTILITIES | 6500 | GRAD | SITD | 0005 | CO | 4 | 008 | SITE SEWER |  |  |
| SS1100 |  | Sewer Laterals to Bldgs | 5d | 2021-10-20 | 2021-10-26 | SS1060, EL1400 |  |  |  |  | 23d | 0d | 5-DW | COST [13700 h] | 13,700 |  | 33-10-01 SITE UTILITIES | 10000 | GRAD | SITD | 0005 | CO | 4 | 008 | SITE SEWER |  |  |
| SS1110 |  | Receive/Unload Sewer Lift Stn | 2d | 2021-12-08 | 2021-12-09 | 333213-12, SS1000, PRE-1060 |  |  |  |  | 14d | 0d | 5-DW | COST [130500 h] | 130,500 |  | 33-10-01 SITE UTILITIES | 105000 | GRAD | SITD | 0005 | CO | 3 |  |  | 1/20/21 - Revised |  |
| SS1120 |  | Septic & Sewer Lift Station | 5d | 2021-12-10 | 2021-12-17 | SS1080, 333213-12, PRE-1060, SS1110 |  |  |  |  | 14d | 0d | 5-DW | COST [125800 h] | 125,800 |  | 33-10-01 SITE UTILITIES | 108000 | GRAD | SITD | 0005 | CO | 4 | 008 | SITE SEWER | 1/20/21 - Revised |  |
| SS1140 |  | Sewer Force Main -To Leach Fld | 8d | 2021-12-20 | 2022-01-06 | SS1120, GRD1240 |  |  |  |  | 15d | 0d | 5-DW | COST [11600 h] | 11,600 |  | 33-10-01 SITE UTILITIES | 10000 | GRAD | SITD | 0005 | CO | 4 | 008 | SITE SEWER | 1/20/21 - Revised |  |
| SS1160 |  | Leach Field (CU-301) | 20d | 2022-01-07 | 2022-02-10 | SS1120, SS1140 |  |  |  |  | 15d | 1d | 5-DW | COST [75700 h] | 75,700 |  | 33-10-01 SITE UTILITIES | 65000 | GRAD | SITD | 0005 | CO | 4 | 008 | SITE SEWER | 1/20/21 - Revised | CU-301 |
|  | 4 | **Electrical** |  | 2020-10-26 | 2022-01-10 |  |  |  |  |  |  |  |  |  |  |  |  |  |  |  |  |  |  |  |  |  |  |
| EL1000 |  | Receive UG Elec Material | 5d | 2020-10-26 A | 2021-03-19 A | 337102-12, SS1060 SS | 100% |  | 2021-03-15 | 2021-03-19 |  |  | 5-DW | COST [165000 h] | 165,000 | 165,000 | 26-05-01 BUILDING ELECTRICAL | 116950 | ELEC | SITD | 0005 | CO | 4 |  | U/G ELECTRICAL DIST |  |  |
| EL1020 |  | UG Teleco Conduit to Bldg 1,1A | 15d | 2020-12-08 A | 2021-03-19 A | SS1060, PREP1160, 337102-12 | 100% |  | 2021-03-18 | 2021-04-08 |  |  | 5-DW | COST [122000 h] | 122,000 | 122,000 | 26-05-01 BUILDING ELECTRICAL | 88631 | ELEC | SITD | 0005 | CO | 4 |  | SITE TELECOM |  |  |
| EL1040 |  | UG Elec Conduit to Bldg 1,1A | 15d | 2020-12-08 A | 2021-03-09 A | SS1060, PREP1180, 337102-12 | 100% |  | 2021-03-18 | 2021-04-08 |  |  | 5-DW | COST [128000 h] | 128,000 | 128,000 | 26-05-01 BUILDING ELECTRICAL | 92752 | ELEC | SITD | 0005 | CO | 4 |  | U/G ELECTRICAL DIST |  |  |
| EL1080 |  | UG ESS Conduits to Bldg 1,1A | 15d | 2021-01-11 A | 2021-04-16 A | SS1060, PREP1160, 337102-12 | 100% |  | 2021-04-05 | 2021-04-26 |  |  | 5-DW | COST [65000 h] | 65,000 | 65,000 | 26-05-01 BUILDING ELECTRICAL | 47406 | ELEC | SITD | 0005 | CO | 4 |  | SITE TELECOM |  |  |
| EL1180 |  | UG Conduits to Generator | 15d | 2021-01-11 A | 2021-09-14 | SS1060, PREP1180, 337102-12 | 50% | 8d | 2021-04-05 | 2021-04-26 | 26d | 0d | 5-DW | COST [90000 h] | 90,000 | 45,000 | 26-05-01 BUILDING ELECTRICAL | 63896 | ELEC | SITD | 0005 | CO | 4 |  | U/G ELECTRICAL DIST |  |  |
| EL1240 |  | UG Teleco Conduit to Bldg 2 | 15d | 2021-01-11 A | 2021-09-10 | PREP1160, 337102-12, EL1020 | 60% | 6d | 2021-04-26 | 2021-05-17 | 31d | 6d | 5-DW | COST [90000 h] | 90,000 | 54,000 | 26-05-01 BUILDING ELECTRICAL | 63896 | ELEC | SITD | 0005 | CO | 4 |  | U/G ELECTRICAL DIST |  |  |
| EL1260 |  | UG ESS Conduits to Bldg 2 | 15d | 2021-01-11 A | 2021-09-10 | PREP1160, 337102-12, EL1080 | 60% | 6d | 2021-04-27 | 2021-05-18 | 31d | 6d | 5-DW | COST [51000 h] | 51,000 | 30,600 | 26-05-01 BUILDING ELECTRICAL | 37101 | ELEC | SITD | 0005 | CO | 4 |  | U/G ELECTRICAL DIST |  |  |
| EL1280 |  | UG ESS Conduits to Bldg 4 | 15d | 2021-01-11 A | 2021-09-20 | PREP1160, 337102-12, EL1260 SS, EL1120 | 60% | 6d | 2021-04-27 | 2021-05-18 | 25d | 0d | 5-DW | COST [32000 h] | 32,000 | 19,200 | 26-05-01 BUILDING ELECTRICAL | 22673 | ELEC | SITD | 0005 | CO | 4 |  | U/G ELECTRICAL DIST |  |  |
| EL1300 |  | UG ESS Conduits to Bldg 4A | 15d | 2021-01-11 A | 2021-09-20 | PREP1160, 337102-12, EL1280 SS | 60% | 6d | 2021-04-27 | 2021-05-18 | 25d | 0d | 5-DW | COST [17000 h] | 17,000 | 10,200 | 26-05-01 BUILDING ELECTRICAL | 12367 | ELEC | SITD | 0005 | CO | 4 |  | U/G ELECTRICAL DIST |  |  |
| EL1320 |  | UG Elec Conduits to Bldg 2 | 15d | 2021-01-11 A | 2021-09-10 | PREP1180, 337102-12, EL1040 | 60% | 6d | 2021-04-26 | 2021-05-17 | 28d | 6d | 5-DW | COST [102000 h] | 102,000 | 61,200 | 26-05-01 BUILDING ELECTRICAL | 74201 | ELEC | SITD | 0005 | CO | 4 |  | U/G ELECTRICAL DIST |  |  |
| EL1340 |  | UG Elec Conduits to Bldg 4 | 15d | 2021-01-11 A | 2021-09-20 | PREP1180, 337102-12, EL1320 SS, EL1160 | 60% | 6d | 2021-04-27 | 2021-05-18 | 22d | 0d | 5-DW | COST [77000 h] | 77,000 | 46,200 | 26-05-01 BUILDING ELECTRICAL | 55651 | ELEC | SITD | 0005 | CO | 4 |  | U/G ELECTRICAL DIST |  |  |
| EL1100 |  | UG ESS Conduits to Bldg 3 | 15d | 2021-01-18 A | 2021-09-20 | SS1060, PREP1160, 337102-12 | 20% | 12d | 2021-04-05 | 2021-04-26 | 47d | 1d | 5-DW | COST [23000 h] | 23,000 | 4,600 | 26-05-01 BUILDING ELECTRICAL | 16489 | ELEC | SITD | 0005 | CO | 4 |  | U/G ELECTRICAL DIST |  |  |
| EL1120 |  | UG ESS Conduits to Bldg 5 | 15d | 2021-01-18 A | 2021-09-10 | SS1060, PREP1160, 337102-12 | 60% | 6d | 2021-04-05 | 2021-04-26 | 25d | 0d | 5-DW | COST [15000 h] | 15,000 | 9,000 | 26-05-01 BUILDING ELECTRICAL | 10306 | ELEC | SITD | 0005 | CO | 4 |  | U/G ELECTRICAL DIST |  |  |
| EL1140 |  | UG Elec Conduits to Bldg 3 | 15d | 2021-01-18 A | 2021-09-20 | SS1060, PREP1180, 337102-12 | 20% | 12d | 2021-04-05 | 2021-04-26 | 22d | 0d | 5-DW | COST [63000 h] | 63,000 | 12,600 | 26-05-01 BUILDING ELECTRICAL | 45345 | ELEC | SITD | 0005 | CO | 4 |  | U/G ELECTRICAL DIST |  |  |
| EL1160 |  | UG Elec Conduits to Bldg 5 | 15d | 2021-01-18 A | 2021-09-10 | SS1060, PREP1180, 337102-12 | 60% | 6d | 2021-04-05 | 2021-04-26 | 22d | 0d | 5-DW | COST [23000 h] | 23,000 | 13,800 | 26-05-01 BUILDING ELECTRICAL | 16489 | ELEC | SITD | 0005 | CO | 4 |  | U/G ELECTRICAL DIST |  |  |
| EL1400 |  | SDG&E Primary Elec Duct Bank | 20d | 2021-01-20 A | 2021-10-18 | SDGE100, EL1320, EL1340, EL1160, EL1180, EL1000 FF, EL1140 | 15% | 17d | 2021-05-19 | 2021-06-17 | 22d | 0d | 5-DW | COST [240000 h] | 240,000 | 36,000 | 26-05-01 BUILDING ELECTRICAL | 173137 | ELEC | SITD | 0005 | CO | 4 |  | U/G ELECTRICAL DIST |  |  |
| EL1200 |  | Ground - Lightning Protect -B3 | 10d | 2021-02-02 A | 2021-09-27 | EL1060 | 25% | 8d | 2021-04-30 | 2021-05-14 | 68d | 58d | 5-DW | COST [16500 h] | 16,500 | 4,125 | 26-05-01 BUILDING ELECTRICAL | 10969 | ELEC | BLD3 | 0003 | CO | 4 |  | U/G ELECTRICAL DIST |  |  |
| EL1220 |  | Ground - Lightning Protect -B1 | 10d | 2021-02-02 A | 2021-09-15 | EL1060 | 90% | 1d | 2021-04-30 | 2021-05-14 | 74d | 0d | 5-DW | COST [65300 h] | 65,300 | 58,770 | 26-05-01 BUILDING ELECTRICAL | 57033 | ELEC | BLD1 | 0001 | CO | 4 |  | U/G ELECTRICAL DIST |  |  |
| EL1060 |  | Ground - Lightning Prot - Site | 10d | 2021-02-08 A | 2021-09-14 | EL1020 SS | 25% | 8d | 2021-04-16 | 2021-04-29 | 68d | 0d | 5-DW | COST [95000 h] | 95,000 | 23,750 | 26-05-01 BUILDING ELECTRICAL | 68915 | ELEC | SITD | 0005 | CO | 4 |  | U/G ELECTRICAL DIST |  |  |
| EL1360 |  | Ground - Lightning Prot - B1A | 5d | 2021-03-08 A | 2021-09-16 | EL1220 | 90% | 1d | 2021-06-04 | 2021-06-10 | 74d | 0d | 5-DW | COST [38100 h] | 38,100 | 34,290 | 26-05-01 BUILDING ELECTRICAL | 33269 | ELEC | BL1A | 0001 | CO | 4 |  | U/G ELECTRICAL DIST |  |  |
| EL1380 |  | Ground - Lightning Prot -B4,4A | 5d | 2021-09-17 | 2021-09-24 | EL1360 |  |  |  |  | 139d | 77d | 5-DW | COST [2300 h] | 2,300 |  | 26-05-01 BUILDING ELECTRICAL | 2117 | ELEC | BLD4 | 0009 | CO | 4 |  | U/G ELECTRICAL DIST |  |  |
| EL1420 |  | Set Transformer Pad | 1d | 2021-10-20 | 2021-10-20 | EL1400 |  |  |  |  | 22d | 0d | 5-DW | COST [5600 h] | 5,600 |  | 26-05-01 BUILDING ELECTRICAL | 4122 | ELEC | SITD | 0005 | CO | 4 |  | U/G ELECTRICAL DIST |  |  |
| EL1520 |  | Schedule Install - SDG&E XFMR | 20d | 2021-10-21 | 2021-11-18 | EL1420 |  |  |  |  | 25d | 0d |  |  |  |  | 26-05-01 BUILDING ELECTRICAL |  | SDGE | SITD | 0005 | CO | 3 |  |  |  |  |
| EL1440 |  | Receive/Unload Generator | 2d | 2021-10-25 | 2021-10-26 | 263215-12, SFND1140 SS |  |  |  |  | 41d | 21d |  | COST [1808200 h] | 1,808,200 |  | 26-05-01 BUILDING ELECTRICAL | 1578974 | ELEC | PROC | 0001 | CO | 4 |  | DIESEL GENERATOR |  |  |
| EL1540 |  | New Power Pole (By SDG&E) | 2d | 2021-11-19 | 2021-11-22 | SDGE100, EL1520 |  |  |  |  | 33d | 2d | 5-DW |  |  |  | 26-05-01 BUILDING ELECTRICAL |  | SDGE | SITD | 0005 | CO | 4 |  |  | REVIEW |  |
| EL1560 |  | Set Transformer (By SDG&E) | 1d | 2021-11-29 | 2021-11-29 | EL1420, SDGE200, EL1520 |  |  |  |  | 16d | 0d | 5-DW |  |  |  | 26-05-01 BUILDING ELECTRICAL |  | SDGE | SITD | 0005 | CO | 4 |  |  |  |  |
| EL1460 |  | Install Generators | 20d | 2021-11-30 | 2022-01-07 | SFND1140, 263215-12, PRE-1200, PREP1300, EL1440, 260548-02 |  |  |  |  | 15d | 14d | 5-DW | COST [62800 h] | 62,800 |  | 26-05-01 BUILDING ELECTRICAL | 50923 | ELEC | SITD | 0005 | CO | 4 |  | DIESEL GENERATOR | 1/20/21 - Revised |  |
| EL1580 |  | Primary Feeders (By SDG&E) | 2d | 2021-11-30 | 2021-12-02 | EL1560, EL1540 |  |  |  |  | 31d | 22d | 5-DW |  |  |  | 26-05-01 BUILDING ELECTRICAL |  | SDGE | SITD | 0008 | CO | 4 |  |  |  |  |
| EL1480 |  | Power Rack - Sewer Lift Stn | 5d | 2021-12-20 | 2021-12-29 | SS1120, EL1320, EL1340 |  |  |  |  | 14d | 0d | 5-DW | COST [12400 h] | 12,400 |  | 26-05-01 BUILDING ELECTRICAL | 10669 | ELEC | SITD | 0005 | CO | 4 |  | ROUGH ELECTRICAL | 1/20/21 - Revised | ES401 |
| EL1500 |  | Pull Wire - Sewer Lift Station | 5d | 2022-01-04 | 2022-01-10 | EL1480 |  |  |  |  | 14d | 13d | 5-DW | COST [6000 h] | 6,000 |  | 26-05-01 BUILDING ELECTRICAL | 5189 | ELEC | SITD | 0005 | CO | 4 |  | ROUGH ELECTRICAL | 1/20/21 - Revised | ES401 |

Notes:
- SS1160: Activity Notes: RFI 71 - Cover over the Leach Field

| ID | WBS | Activity | Duration | Start | Finish | Predecessors | Complete | Planned start | Planned finish | Total float | Free float | Calendar | Resources | Cost | Actual cost | Specification | CS | RESP | WRKP | AREA | BIDI | PHAS | CATW | FOW | NOTES | Sheet |
| --- | --- | --- | --- | --- | --- | --- | --- | --- | --- | --- | --- | --- | --- | --- | --- | --- | --- | --- | --- | --- | --- | --- | --- | --- | --- | --- |
|  | 3 | **Water** |  | 2021-09-21 | 2021-10-29 |  |  |  |  |  |  |  |  |  |  |  |  |  |  |  |  |  |  |  |  |  |
| WA1000 |  | UG Fire Water - Site to Xing | 10d | 2021-09-21 | 2021-10-05 | SS1060, SS1080, PREP1200, EL1240, EL1260, EL1280, EL1300, EL1320, EL1340 |  |  |  | 25d | 0d | 5-DW | COST [290000 h] | 290,000 |  | 33-10-01 SITE UTILITIES | 209000 | GRAD | 007 | SITD | 0005 | CO | 4 | SITE WATER |  |  |
| WA1020 |  | UG Dom Water - Site to Xing | 10d | 2021-10-07 | 2021-10-22 | WA1000 |  |  |  | 40d | 0d | 5-DW | COST [352000 h] | 352,000 |  | 33-10-01 SITE UTILITIES | 257000 | GRAD | 007 | SITD | 0005 | CO | 4 | SITE WATER |  |  |
| WA1060 |  | UG Fire Water - to Bldg 3 | 5d | 2021-10-07 | 2021-10-13 | WA1000, CRS1120 |  |  |  | 25d | 0d | 5-DW | COST [61700 h] | 61,700 |  | 33-10-01 SITE UTILITIES | 45000 | GRAD | 007 | SITD | 0005 | CO | 4 | SITE WATER |  |  |
| WA1100 |  | Fire Hydrants | 5d | 2021-10-15 | 2021-10-22 | WA1060 |  |  |  | 25d | 0d | 5-DW | COST [61600 h] | 61,600 |  | 33-10-01 SITE UTILITIES | 50000 | GRAD | 007 | SITD | 0005 | CO | 4 | SITE WATER | 1/20/21 - Revised |  |
| WA1030 |  | Hydrostatic Test - UG DW | 2d | 2021-10-25 | 2021-10-26 | WA1100 |  |  |  | 152d | 107d |  | COST [1300 h] | 1,300 |  | 33-10-01 SITE UTILITIES |  | GRAD |  | SITD | 0005 | CO | 4 | SITE WATER | 1/20/21 - Revised |  |
| WA1040 |  | UG CW Lines - to Bldg 2 | 5d | 2021-10-25 | 2021-10-29 | WA1020 |  |  |  | 40d | 0d | 5-DW | COST [13700 h] | 13,700 |  | 22-05-01 PLUMBING |  | PLUM |  | SITD | 0005 | CO | 4 | PLUMBING |  | MS100 |
| WA1050 |  | Hydrostatic Test - UG FW | 2d | 2021-10-25 | 2021-10-26 | WA1100 |  |  |  | 152d | 107d |  | COST [1300 h] | 1,300 |  | 33-10-01 SITE UTILITIES |  | GRAD |  | SITD | 0005 | CO | 4 | SITE WATER | 1/20/21 - Revised |  |
| WA1080 |  | UG Domestic Water - to Bldg 3 | 5d | 2021-10-25 | 2021-10-29 | WA1020, CRS1120 |  |  |  | 128d | 85d | 5-DW | COST [49300 h] | 49,300 |  | 33-10-01 SITE UTILITIES | 40000 | GRAD | 007 | SITD | 0005 | CO | 4 | SITE WATER | 1/20/21 - Revised |  |
|  | 5 | **Propane** |  | 2021-11-01 | 2021-12-09 |  |  |  |  |  |  |  |  |  |  |  |  |  |  |  |  |  |  |  |  |  |
| LP1140 |  | UG Propane Lines | 5d | 2021-11-01 | 2021-11-08 | WA1040, PREP1280 |  |  |  | 40d | 9d | 5-DW | COST [44600 h] | 44,600 |  | 33-10-01 SITE UTILITIES | 32555 | GRAD |  | SITD | 0005 | CO | 4 | UG PROPANE GAS |  | PS100 |
| LP1160 |  | Set Propane Tank By USACE Vend | 2d | 2021-11-29 | 2021-11-30 | SFND1200, LP1140, 1AFI180, 1RIA180, 1RIC180, 1RIE180 |  |  |  | 31d | 0d | 5-DW |  |  |  | 22-05-01 PLUMBING |  | USAC |  | SITD | 0005 | CO | 4 |  |  |  |
| LP1170 |  | Install Propane Regulator | 5d | 2021-12-02 | 2021-12-09 | LP1160 |  |  |  | 31d | 29d | 5-DW | COST [5900 h] | 5,900 |  | 22-05-01 PLUMBING |  | PLUM |  | SITD | 0005 | CO | 4 | UG PROPANE GAS | 1/20/21 - Revised |  |
|  | 3 | **Retaining Walls & Site Structures** |  | 2021-01-04 | 2021-11-04 |  |  |  |  |  |  |  |  |  |  |  |  |  |  |  |  |  |  |  |  |  |
|  | 1 | **North - RW1 (SS101, CR-101)** |  | 2021-01-04 | 2021-04-22 |  |  |  |  |  |  |  |  |  |  |  |  |  |  |  |  |  |  |  |  |  |
| RW1000 |  | Dig & Form Ftg - RW1 | 9d | 2021-01-04 A | 2021-02-05 A | GRD1100, PREP1060 | 100% | 2021-01-25 | 2021-02-08 |  |  | 5-DW | COST [46000 h] | 46,000 | 46,000 | 03-30-01 CAST IN PLACE CONCRETE / BELOW GRADE PROD | 33000 | CONC |  | SITD | 0005 | CO | 4 | CIP CONCRETE |  | CR-101, SS101, SS102 |
| RW1040 |  | Form Ret Wall - RW1 Pour 1 | 9d | 2021-01-04 A | 2021-02-26 A | RW1030 | 100% | 2021-02-16 | 2021-03-02 |  |  | 5-DW | COST [62000 h] | 62,000 | 62,000 | 03-30-01 CAST IN PLACE CONCRETE / BELOW GRADE PROD | 45000 | CONC |  | SITD | 0005 | CO | 4 | CIP CONCRETE |  | CR-101, SS101, SS102 |
| RW1050 |  | Rebar Ret Wall - RW1 Pour 1 | 4d | 2021-01-04 A | 2021-02-25 A | RW1040 SS+2d | 100% | 2021-02-19 | 2021-02-24 |  |  | 5-DW | COST [20000 h] | 20,000 | 20,000 | 03-20-01 REINFORCING STEEL |  | REBR |  | SITD | 0005 | CO | 4 | CONCRETE REINFORCE |  | CR-101, SS101, SS102 |
| RW1080 |  | Form Ret Wall - RW1 Pour 2 | 9d | 2021-01-04 A | 2021-03-08 A | RW1070 | 100% | 2021-03-04 | 2021-03-17 |  |  | 5-DW | COST [62000 h] | 62,000 | 62,000 | 03-30-01 CAST IN PLACE CONCRETE / BELOW GRADE PROD | 45000 | CONC |  | SITD | 0005 | CO | 4 | CIP CONCRETE |  | CR-101, SS101, SS102 |
| RW1020 |  | Ftg Rebar - RW1 | 5d | 2021-01-11 A | 2021-02-09 A | RW1000 SS+5d, RW1000 FF, PREP1080, 032000-29 | 100% | 2021-02-03 | 2021-02-09 |  |  | 5-DW | COST [4000 h] | 4,000 | 4,000 | 03-20-01 REINFORCING STEEL |  | REBR |  | SITD | 0005 | CO | 4 | CONCRETE REINFORCE |  | CR-101, SS101, SS102 |
| RW1030 |  | Place Ftg Concrete - RW1 | 2d | 2021-02-15 A | 2021-02-15 A | RW1020 | 100% | 2021-02-03 | 2021-02-04 |  |  | 5-DW | COST [42000 h] | 42,000 | 42,000 | 03-30-01 CAST IN PLACE CONCRETE / BELOW GRADE PROD | 30000 | CONC |  | SITD | 0005 | CO | 4 | CIP CONCRETE |  | CR-101, SS101, SS102 |
| RW1090 |  | Rebar Ret Wall - RW1 Pour 2 | 4d | 2021-02-25 A | 2021-02-26 A | RW1080 SS+2d | 100% | 2021-02-18 | 2021-02-23 |  |  | 5-DW | COST [20000 h] | 20,000 | 20,000 | 03-20-01 REINFORCING STEEL |  | REBR |  | SITD | 0005 | CO | 4 | CONCRETE REINFORCE |  | CR-101, SS101, SS102 |
| RW1070 |  | Place Ret Wall - RW1 Pour 1 | 1d | 2021-03-08 A | 2021-03-08 A | RW1040, RW1050 | 100% | 2021-03-01 | 2021-03-01 |  |  | 5-DW | COST [28000 h] | 28,000 | 28,000 | 03-30-01 CAST IN PLACE CONCRETE / BELOW GRADE PROD | 20000 | CONC |  | SITD | 0005 | CO | 4 | CIP CONCRETE |  | CR-101, SS101, SS102 |
| RW1110 |  | Place Ret Wall - RW1 Pour 2 | 1d | 2021-03-08 A | 2021-03-08 A | RW1080, RW1090 | 100% |  |  |  |  | 5-DW | COST [30000 h] | 30,000 | 30,000 | 03-30-01 CAST IN PLACE CONCRETE / BELOW GRADE PROD | 20000 | CONC |  | SITD | 0005 | CO | 4 | CIP CONCRETE |  | CR-101, SS101, SS102 |
| RW1120 |  | Cure Retaining Wall - RW1 | 14d | 2021-03-09 A | 2021-03-15 A | RW1110 | 100% | 2021-03-09 | 2021-03-22 |  |  | 7-D | COST [2700 h] | 2,700 | 2,700 | 03-30-01 CAST IN PLACE CONCRETE / BELOW GRADE PROD | 2000 | CONC |  | SITD | 0005 | CO | 4 | CIP CONCRETE |  | CR-101, SS101, SS102 |
| RW1130 |  | Strip Retaining Wall - RW1 | 5d | 2021-03-16 A | 2021-04-02 A | RW1120 | 100% | 2021-03-23 | 2021-03-30 |  |  | 5-DW | COST [46000 h] | 46,000 | 46,000 | 03-30-01 CAST IN PLACE CONCRETE / BELOW GRADE PROD | 33000 | CONC |  | SITD | 0005 | CO | 4 | CIP CONCRETE |  | CR-101, SS101, SS102 |
| RW1140 |  | Waterproof Ret Wall - RW1 | 5d | 2021-04-06 A | 2021-04-08 A | RW1130, PREP1220 | 100% | 2021-04-06 | 2021-04-12 |  |  | 5-DW | COST [16000 h] | 16,000 | 16,000 | 07-10-01 WATERPROOFING |  | WPRF |  | SITD | 0005 | CO | 4 | WATERPROOFING |  | CR-101, SS101, SS102 |
| RW1150 |  | Ret Wall Drain & Wrap - RW1 | 5d | 2021-04-09 A | 2021-04-22 A | RW1140 SS+2d | 100% | 2021-04-08 | 2021-04-15 |  |  | 5-DW | COST [16000 h] | 16,000 | 16,000 | 07-10-01 WATERPROOFING |  | WPRF |  | SITD | 0005 | CO | 4 | WATERPROOFING |  | CR-101, SS101, SS102 |

Notes:
- RW1000: Delay Impacts: 10/9/2020-10/15/2020 - RFI-0041 Habitat Conflict RW-01 / 11/10/2020 - Govt Issue RFP-0003 to Realign RW-01

| ID | WBS | Activity | Duration | Start | Finish | Predecessors | Complete | Planned start | Planned finish | Total float | Free float | Calendar | Resources | Cost | Actual cost | Specification | Sheet | RESP | AREA | BIDI | PHAS | CATW | FOW | CS |
| --- | --- | --- | --- | --- | --- | --- | --- | --- | --- | --- | --- | --- | --- | --- | --- | --- | --- | --- | --- | --- | --- | --- | --- | --- |
|  | 3 | **South - RW4 (SS104, CR-102)** |  | 2021-03-17 | 2021-05-06 |  |  |  |  |  |  |  |  |  |  |  |  |  |  |  |  |  |  |  |
| RW4020 |  | Ftg Rebar - RW4 | 4d | 2021-03-17 A | 2021-04-21 A | RW4000 SS+4d, RW4000 FF | 100% | 2021-03-05 | 2021-03-11 |  |  | 5-DW | COST [4000 h] | 4,000 | 4,000 | 03-20-01 REINFORCING STEEL | CR-102, SS104 | REBR | SITD | 0005 | CO | 4 | CONCRETE REINFORCE |  |
| RW4000 |  | Dig & Form Ftg - RW4 | 7d | 2021-03-31 A | 2021-04-02 A | RW1030 | 100% | 2021-04-01 | 2021-04-09 |  |  | 5-DW | COST [22000 h] | 22,000 | 22,000 | 03-30-01 CAST IN PLACE CONCRETE / BELOW GRADE PROD | CR-102, SS104 | CONC | SITD | 0005 | CO | 4 | CIP CONCRETE | 16000 |
| RW4080 |  | Form Ret Wall - RW4 Pour 2 | 8d | 2021-04-12 A | 2021-04-23 A | RW4070 | 100% | 2021-04-26 | 2021-05-05 |  |  | 5-DW | COST [28000 h] | 28,000 | 28,000 | 03-30-01 CAST IN PLACE CONCRETE / BELOW GRADE PROD | CR-102, SS104 | CONC | SITD | 0005 | CO | 4 | CIP CONCRETE | 20000 |
| RW4030 |  | Place Ftg Concrete - RW4 | 1d | 2021-04-12 A | 2021-04-12 A | RW4020 | 100% |  |  |  |  | 5-DW | COST [17000 h] | 17,000 | 17,000 | 03-30-01 CAST IN PLACE CONCRETE / BELOW GRADE PROD | CR-102, SS104 | CONC | SITD | 0005 | CO | 4 | CIP CONCRETE | 12000 |
| RW4040 |  | Form Ret Wall - RW4 Pour 1 | 7d | 2021-04-14 A | 2021-04-23 A | RW4030, RW1110 | 100% | 2021-04-13 | 2021-04-22 |  |  | 5-DW | COST [28000 h] | 28,000 | 28,000 | 03-30-01 CAST IN PLACE CONCRETE / BELOW GRADE PROD | CR-102, SS104 | CONC | SITD | 0005 | CO | 4 | CIP CONCRETE | 20000 |
| RW4050 |  | Rebar Ret Wall - RW4 Pour 1 | 3d | 2021-04-14 A | 2021-04-19 A | RW4040 SS+2d | 100% | 2021-04-16 | 2021-04-20 |  |  | 5-DW | COST [5000 h] | 5,000 | 5,000 | 03-20-01 REINFORCING STEEL | CR-102, SS104 | REBR | SITD | 0005 | CO | 4 | CONCRETE REINFORCE |  |
| RW4090 |  | Rebar Ret Wall - RW4 Pour 2 | 3d | 2021-04-14 A | 2021-04-19 A | RW4080 SS+2d | 100% | 2021-04-28 | 2021-04-30 |  |  | 5-DW | COST [5000 h] | 5,000 | 5,000 | 03-20-01 REINFORCING STEEL | CR-102, SS104 | REBR | SITD | 0005 | CO | 4 | CONCRETE REINFORCE |  |
| RW4070 |  | Place Ret Wall - RW4 Pour 1 | 1d | 2021-04-27 A | 2021-04-27 A | RW4040, RW4050 | 100% | 2021-04-23 | 2021-04-23 |  |  | 5-DW | COST [17000 h] | 17,000 | 17,000 | 03-30-01 CAST IN PLACE CONCRETE / BELOW GRADE PROD | CR-102, SS104 | CONC | SITD | 0005 | CO | 4 | CIP CONCRETE | 12000 |
| RW4110 |  | Place Ret Wall - RW4 Pour 2 | 1d | 2021-04-27 A | 2021-04-27 A | RW4090, RW4080 | 100% | 2021-05-06 | 2021-05-06 |  |  | 5-DW | COST [17000 h] | 17,000 | 17,000 | 03-30-01 CAST IN PLACE CONCRETE / BELOW GRADE PROD | CR-102, SS104 | CONC | SITD | 0005 | CO | 4 | CIP CONCRETE | 12000 |
| RW4120 |  | Cure Retaining Wall - RW4 | 14d | 2021-04-27 A | 2021-04-30 A | RW4110 | 100% | 2021-05-07 | 2021-05-20 |  |  | 7-D | COST [2700 h] | 2,700 | 2,700 | 03-30-01 CAST IN PLACE CONCRETE / BELOW GRADE PROD | CR-102, SS104 | CONC | SITD | 0005 | CO | 4 | CIP CONCRETE | 2000 |
| RW4130 |  | Strip Retaining Wall - RW4 | 3d | 2021-04-30 A | 2021-05-03 A | RW4120 | 100% | 2021-05-21 | 2021-05-25 |  |  | 5-DW | COST [21000 h] | 21,000 | 21,000 | 03-30-01 CAST IN PLACE CONCRETE / BELOW GRADE PROD | CR-102, SS104 | CONC | SITD | 0005 | CO | 4 | CIP CONCRETE | 15000 |
| RW4140 |  | Waterproof Ret Wall - RW4 | 2d | 2021-05-05 A | 2021-05-06 A | RW4130, RW1140 | 100% |  |  |  |  | 5-DW | COST [10000 h] | 10,000 | 10,000 | 07-10-01 WATERPROOFING | SS107 | WPRF | SITD | 0005 | CO | 4 | WATERPROOFING |  |
|  | 2 | **Box Culvert Headwalls - RW2 and RW3 (SS103)** |  | 2021-06-14 | 2021-08-26 |  |  |  |  |  |  |  |  |  |  |  |  |  |  |  |  |  |  |  |
| RW2000 |  | Dig & Form Ftg - RW2 & RW3 | 7d | 2021-06-14 A | 2021-06-25 A | SD1120, RW4030 | 100% | 2021-06-15 | 2021-06-24 |  |  | 5-DW | COST [22000 h] | 22,000 | 22,000 | 03-30-01 CAST IN PLACE CONCRETE / BELOW GRADE PROD | CD105, SS103 | CONC | SITD | 0005 | CO | 4 | CIP CONCRETE | 16000 |
| RW2020 |  | Ftg Rebar - RW2 & RW3 | 4d | 2021-06-23 A | 2021-06-28 A | RW2000 SS+4d, RW2000 FF | 100% | 2021-06-22 | 2021-06-25 |  |  | 5-DW | COST [22000 h] | 22,000 | 22,000 | 03-20-01 REINFORCING STEEL | CD105, SS103 | REBR | SITD | 0005 | CO | 4 | CONCRETE REINFORCE |  |
| RW2030 |  | Place Ftg Concrete - RW2 & RW3 | 1d | 2021-06-30 A | 2021-06-30 A | RW2020 | 100% | 2021-06-28 | 2021-06-28 |  |  | 5-DW | COST [14000 h] | 14,000 | 14,000 | 03-30-01 CAST IN PLACE CONCRETE / BELOW GRADE PROD | CD105, SS103 | CONC | SITD | 0005 | CO | 4 | CIP CONCRETE | 10000 |
| RW2040 |  | Form Ret Wall - RW2,3 Pour 1 | 8d | 2021-07-09 | 2021-07-21 | RW2030, RW4110 |  |  |  | 29d | 0d | 5-DW | COST [18000 h] | 18,000 |  | 03-30-01 CAST IN PLACE CONCRETE / BELOW GRADE PROD | CD105, SS103 | CONC | SITD | 0005 | CO | 4 | CIP CONCRETE | 13000 |
| RW2050 |  | Rebar Ret Wall - RW2,3 Pour 1 | 4d | 2021-07-13 | 2021-07-19 | RW2040 SS+2d |  |  |  | 31d | 2d | 5-DW | COST [5000 h] | 5,000 |  | 03-20-01 REINFORCING STEEL | CD105, SS103 | REBR | SITD | 0005 | CO | 4 | CONCRETE REINFORCE |  |
| RW2070 |  | Place Ret Wall - RW2,3 Pour 1 | 1d | 2021-07-22 | 2021-07-22 | RW2040, RW2050 |  |  |  | 29d | 0d | 5-DW | COST [14000 h] | 14,000 |  | 03-30-01 CAST IN PLACE CONCRETE / BELOW GRADE PROD | CD105, SS103 | CONC | SITD | 0005 | CO | 4 | CIP CONCRETE | 10000 |
| RW2080 |  | Form Ret Wall - RW2,3 Pour 2 | 8d | 2021-07-23 | 2021-08-03 | RW2070 |  |  |  | 29d | 0d | 5-DW | COST [18000 h] | 18,000 |  | 03-30-01 CAST IN PLACE CONCRETE / BELOW GRADE PROD | CD105, SS103 | CONC | SITD | 0005 | CO | 4 | CIP CONCRETE | 13000 |
| RW2090 |  | Rebar Ret Wall - RW2,3 Pour 2 | 4d | 2021-07-27 | 2021-07-30 | RW2080 SS+2d |  |  |  | 31d | 2d | 5-DW | COST [5000 h] | 5,000 |  | 03-20-01 REINFORCING STEEL | CD105, SS103 | REBR | SITD | 0005 | CO | 4 | CONCRETE REINFORCE |  |
| RW2110 |  | Place Ret Wall - RW2,3 Pour 2 | 1d | 2021-08-04 | 2021-08-04 | RW2080, RW2090 |  |  |  | 29d | 0d | 5-DW | COST [14000 h] | 14,000 |  | 03-30-01 CAST IN PLACE CONCRETE / BELOW GRADE PROD | CD105, SS103 | CONC | SITD | 0005 | CO | 4 | CIP CONCRETE | 10000 |
| RW2120 |  | Cure Retaining Wall - RW2,3 | 14d | 2021-08-05 | 2021-08-18 | RW2110 |  |  |  | 102d | 0d | 7-D | COST [2700 h] | 2,700 |  | 03-30-01 CAST IN PLACE CONCRETE / BELOW GRADE PROD | CD105, SS103 | CONC | SITD | 0005 | CO | 4 | CIP CONCRETE | 2000 |
| RW2130 |  | Strip Retaining Wall - RW2,3 | 4d | 2021-08-19 | 2021-08-24 | RW2120 |  |  |  | 60d | 0d | 5-DW | COST [13700 h] | 13,700 |  | 03-30-01 CAST IN PLACE CONCRETE / BELOW GRADE PROD | CD105, SS103 | CONC | SITD | 0005 | CO | 4 | CIP CONCRETE | 10000 |
| RW4150 |  | Waterproof Ret Wall - RW2,3 | 2d | 2021-08-25 | 2021-08-26 | RW2130, RW4140 |  |  |  | 60d | 0d | 5-DW | COST [10000 h] | 10,000 |  | 07-10-01 WATERPROOFING | SS107 | WPRF | SITD | 0005 | CO | 4 | WATERPROOFING |  |

Notes:
- RW4000: Delay Impacts: 11/5/2020-11/23/2020 - RFI-0063 - RW-4 Conflict with Site Limits / 2/19/2021 - RFP-0009 issued by Govt for RW-4 Additional Work per / RFI-0063.

| ID | WBS | Activity | Duration | Start | Finish | Predecessors | Complete | Planned start | Planned finish | Total float | Free float | Calendar | Resources | Cost | Actual cost | Specification | CS | Sheet | RESP | AREA | BIDI | PHAS | CATW | FOW | NOTES | WRKP |
| --- | --- | --- | --- | --- | --- | --- | --- | --- | --- | --- | --- | --- | --- | --- | --- | --- | --- | --- | --- | --- | --- | --- | --- | --- | --- | --- |
|  | 5 | **RCP Headwalls (SD-B, SD-D, SD-F)** |  | 2021-08-05 | 2021-11-03 |  |  |  |  |  |  |  |  |  |  |  |  |  |  |  |  |  |  |  |  |  |
| HW1000 |  | Dig/Form Ftgs - RCP Headwalls | 8d | 2021-08-05 | 2021-08-16 | SD1100, RW2110 |  |  |  | 29d | 0d | 5-DW | COST [8500 h] | 8,500 |  | 03-30-01 CAST IN PLACE CONCRETE / BELOW GRADE PROD | 6000 | CD107, CD108, SS127 | CONC | SITD | 0005 | CO | 4 | CIP CONCRETE |  |  |
| HW1010 |  | Rebar Ftgs - RCP Headwalls | 3d | 2021-08-17 | 2021-08-20 | HW1000 |  |  |  | 29d | 0d | 5-DW | COST [4800 h] | 4,800 |  | 03-20-01 REINFORCING STEEL |  | CD107, CD108, SS127 | REBR | SITD | 0005 | CO | 4 | CONCRETE REINFORCE |  |  |
| HW1020 |  | Place Ftgs - RCP Headwalls | 1d | 2021-08-23 | 2021-08-23 | HW1010 |  |  |  | 29d | 0d | 5-DW | COST [5500 h] | 5,500 |  | 03-30-01 CAST IN PLACE CONCRETE / BELOW GRADE PROD | 4000 | CD107, CD108, SS127 | CONC | SITD | 0005 | CO | 4 | CIP CONCRETE |  |  |
| HW1030 |  | Form Walls - RCP Headwalls | 8d | 2021-08-24 | 2021-09-02 | HW1020 |  |  |  | 29d | 0d | 5-DW | COST [13000 h] | 13,000 |  | 03-30-01 CAST IN PLACE CONCRETE / BELOW GRADE PROD | 9511 | CD107, CD108, SS127 | CONC | SITD | 0005 | CO | 4 | CIP CONCRETE |  |  |
| HW1040 |  | Rebar Walls - RCP Headwalls | 3d | 2021-08-25 | 2021-08-27 | HW1030 SS+1d |  |  |  | 33d | 4d | 5-DW | COST [8300 h] | 8,300 |  | 03-20-01 REINFORCING STEEL |  | CD107, CD108, SS127 | REBR | SITD | 0005 | CO | 4 | CONCRETE REINFORCE |  |  |
| HW1050 |  | Place Walls - RCP Headwalls | 1d | 2021-09-03 | 2021-09-03 | HW1040, HW1030 |  |  |  | 29d | 0d | 5-DW | COST [6900 h] | 6,900 |  | 03-30-01 CAST IN PLACE CONCRETE / BELOW GRADE PROD | 5000 | CD107, CD108, SS127 | CONC | SITD | 0005 | CO | 4 | CIP CONCRETE |  |  |
| HW1060 |  | Cure - RCP Headwalls | 7d | 2021-09-04 | 2021-09-10 | HW1050 |  |  |  | 51d | 0d | 7-D | COST [1400 h] | 1,400 |  | 03-30-01 CAST IN PLACE CONCRETE / BELOW GRADE PROD | 1000 | CD107, CD108, SS127 | CONC | SITD | 0005 | CO | 4 | CIP CONCRETE |  |  |
| HW1080 |  | Security Grates -RCP Headwalls | 3d | 2021-10-29 | 2021-11-03 | HW1060, SLP1120 |  |  |  | 141d | 118d | 5-DW | COST [33300 h] | 33,300 |  | 33-10-01 SITE UTILITIES | 27000 | CD107, CD108, SS127 | GRAD | SITD | 0005 | CO | 4 | STORM DRAINAGE | 1/20/21 - Revised | 005 |
|  | 4 | **Above Ground Utility Crossing (SS108, CU-206)** |  | 2021-05-12 | 2021-11-04 |  |  |  |  |  |  |  |  |  |  |  |  |  |  |  |  |  |  |  |  |  |
| CRS1000 |  | Drill & Place Conc Piers | 5d | 2021-05-12 A | 2021-05-28 A | GRD1140, PREP1240, CRS1010 | 100% | 2021-07-07 | 2021-07-13 |  |  | 5-DW | COST [34600 h] | 34,600 | 34,600 | 31-63-29 DRILLED PIERS |  | CU-206, SS108, SS109 | PIER | SITD | 0005 | CO | 4 | CONCRETE PIERS |  |  |
| CRS1010 |  | FOB Rebar Cages for Conc Piers | 1d | 2021-05-17 A | 2021-05-17 A | PREP1240 | 100% | 2021-07-06 | 2021-07-06 |  |  |  | COST [4500 h] | 4,500 | 4,500 | 03-20-01 REINFORCING STEEL |  |  | REBR | SITD | 0005 | CO | 4 | CONCRETE PIERS |  |  |
| CRS1020 |  | Form Pier Caps | 5d | 2021-07-02 | 2021-07-09 | CRS1000, CRS1010 |  |  |  | 61d | 0d | 5-DW | COST [5000 h] | 5,000 |  | 03-30-01 CAST IN PLACE CONCRETE / BELOW GRADE PROD | 36000 | CU-206, SS108, SS109 | CONC | SITD | 0005 | CO | 4 | CIP CONCRETE |  |  |
| CRS1040 |  | Rebar Pier Caps | 5d | 2021-07-12 | 2021-07-19 | CRS1020 |  |  |  | 61d | 0d | 5-DW | COST [1400 h] | 1,400 |  | 03-20-01 REINFORCING STEEL |  | CU-206, SS108, SS109 | REBR | SITD | 0005 | CO | 4 | CONCRETE REINFORCE |  |  |
| CRS1060 |  | Set Embeds for Steel Casings | 5d | 2021-07-20 | 2021-07-26 | CRS1040 |  |  |  | 61d | 0d | 5-DW | COST [3400 h] | 3,400 |  | 03-30-01 CAST IN PLACE CONCRETE / BELOW GRADE PROD | 2500 | CU-206, SS108, SS109 | CONC | SITD | 0005 | CO | 4 | CIP CONCRETE |  |  |
| CRS1080 |  | Place Pier Caps | 2d | 2021-07-27 | 2021-07-28 | CRS1060 |  |  |  | 61d | 0d | 5-DW | COST [4100 h] | 4,100 |  | 03-30-01 CAST IN PLACE CONCRETE / BELOW GRADE PROD | 3000 | CU-206, SS108, SS109 | CONC | SITD | 0005 | CO | 4 | CIP CONCRETE |  |  |
| CRS1100 |  | Cure Pier Caps | 7d | 2021-07-29 | 2021-08-04 | CRS1080 |  |  |  | 97d | 0d | 7-D | COST [800 h] | 800 |  | 03-30-01 CAST IN PLACE CONCRETE / BELOW GRADE PROD | 579 | CU-206, SS108, SS109 | CONC | SITD | 0005 | CO | 4 | CIP CONCRETE |  |  |
| CRS1120 |  | Install Steel Casings | 4d | 2021-08-05 | 2021-08-10 | CRS1000, CRS1100 |  |  |  | 61d | 0d | 5-DW | COST [3400 h] | 3,400 |  | 03-30-01 CAST IN PLACE CONCRETE / BELOW GRADE PROD | 2500 | CU-206, SS108, SS109 | CONC | SITD | 0005 | CO | 4 | SITE WATER |  |  |
| CRS1140 |  | Form Security Cap at Pier | 5d | 2021-08-11 | 2021-08-17 | CRS1120 |  |  |  | 83d | 0d | 5-DW | COST [3700 h] | 3,700 |  | 03-30-01 CAST IN PLACE CONCRETE / BELOW GRADE PROD | 3000 | CU-206, SS108, SS109 | CONC | SITD | 0005 | CO | 4 | CIP CONCRETE | 1/20/21 - Revised |  |
| CRS1160 |  | Rebar Security Cap at Pier | 3d | 2021-08-19 | 2021-08-23 | CRS1140 |  |  |  | 83d | 0d | 5-DW | COST [600 h] | 600 |  | 03-20-01 REINFORCING STEEL |  | CU-206, SS108, SS109 | REBR | SITD | 0005 | CO | 4 | CONCRETE REINFORCE | 1/20/21 - Revised |  |
| CRS1180 |  | Place Security Cap at Pier | 1d | 2021-08-24 | 2021-08-24 | CRS1160 |  |  |  | 83d | 43d | 5-DW | COST [3700 h] | 3,700 |  | 03-30-01 CAST IN PLACE CONCRETE / BELOW GRADE PROD | 3000 | CU-206, SS108, SS109 | CONC | SITD | 0005 | CO | 4 | CIP CONCRETE | 1/20/21 - Revised |  |
| CRS1200 |  | Paint Steel Casings | 2d | 2021-11-03 | 2021-11-04 | CRS1120, CRS1180, PREP1700 |  |  |  | 140d | 88d | 5-DW |  |  |  | 09-91-01 PAINTING & COATINGS |  | CU-206, SS108, SS109 | PAIN | SITD | 0005 | CO | 4 | PAINTING |  |  |
|  | 7 | **Misc Foundations** |  | 2021-07-02 | 2021-09-28 |  |  |  |  |  |  |  |  |  |  |  |  |  |  |  |  |  |  |  |  |  |
| SFND1000 |  | Dig/Form Propane/Fire Tank Ftg | 2d | 2021-07-02 | 2021-07-06 | CRS1000 |  |  |  | 102d | 0d | 5-DW | COST [13700 h] | 13,700 |  | 03-30-01 CAST IN PLACE CONCRETE / BELOW GRADE PROD | 10000 | SS111 | CONC | SITI | 0005 | CO | 4 | CIP CONCRETE |  |  |
| SFND1040 |  | Rebar Propane Tank Ftg | 2d | 2021-07-07 | 2021-07-08 | SFND1000 |  |  |  | 102d | 0d | 5-DW | COST [2100 h] | 2,100 |  | 03-20-01 REINFORCING STEEL |  | SS111 | REBR | SITI | 0005 | CO | 4 | CONCRETE REINFORCE |  |  |
| SFND1080 |  | Place Propane/Fire Tank Ftg | 1d | 2021-07-09 | 2021-07-09 | SFND1040 |  |  |  | 102d | 0d | 5-DW | COST [14400 h] | 14,400 |  | 03-30-01 CAST IN PLACE CONCRETE / BELOW GRADE PROD | 10500 | SS111 | CONC | SITI | 0005 | CO | 4 | CIP CONCRETE |  |  |
| SFND1120 |  | Rebar Propane Tank Supports | 4d | 2021-07-12 | 2021-07-16 | SFND1080 |  |  |  | 102d | 0d | 5-DW | COST [2100 h] | 2,100 |  | 03-20-01 REINFORCING STEEL |  | SS111 | REBR | SITI | 0005 | CO | 4 | CONCRETE REINFORCE |  |  |
| SFND1160 |  | Form Propane Tank Supports | 5d | 2021-07-19 | 2021-07-23 | SFND1120 |  |  |  | 102d | 0d | 5-DW | COST [21900 h] | 21,900 |  | 03-30-01 CAST IN PLACE CONCRETE / BELOW GRADE PROD | 16000 | SS111 | CONC | SITI | 0005 | CO | 4 | CIP CONCRETE |  |  |
| SFND1180 |  | Place Propane Tank Supports | 1d | 2021-07-26 | 2021-07-26 | SFND1160 |  |  |  | 102d | 0d | 5-DW | COST [7500 h] | 7,500 |  | 03-30-01 CAST IN PLACE CONCRETE / BELOW GRADE PROD | 55000 | SS111 | CONC | SITI | 0005 | CO | 4 | CIP CONCRETE |  |  |
| SFND1200 |  | Cure Propane Tank Supports | 7d | 2021-07-27 | 2021-08-02 | SFND1180 |  |  |  | 176d | 118d | 7-D | COST [1400 h] | 1,400 |  | 03-30-01 CAST IN PLACE CONCRETE / BELOW GRADE PROD | 1000 | SS111 | CONC | SITI | 0005 | CO | 4 | CIP CONCRETE |  |  |
| SFND1020 |  | Dig/Form Generator/Chiller Ftg | 2d | 2021-09-15 | 2021-09-16 | CRS1000, EL1180 |  |  |  | 51d | 0d | 5-DW | COST [7000 h] | 7,000 |  | 03-30-01 CAST IN PLACE CONCRETE / BELOW GRADE PROD | 5000 | SS111 | CONC | SITI | 0005 | CO | 4 | CIP CONCRETE |  |  |
| SFND1060 |  | Rebar Generator Foundations | 2d | 2021-09-17 | 2021-09-20 | SFND1020 |  |  |  | 51d | 0d | 5-DW | COST [1400 h] | 1,400 |  | 03-20-01 REINFORCING STEEL |  | SS111 | REBR | SITI | 0005 | CO | 4 | CONCRETE REINFORCE |  |  |
| SFND1100 |  | Place Generator/Chiller Ftgs | 1d | 2021-09-21 | 2021-09-21 | SFND1060 |  |  |  | 51d | 0d | 5-DW | COST [16400 h] | 16,400 |  | 03-30-01 CAST IN PLACE CONCRETE / BELOW GRADE PROD | 12000 | SS111 | CONC | SITI | 0005 | CO | 4 | CIP CONCRETE |  |  |
| SFND1140 |  | Cure Generator/Chiller Ftgs | 7d | 2021-09-22 | 2021-09-28 | SFND1100 |  |  |  | 90d | 33d | 7-D | COST [1400 h] | 1,400 |  | 03-30-01 CAST IN PLACE CONCRETE / BELOW GRADE PROD | 1000 | SS111 | CONC | SITI | 0005 | CO | 4 | CIP CONCRETE |  |  |

Notes:
- CRS1020: Activity Notes: RFI-0179 - Size of the Steel Pipe for the Utility Crossing
- CRS1060: Activity Notes: RFI-0179 - Size of the Steel Pipe for the Utility Crossing
- CRS1120: Activity Notes: RFI-0179 - Size of the Steel Pipe for the Utility Crossing
- SFND1000: Activity Notes: RFI 192 - Size of Propane Tank

| ID | WBS | Activity | Duration | Start | Finish | Predecessors | Complete | Remaining | Planned start | Planned finish | Total float | Free float | Calendar | Resources | Cost | Actual cost | Specification | CS | RESP | WRKP | AREA | BIDI | PHAS | CATW | FOW | Sheet | NOTES |
| --- | --- | --- | --- | --- | --- | --- | --- | --- | --- | --- | --- | --- | --- | --- | --- | --- | --- | --- | --- | --- | --- | --- | --- | --- | --- | --- | --- |
|  | 10 | **Slope Protection** |  | 2020-12-07 | 2021-12-13 |  |  |  |  |  |  |  |  |  |  |  |  |  |  |  |  |  |  |  |  |  |  |
| SLP1000 |  | Fine Grade Slope - W SD Basin | 5d | 2020-12-07 A | 2021-01-22 A | SD1080, GRD1140, HW1060, GRD1200 | 100% |  | 2021-05-27 | 2021-06-03 |  |  | 5-DW | COST [34300 h] | 34,300 | 34,300 | 31-20-01 EARTHWORK | 25000 | GRAD | 005 | SITI | 0005 | CO | 4 | CLEAR/GRUB/GRADING |  |  |
| SLP1040 |  | Fine Grade Slope - Parking Lot | 3d | 2020-12-09 A | 2021-01-20 A | SLP1000 | 100% |  | 2021-06-04 | 2021-06-08 |  |  | 5-DW | COST [34300 h] | 34,300 | 34,300 | 31-20-01 EARTHWORK | 25000 | GRAD | 005 | SITI | 0005 | CO | 4 | CLEAR/GRUB/GRADING |  |  |
| SLP1060 |  | Fine Grade Slopes at Entry | 5d | 2021-01-06 A | 2021-09-13 | SLP1000, SLP1040 | 90% | 1d | 2021-06-24 | 2021-06-30 | 151d | 36d | 5-DW | COST [49100 h] | 49,100 | 44,190 | 31-20-01 EARTHWORK | 35800 | GRAD | 005 | SITI | 0005 | CO | 4 | CLEAR/GRUB/GRADING |  |  |
| SLP1010 |  | Outlet Ctrl Structure - SD-E | 5d | 2021-09-13 | 2021-09-17 | SLP1000 SS |  |  |  |  | 31d | 0d | 5-DW | COST [20600 h] | 20,600 |  | 33-10-01 SITE UTILITIES | 15000 | GRAD | 005 | SITD | 0005 | CO | 4 | STORM DRAINAGE | CD-301 |  |
| SLP1050 |  | Form Slp Prot - Stock Pile Cul | 3d | 2021-09-14 | 2021-09-16 | SD1040, SLP1000 SS, PREP1320 |  |  |  |  | 49d | 0d | 5-DW | COST [119600 h] | 119,600 |  | 03-37-13 SHOTCRETE |  | SLOP |  | SITI | 0005 | CO | 4 | SLOPE PROTECTION |  |  |
| SLP1070 |  | Rebar Slp Prot -Stock Pile Cul | 2d | 2021-09-17 | 2021-09-20 | SLP1050 |  |  |  |  | 49d | 0d | 5-DW | COST [4500 h] | 4,500 |  | 03-20-01 REINFORCING STEEL |  | REBR |  | SITI | 0005 | CO | 4 | SLOPE PROTECTION |  |  |
| SLP1020 |  | Form Slope Protect - W Basin | 10d | 2021-09-20 | 2021-10-04 | SLP1000, SLP1010 |  |  |  |  | 31d | 0d | 5-DW | COST [378700 h] | 378,700 |  | 03-37-13 SHOTCRETE |  | SLOP |  | SITI | 0005 | CO | 4 | SLOPE PROTECTION |  | 1/20/21 - Revised |
| SLP1080 |  | Place Slp Prot -Stock Pile Cul | 1d | 2021-09-21 | 2021-09-21 | SLP1070 |  |  |  |  | 49d | 18d | 5-DW | COST [59800 h] | 59,800 |  | 03-37-13 SHOTCRETE |  | SLOP |  | SITI | 0005 | CO | 4 | SLOPE PROTECTION |  |  |
| SLP1090 |  | Rebar Slope Protect - W Basin | 10d | 2021-10-05 | 2021-10-21 | SLP1020 |  |  |  |  | 31d | 0d | 5-DW | COST [24000 h] | 24,000 |  | 03-20-01 REINFORCING STEEL |  | REBR |  | SITI | 0005 | CO | 4 | SLOPE PROTECTION |  |  |
| SLP1100 |  | Form Slope Protect - Parking | 5d | 2021-10-05 | 2021-10-12 | SLP1020, SLP1040 |  |  |  |  | 36d | 5d | 5-DW | COST [179400 h] | 179,400 |  | 03-37-13 SHOTCRETE |  | SLOP |  | SITI | 0005 | CO | 4 | SLOPE PROTECTION |  | 1/20/21 - Revised |
| SLP1120 |  | Place Slope Protect - W Basin | 5d | 2021-10-22 | 2021-10-28 | SLP1000, SLP1090, SLP1080 |  |  |  |  | 31d | 0d | 5-DW | COST [179400 h] | 179,400 |  | 03-37-13 SHOTCRETE |  | SLOP |  | SITI | 0005 | CO | 4 | SLOPE PROTECTION |  | 1/20/21 - Revised |
| SLP1140 |  | Rebar Slope Protect - Parking | 5d | 2021-10-22 | 2021-10-28 | SLP1090, SLP1100 |  |  |  |  | 31d | 0d | 5-DW | COST [19100 h] | 19,100 |  | 03-20-01 REINFORCING STEEL |  | REBR |  | SITI | 0005 | CO | 4 | SLOPE PROTECTION |  | 1/20/21 - Revised |
| SLP1160 |  | Place Slope Protect - Parking | 2d | 2021-10-29 | 2021-11-01 | SLP1120, SLP1140 |  |  |  |  | 31d | 0d | 5-DW | COST [89600 h] | 89,600 |  | 03-37-13 SHOTCRETE |  | SLOP |  | SITI | 0005 | CO | 4 | SLOPE PROTECTION |  | 1/20/21 - Revised |
| SLP1180 |  | Form Slope Protect - N Perim | 5d | 2021-11-03 | 2021-11-09 | SLP1160 |  |  |  |  | 71d | 0d | 5-DW | COST [179400 h] | 179,400 |  | 03-37-13 SHOTCRETE |  | SLOP |  | SITI | 0005 | CO | 4 | SLOPE PROTECTION |  | 1/20/21 - Revised |
| SLP1200 |  | Rebar Slope Protect - N Perim | 5d | 2021-11-10 | 2021-11-18 | SLP1180 |  |  |  |  | 71d | 0d | 5-DW | COST [18500 h] | 18,500 |  | 03-20-01 REINFORCING STEEL |  | REBR |  | SITI | 0005 | CO | 4 | SLOPE PROTECTION |  | 1/20/21 - Revised |
| SLP1220 |  | Form Slope Protect - Site Entr | 7d | 2021-11-10 | 2021-11-22 | SLP1180, SLP1060 |  |  |  |  | 115d | 0d | 5-DW | COST [251100 h] | 251,100 |  | 03-37-13 SHOTCRETE |  | SLOP |  | SITI | 0005 | CO | 4 | SLOPE PROTECTION |  | 1/20/21 - Revised |
| SLP1240 |  | Place Slope Protect - N Perim | 3d | 2021-11-19 | 2021-11-23 | SLP1120, SLP1120 FF, SLP1200 |  |  |  |  | 71d | 6d | 5-DW | COST [89600 h] | 89,600 |  | 03-37-13 SHOTCRETE |  | SLOP |  | SITI | 0005 | CO | 4 | SLOPE PROTECTION |  | 1/20/21 - Revised |
| SLP1260 |  | Rebar Slope Protect -Site Entr | 7d | 2021-11-23 | 2021-12-08 | SLP1220, SLP1200 |  |  |  |  | 115d | 0d | 5-DW | COST [18500 h] | 18,500 |  | 03-20-01 REINFORCING STEEL |  | REBR |  | SITI | 0005 | CO | 4 | SLOPE PROTECTION |  | 1/20/21 - Revised |
| SLP1280 |  | Place Slope Protect -Site Entr | 3d | 2021-12-09 | 2021-12-13 | SLP1240, SLP1260 |  |  |  |  | 115d | 87d | 5-DW | COST [125500 h] | 125,500 |  | 03-37-13 SHOTCRETE |  | SLOP |  | SITI | 0005 | CO | 4 | SLOPE PROTECTION |  | 1/20/21 - Revised |
|  | 3 | **Building 1 Border Patrol Station** |  | 2020-10-26 | 2022-05-13 |  |  |  |  |  |  |  |  |  |  |  |  |  |  |  |  |  |  |  |  |  |  |
|  | 1 | **Foundations** |  | 2020-10-26 | 2021-05-03 |  |  |  |  |  |  |  |  |  |  |  |  |  |  |  |  |  |  |  |  |  |  |
|  | 5 | **South Retaining Walls (GL 0)** |  | 2021-02-03 | 2021-05-03 |  |  |  |  |  |  |  |  |  |  |  |  |  |  |  |  |  |  |  |  |  |  |
| 1FN0100 |  | Dig & Form Ftg - B1 RW | 4d | 2021-02-03 A | 2021-02-05 A | GRD1140, 031113-02, 133419-01, PREP1060, 013201-31, 033000-02, MOB1140, 032000-02, RFP07-140 | 100% |  | 2021-02-03 | 2021-02-08 |  |  | 5-DW | COST [32000 h] | 32,000 | 32,000 | 03-30-01 CAST IN PLACE CONCRETE / BELOW GRADE PROD | 20000 | CONC |  | BLD1 | 0001 | CO | 4 | CIP CONCRETE |  |  |
| 1FN0110 |  | Ftg Rebar - B1 RW | 2d | 2021-02-10 A | 2021-02-15 A | 1FN0100, 032000-09, PREP1080 | 100% |  | 2021-02-18 | 2021-02-19 |  |  | 5-DW | COST [5000 h] | 5,000 | 5,000 | 03-20-01 REINFORCING STEEL |  | REBR |  | BLD1 | 0001 | CO | 4 | CONCRETE REINFORCE |  |  |
| 1FN0140 |  | Wall Rebar - B1 RW | 4d | 2021-02-10 A | 2021-03-17 A | 1FN0130 SS+2d | 100% |  | 2021-02-26 | 2021-03-03 |  |  | 5-DW | COST [19000 h] | 19,000 | 19,000 | 03-20-01 REINFORCING STEEL |  | REBR |  | BLD1 | 0001 | CO | 4 | CONCRETE REINFORCE |  |  |
| 1FN0120 |  | Place Ftg Concrete - B1 RW | 1d | 2021-02-22 A | 2021-02-22 A | 1FN0110 | 100% |  |  |  |  |  | 5-DW | COST [20000 h] | 20,000 | 20,000 | 03-30-01 CAST IN PLACE CONCRETE / BELOW GRADE PROD | 12000 | CONC |  | BLD1 | 0001 | CO | 4 | CIP CONCRETE |  |  |
| 1FN0130 |  | Form 1 Side Walls - B1 RW | 5d | 2021-02-24 A | 2021-02-25 A | 1FN0120 | 100% |  | 2021-02-23 | 2021-03-02 |  |  | 5-DW | COST [27000 h] | 27,000 | 27,000 | 03-30-01 CAST IN PLACE CONCRETE / BELOW GRADE PROD | 17000 | CONC |  | BLD1 | 0001 | CO | 4 | CIP CONCRETE |  |  |
| 1FN0150 |  | Close Wall Forms - B1 RW | 5d | 2021-03-18 A | 2021-03-22 A | 1FN0140, 1FN0130 | 100% |  | 2021-03-04 | 2021-03-11 |  |  | 5-DW | COST [26000 h] | 26,000 | 26,000 | 03-30-01 CAST IN PLACE CONCRETE / BELOW GRADE PROD | 17000 | CONC |  | BLD1 | 0001 | CO | 4 | CIP CONCRETE |  |  |
| 1FN0160 |  | Place Wall Concrete - B1 RW | 1d | 2021-03-29 A | 2021-03-29 A | 1FN0150, 133419-29 | 100% |  | 2021-03-12 | 2021-03-12 |  |  | 5-DW | COST [21000 h] | 21,000 | 21,000 | 03-30-01 CAST IN PLACE CONCRETE / BELOW GRADE PROD | 14000 | CONC |  | BLD1 | 0001 | CO | 4 | CIP CONCRETE |  |  |
| 1FN0170 |  | Cure Walls - B1 RW | 7d | 2021-03-29 A | 2021-04-02 A | 1FN0160 | 100% |  | 2021-03-13 | 2021-03-19 |  |  | 7-D | COST [1100 h] | 1,100 | 1,100 | 03-30-01 CAST IN PLACE CONCRETE / BELOW GRADE PROD | 1000 | CONC |  | BLD1 | 0001 | CO | 4 | CIP CONCRETE |  |  |
| 1FN0180 |  | Strip Walls - B1 RW | 6d | 2021-04-02 A | 2021-05-03 A | 1FN0170 | 100% |  | 2021-04-07 | 2021-04-15 |  |  | 5-DW | COST [23000 h] | 23,000 | 23,000 | 03-30-01 CAST IN PLACE CONCRETE / BELOW GRADE PROD | 20000 | CONC |  | BLD1 | 0001 | CO | 4 | CIP CONCRETE |  |  |
| 1FN0190 |  | Waterproofing - B1 RW | 1d | 2021-04-12 A | 2021-04-12 A | 1FN0180 | 100% |  | 2021-04-16 | 2021-04-16 |  |  | 5-DW | COST [7800 h] | 7,800 | 7,800 | 07-10-01 WATERPROOFING |  | WPRF |  | BLD1 | 0001 | CO | 4 | WATERPROOFING |  |  |
| 1FN0200 |  | Backfill Walls - B1 RW | 4d | 2021-04-13 A | 2021-04-19 A | 1FN0190 | 100% |  | 2021-04-19 | 2021-04-22 |  |  | 5-DW | COST [3400 h] | 3,400 | 3,400 | 03-30-01 CAST IN PLACE CONCRETE / BELOW GRADE PROD | 3000 | CONC |  | BLD1 | 0001 | CO | 4 | CIP CONCRETE |  |  |

| ID | WBS | Activity | Duration | Start | Finish | Predecessors | Complete | Planned start | Planned finish | Calendar | Resources | Cost | Actual cost | Specification | CS | RESP | AREA | BIDI | PHAS | CATW | FOW | WRKP |
| --- | --- | --- | --- | --- | --- | --- | --- | --- | --- | --- | --- | --- | --- | --- | --- | --- | --- | --- | --- | --- | --- | --- |
|  | 3 | **Area E (1-S105)** |  | 2020-11-12 | 2021-04-09 |  |  |  |  |  |  |  |  |  |  |  |  |  |  |  |  |  |
| 1FNE130 |  | Deep Elec/Comm in Pad - B1 E | 10d | 2020-11-12 A | 2020-12-18 A | 1FNE120 SS+5d, PREP1120, 1FNC120 | 100% | 2020-12-18 | 2021-01-11 | 5-DW | COST [235000 h] | 235,000 | 235,000 | 26-05-01 BUILDING ELECTRICAL | 152768 | ELEC | BLD1 | 0001 | CO | 4 | U/G ELECTRICAL DIST |  |
| 1FNE110 |  | Layout/Dig UG Plumbing - B1 E | 3d | 2020-11-20 A | 2020-12-18 A | GRD1140, PREP1100, 1FNA110 | 100% | 2020-12-03 | 2020-12-07 | 5-DW | COST [130000 h] | 130,000 | 130,000 | 22-05-01 PLUMBING |  | PLUM | BLD1 | 0001 | CO | 4 | PLUMBING |  |
| 1FNE120 |  | UG Waste & Vent - B1 E | 7d | 2020-12-14 A | 2020-12-18 A | PREP1100, 1FNE110 | 100% | 2020-12-07 | 2020-12-18 | 5-DW | COST [153000 h] | 153,000 | 153,000 | 22-05-01 PLUMBING |  | PLUM | BLD1 | 0001 | CO | 4 | PLUMBING |  |
| 1FNE140 |  | Dig Ftgs & GBs - B1 E | 5d | 2021-01-18 A | 2021-02-25 A | 1FN0100, 1FNE120, 1FNE100, 1FNE130, PREP1060, RFP07-140 | 100% | 2021-03-04 | 2021-03-11 | 5-DW | COST [31443 h] | 31,443 | 31,443 | 03-30-01 CAST IN PLACE CONCRETE / BELOW GRADE PROD | 20000 | CONC | BLD1 | 0001 | CO | 4 | CIP CONCRETE |  |
| 1FNE100 |  | Install Fire Risers - Bldg 1 | 3d | 2021-02-12 A | 2021-03-01 A | GRD1140 | 100% | 2021-02-03 | 2021-02-05 | 5-DW | COST [16000 h] | 16,000 | 16,000 | 33-10-01 SITE UTILITIES | 10000 | GRAD | BLD1 | 0001 | CO | 4 | SITE WATER | 005 |
| 1FNE160 |  | Spread Ftg Rebar - B1 E | 4d | 2021-02-17 A | 2021-03-23 A | 1FNE140, 032000-09, PREP1080 | 100% | 2021-02-18 | 2021-02-23 | 5-DW | COST [20000 h] | 20,000 | 20,000 | 03-20-01 REINFORCING STEEL |  | REBR | BLD1 | 0001 | CO | 4 | CONCRETE REINFORCE |  |
| 1FNE150 |  | Form Grade Beams - B1 E | 8d | 2021-02-19 A | 2021-03-24 A | 1FNE140, 031113-02, 033000-02 | 100% | 2021-02-16 | 2021-03-01 | 5-DW | COST [46000 h] | 46,000 | 46,000 | 03-30-01 CAST IN PLACE CONCRETE / BELOW GRADE PROD | 30000 | CONC | BLD1 | 0001 | CO | 4 | CIP CONCRETE |  |
| 1FNE170 |  | Set Anchor Bolts - B1 E | 3d | 2021-02-19 A | 2021-03-25 A | 1FNE160, 133419-29, 133419-90 | 100% | 2021-02-24 | 2021-03-01 | 5-DW | COST [19000 h] | 19,000 | 19,000 | 03-30-01 CAST IN PLACE CONCRETE / BELOW GRADE PROD | 12000 | CONC | BLD1 | 0001 | CO | 4 | CIP CONCRETE |  |
| 1FNE190 |  | Grade Beam Rebar - B1 E | 7d | 2021-02-22 A | 2021-03-23 A | 1FNE150 SS+3d, 1FNE150 FF, 1FNE180, 032000-09 | 100% | 2021-03-03 | 2021-03-12 | 5-DW | COST [18000 h] | 18,000 | 18,000 | 03-20-01 REINFORCING STEEL |  | REBR | BLD1 | 0001 | CO | 4 | CONCRETE REINFORCE |  |
| 1FNE180 |  | Place Spread Ftgs - B1 E | 1d | 2021-03-29 A | 2021-03-29 A | 1FNE170 | 100% | 2021-03-19 | 2021-03-19 | 5-DW | COST [38000 h] | 38,000 | 38,000 | 03-30-01 CAST IN PLACE CONCRETE / BELOW GRADE PROD | 25000 | CONC | BLD1 | 0001 | CO | 4 | CIP CONCRETE |  |
| 1FNE200 |  | Place Grade Beams - B1 E | 2d | 2021-03-29 A | 2021-03-29 A | 1FNE190 | 100% | 2021-04-01 | 2021-04-02 | 5-DW | COST [69000 h] | 69,000 | 69,000 | 03-30-01 CAST IN PLACE CONCRETE / BELOW GRADE PROD | 45000 | CONC | BLD1 | 0001 | CO | 4 | CIP CONCRETE |  |
| 1FNE210 |  | Cure Grade Beams - B1 E | 3d | 2021-03-29 A | 2021-04-02 A | 1FNE200 | 100% | 2021-04-03 | 2021-04-05 | 7-D | COST [1100 h] | 1,100 | 1,100 | 03-30-01 CAST IN PLACE CONCRETE / BELOW GRADE PROD | 1000 | CONC | BLD1 | 0001 | CO | 4 | CIP CONCRETE |  |
| 1FNE220 |  | Strip Grade Beams - B1 E | 3d | 2021-04-09 A | 2021-04-09 A | 1FNE210 | 100% | 2021-04-05 | 2021-04-07 | 5-DW | COST [20600 h] | 20,600 | 20,600 | 03-30-01 CAST IN PLACE CONCRETE / BELOW GRADE PROD | 18000 | CONC | BLD1 | 0001 | CO | 4 | CIP CONCRETE |  |
|  | 1 | **Areas C & D (1-S103 & 1-S104)** |  | 2020-10-28 | 2021-04-09 |  |  |  |  |  |  |  |  |  |  |  |  |  |  |  |  |  |
| 1FNC100 |  | Layout/Dig UG Plumbing - B1 CD | 2d | 2020-10-28 A | 2020-11-16 A | GRD1140 SS, PREP1100 | 100% | 2020-11-24 | 2020-11-30 | 5-DW | COST [76000 h] | 76,000 | 76,000 | 22-05-01 PLUMBING |  | PLUM | BLD1 | 0001 | CO | 4 | PLUMBING |  |
| 1FNC110 |  | UG Waste & Vent - B1 CD | 7d | 2020-10-28 A | 2020-11-16 A | 1FNC100 | 100% | 2020-12-08 | 2020-12-21 | 5-DW | COST [87000 h] | 87,000 | 87,000 | 22-05-01 PLUMBING |  | PLUM | BLD1 | 0001 | CO | 4 | PLUMBING |  |
| 1FNC120 |  | Deep Elec/Comm in Pad - B1 CD | 10d | 2020-11-09 A | 2020-11-20 A | 1FNC110 SS+5d, 1FNA120 | 100% | 2020-11-12 | 2020-12-01 | 5-DW | COST [156000 h] | 156,000 | 156,000 | 26-05-01 BUILDING ELECTRICAL | 101845 | ELEC | BLD1 | 0001 | CO | 4 | U/G ELECTRICAL DIST |  |
| 1FNC130 |  | Dig Ftgs & GBs - B1 CD | 4d | 2021-01-18 A | 2021-02-17 A | 1FNE140, 1FNC110, 1FNC120 | 100% | 2021-03-12 | 2021-03-17 | 5-DW | COST [46000 h] | 46,000 | 46,000 | 03-30-01 CAST IN PLACE CONCRETE / BELOW GRADE PROD | 30000 | CONC | BLD1 | 0001 | CO | 4 | CIP CONCRETE |  |
| 1FNC140 |  | Spread Ftg Rebar - B1 CD | 3d | 2021-02-15 A | 2021-02-18 A | 1FNC130, 1FNE160 | 100% | 2021-02-24 | 2021-03-01 | 5-DW | COST [20000 h] | 20,000 | 20,000 | 03-20-01 REINFORCING STEEL |  | REBR | BLD1 | 0001 | CO | 4 | CONCRETE REINFORCE |  |
| 1FNC180 |  | Grade Beam Rebar - B1 CD | 5d | 2021-02-15 A | 2021-02-19 A | 1FNC170 SS+3d, 1FNC170 FF, 1FNC160, 1FNE190 | 100% | 2021-03-15 | 2021-03-19 | 5-DW | COST [9000 h] | 9,000 | 9,000 | 03-20-01 REINFORCING STEEL |  | REBR | BLD1 | 0001 | CO | 4 | CONCRETE REINFORCE |  |
| 1FNC150 |  | Set Anchor Bolts - B1 CD | 3d | 2021-02-18 A | 2021-02-19 A | 1FNC140, 1FNE170, 133419-90 | 100% | 2021-03-02 | 2021-03-04 | 5-DW | COST [18000 h] | 18,000 | 18,000 | 03-30-01 CAST IN PLACE CONCRETE / BELOW GRADE PROD | 12000 | CONC | BLD1 | 0001 | CO | 4 | CIP CONCRETE |  |
| 1FNC170 |  | Form Grade Beams - B1 CD | 5d | 2021-02-18 A | 2021-03-03 A | 1FNC130, 1FNE150, 1FNC160 | 100% | 2021-03-08 | 2021-03-15 | 5-DW | COST [23000 h] | 23,000 | 23,000 | 03-30-01 CAST IN PLACE CONCRETE / BELOW GRADE PROD | 15000 | CONC | BLD1 | 0001 | CO | 4 | CIP CONCRETE |  |
| 1FNC160 |  | Place Spread Ftgs - B1 CD | 1d | 2021-02-22 A | 2021-02-22 A | 1FNC150 | 100% | 2021-03-05 | 2021-03-05 | 5-DW | COST [20000 h] | 20,000 | 20,000 | 03-30-01 CAST IN PLACE CONCRETE / BELOW GRADE PROD | 13000 | CONC | BLD1 | 0001 | CO | 4 | CIP CONCRETE |  |
| 1FNC190 |  | Place Grade Beam - B1 CD | 2d | 2021-02-22 A | 2021-02-22 A | 1FNC180 | 100% | 2021-03-22 | 2021-03-23 | 5-DW | COST [25000 h] | 25,000 | 25,000 | 03-30-01 CAST IN PLACE CONCRETE / BELOW GRADE PROD | 16000 | CONC | BLD1 | 0001 | CO | 4 | CIP CONCRETE |  |
| 1FNC200 |  | Cure Grade Beams - B1 CD | 3d | 2021-02-23 A | 2021-02-26 A | 1FNC190 | 100% | 2021-03-24 | 2021-03-26 | 7-D | COST [1100 h] | 1,100 | 1,100 | 03-30-01 CAST IN PLACE CONCRETE / BELOW GRADE PROD | 1000 | CONC | BLD1 | 0001 | CO | 4 | CIP CONCRETE |  |
| 1FNC210 |  | Strip Grade Beams - B1 CD | 3d | 2021-02-24 A | 2021-04-09 A | 1FNC200 | 100% | 2021-03-29 | 2021-03-31 | 5-DW | COST [8000 h] | 8,000 | 8,000 | 03-30-01 CAST IN PLACE CONCRETE / BELOW GRADE PROD | 7000 | CONC | BLD1 | 0001 | CO | 4 | CIP CONCRETE |  |

| ID | WBS | Activity | Duration | Start | Finish | Predecessors | Complete | Remaining | Planned start | Planned finish | Total float | Free float | Calendar | Resources | Cost | Actual cost | Specification | CS | RESP | AREA | BIDI | PHAS | CATW | FOW |
| --- | --- | --- | --- | --- | --- | --- | --- | --- | --- | --- | --- | --- | --- | --- | --- | --- | --- | --- | --- | --- | --- | --- | --- | --- |
|  | 2 | **Areas A & B (1-S101 & 1-S102)** |  | 2020-10-26 | 2021-04-12 |  |  |  |  |  |  |  |  |  |  |  |  |  |  |  |  |  |  |  |
| 1FNA120 |  | Deep Elec/Comm in Pad - B1 AB | 10d | 2020-10-26 A | 2020-11-16 A | GRD1140 SS, PREP1180 | 100% |  | 2021-02-26 | 2021-03-12 |  |  | 5-DW | COST [168000 h] | 168,000 | 168,000 | 26-05-01 BUILDING ELECTRICAL | 109120 | ELEC | BLD1 | 0001 | CO | 4 | U/G ELECTRICAL DIST |
| 1FNA100 |  | Layout/Dig UG Plumbing - B1 AB | 3d | 2020-11-09 A | 2020-11-16 A | 1FNC100, 1FNC110 | 100% |  | 2020-11-13 | 2020-11-18 |  |  | 5-DW | COST [76000 h] | 76,000 | 76,000 | 22-05-01 PLUMBING |  | PLUM | BLD1 | 0001 | CO | 4 | PLUMBING |
| 1FNA110 |  | UG Waste & Vent - B1 AB | 7d | 2020-11-09 A | 2020-11-16 A | 1FNA100 | 100% |  | 2020-11-19 | 2020-12-02 |  |  | 5-DW | COST [87000 h] | 87,000 | 87,000 | 22-05-01 PLUMBING |  | PLUM | BLD1 | 0001 | CO | 4 | PLUMBING |
| 1FNA130 |  | Dig Ftgs & GBs - B1 AB | 4d | 2021-01-18 A | 2021-02-10 A | 1FNC130, 1FN0200, 1FNA110, 1FNA120 | 100% |  | 2021-04-27 | 2021-04-30 |  |  | 5-DW | COST [46000 h] | 46,000 | 46,000 | 03-30-01 CAST IN PLACE CONCRETE / BELOW GRADE PROD | 30000 | CONC | BLD1 | 0001 | CO | 4 | CIP CONCRETE |
| 1FNA150 |  | Spread Ftg Rebar - B1 AB | 3d | 2021-02-10 A | 2021-02-12 A | 1FNA130 | 100% |  | 2021-04-13 | 2021-04-16 |  |  | 5-DW | COST [7000 h] | 7,000 | 7,000 | 03-20-01 REINFORCING STEEL |  | REBR | BLD1 | 0001 | CO | 4 | CONCRETE REINFORCE |
| 1FNA180 |  | Grade Beam Rebar - B1 AB | 5d | 2021-02-10 A | 2021-02-16 A | 1FNA140 SS+3d, 1FNA140 FF, 1FNA170 | 100% |  | 2021-04-22 | 2021-04-28 |  |  | 5-DW | COST [9000 h] | 9,000 | 9,000 | 03-20-01 REINFORCING STEEL |  | REBR | BLD1 | 0001 | CO | 4 | CONCRETE REINFORCE |
| 1FNA160 |  | Install Anchor Bolts - B1 AB | 2d | 2021-02-16 A | 2021-02-17 A | 1FNA150, 1FNC150, 133419-90 | 100% |  | 2021-04-19 | 2021-04-20 |  |  | 5-DW | COST [18000 h] | 18,000 | 18,000 | 03-30-01 CAST IN PLACE CONCRETE / BELOW GRADE PROD | 12000 | CONC | BLD1 | 0001 | CO | 4 | CIP CONCRETE |
| 1FNA170 |  | Place Spread Ftgs - B1 AB | 1d | 2021-02-22 A | 2021-02-22 A | 1FNA160 | 100% |  | 2021-04-21 | 2021-04-21 |  |  | 5-DW | COST [25000 h] | 25,000 | 25,000 | 03-30-01 CAST IN PLACE CONCRETE / BELOW GRADE PROD | 16000 | CONC | BLD1 | 0001 | CO | 4 | CIP CONCRETE |
| 1FNA190 |  | Place Grade Beams - B1 AB | 2d | 2021-02-22 A | 2021-02-22 A | 1FNA180 | 100% |  | 2021-04-29 | 2021-04-30 |  |  | 5-DW | COST [25000 h] | 25,000 | 25,000 | 03-30-01 CAST IN PLACE CONCRETE / BELOW GRADE PROD | 16000 | CONC | BLD1 | 0001 | CO | 4 | CIP CONCRETE |
| 1FNA140 |  | Form Grade Beams - B1 AB | 5d | 2021-02-23 A | 2021-03-03 A | 1FNA130, 1FNC170 | 100% |  | 2021-04-13 | 2021-04-20 |  |  | 5-DW | COST [23000 h] | 23,000 | 23,000 | 03-30-01 CAST IN PLACE CONCRETE / BELOW GRADE PROD | 15000 | CONC | BLD1 | 0001 | CO | 4 | CIP CONCRETE |
| 1FNA200 |  | Cure Grade Beams - B1 AB | 3d | 2021-02-23 A | 2021-04-09 A | 1FNA190 | 100% |  | 2021-05-01 | 2021-05-03 |  |  | 7-D | COST [1100 h] | 1,100 | 1,100 | 03-30-01 CAST IN PLACE CONCRETE / BELOW GRADE PROD | 1000 | CONC | BLD1 | 0001 | CO | 4 | CIP CONCRETE |
| 1FNA210 |  | Strip Grade Beams - B1 AB | 4d | 2021-02-25 A | 2021-04-12 A | 1FNA200 | 100% |  | 2021-05-04 | 2021-05-07 |  |  | 5-DW | COST [8000 h] | 8,000 | 8,000 | 03-30-01 CAST IN PLACE CONCRETE / BELOW GRADE PROD | 7000 | CONC | BLD1 | 0001 | CO | 4 | CIP CONCRETE |
|  | 5 | **Slab on Grade** |  | 2020-11-18 | 2021-07-02 |  |  |  |  |  |  |  |  |  |  |  |  |  |  |  |  |  |  |  |
|  | 1 | **Area E (1-S105)** |  | 2020-12-01 | 2021-07-02 |  |  |  |  |  |  |  |  |  |  |  |  |  |  |  |  |  |  |  |
| 1SGE110 |  | Underslab Shallow Elec - B1 E | 10d | 2020-12-01 A | 2021-03-09 A | 1SGE100 | 100% |  | 2021-04-13 | 2021-04-27 |  |  | 5-DW | COST [69200 h] | 69,200 | 69,200 | 26-05-01 BUILDING ELECTRICAL | 60428 | ELEC | BLD1 | 0001 | CO | 4 | U/G ELECTRICAL DIST |
| 1SGE100 |  | Grade Pad/Rem Spoils - B1 E | 3d | 2021-01-19 A | 2021-04-02 A | 1FNE220 | 100% |  | 2021-04-16 | 2021-04-20 |  |  | 5-DW | COST [20600 h] | 20,600 | 20,600 | 03-30-01 CAST IN PLACE CONCRETE / BELOW GRADE PROD | 18000 | CONC | BLD1 | 0001 | CO | 4 | CIP CONCRETE |
| 1SGE130 |  | Vapor Barrier - B1 E | 2d | 2021-03-31 A | 2021-04-06 A | 1SGE110, 1SGE120 | 100% |  | 2021-04-23 | 2021-04-26 |  |  | 5-DW | COST [28600 h] | 28,600 | 28,600 | 03-30-01 CAST IN PLACE CONCRETE / BELOW GRADE PROD | 25000 | CONC | BLD1 | 0001 | CO | 4 | CIP CONCRETE |
| 1SGE120 |  | Set 6" Base - B1 E | 5d | 2021-04-03 A | 2021-04-06 A | 1SGE100, 1SGE110, 1SGC110 FF | 100% |  | 2021-04-13 | 2021-04-20 |  |  | 5-DW | COST [40100 h] | 40,100 | 40,100 | 03-30-01 CAST IN PLACE CONCRETE / BELOW GRADE PROD | 35000 | CONC | BLD1 | 0001 | CO | 4 | CIP CONCRETE |
| 1SGE140 |  | Slab Rebar - B1 E | 4d | 2021-04-08 A | 2021-04-12 A | 1SGE130 | 100% |  | 2021-04-23 | 2021-04-28 |  |  | 5-DW | COST [21800 h] | 21,800 | 21,800 | 03-20-01 REINFORCING STEEL |  | REBR | BLD1 | 0001 | CO | 4 | CONCRETE REINFORCE |
| 1SGE150 |  | Place Concrete Slab - B1 E | 1d | 2021-04-17 A | 2021-07-02 | 1SGE140 | 95% | 0d | 2021-04-29 | 2021-04-29 | 18d | 0d | 5-DW | COST [52700 h] | 52,700 | 50,065 | 03-30-01 CAST IN PLACE CONCRETE / BELOW GRADE PROD | 46000 | CONC | BLD1 | 0001 | CO | 4 | CIP CONCRETE |
| 1SGE160 |  | Cure Slab - B1 E | 7d | 2021-04-17 A | 2021-04-23 A | 1SGE150 | 100% |  | 2021-04-30 | 2021-05-06 |  |  | 7-D | COST [2300 h] | 2,300 | 2,300 | 03-30-01 CAST IN PLACE CONCRETE / BELOW GRADE PROD | 2000 | CONC | BLD1 | 0001 | CO | 4 | CIP CONCRETE |
|  | 2 | **Area C & D (1-S103 & 1-S104)** |  | 2020-11-18 | 2021-07-02 |  |  |  |  |  |  |  |  |  |  |  |  |  |  |  |  |  |  |  |
| 1SGC110 |  | Underslab Shallow Elec - B1 CD | 10d | 2020-11-18 A | 2021-03-02 A | 1SGC100, 1SGE110 | 100% |  | 2021-04-28 | 2021-05-11 |  |  | 5-DW | COST [76600 h] | 76,600 | 76,600 | 26-05-01 BUILDING ELECTRICAL | 66902 | ELEC | BLD1 | 0001 | CO | 4 | U/G ELECTRICAL DIST |
| 1SGC100 |  | Grade Pad/Rem Spoils - B1 CD | 3d | 2021-01-19 A | 2021-04-06 A | 1FNC210 | 100% |  | 2021-04-22 | 2021-04-26 |  |  | 5-DW | COST [22900 h] | 22,900 | 22,900 | 03-30-01 CAST IN PLACE CONCRETE / BELOW GRADE PROD | 20000 | CONC | BLD1 | 0001 | CO | 4 | CLEAR/GRUB/GRADING |
| 1SGC130 |  | Vapor Barrier - B1 CD | 3d | 2021-03-31 A | 2021-04-12 A | 1SGC110, 1SGC120 | 100% |  | 2021-05-04 | 2021-05-06 |  |  | 5-DW | COST [45800 h] | 45,800 | 45,800 | 03-30-01 CAST IN PLACE CONCRETE / BELOW GRADE PROD | 40000 | CONC | BLD1 | 0001 | CO | 4 | CIP CONCRETE |
| 1SGC120 |  | Set 6" Base - B1 CD | 7d | 2021-04-12 A | 2021-04-13 A | 1SGC100, 1SGE120, 1SGC110 | 100% |  | 2021-04-21 | 2021-04-29 |  |  | 5-DW | COST [51500 h] | 51,500 | 51,500 | 03-30-01 CAST IN PLACE CONCRETE / BELOW GRADE PROD | 45000 | CONC | BLD1 | 0001 | CO | 4 | CIP CONCRETE |
| 1SGC140 |  | Slab Rebar - B1 CD | 5d | 2021-04-14 A | 2021-04-19 A | 1SGC130 | 100% |  | 2021-05-05 | 2021-05-11 |  |  | 5-DW | COST [21800 h] | 21,800 | 21,800 | 03-20-01 REINFORCING STEEL |  | REBR | BLD1 | 0001 | CO | 4 | CONCRETE REINFORCE |
| 1SGC150 |  | Place Concrete Slab - B1 CD | 1d | 2021-04-30 A | 2021-07-02 | 1SGC140 | 95% | 0d | 2021-05-04 | 2021-05-04 | 20d | 0d | 5-DW | COST [97300 h] | 97,300 | 92,435 | 03-30-01 CAST IN PLACE CONCRETE / BELOW GRADE PROD | 85000 | CONC | BLD1 | 0001 | CO | 4 | CIP CONCRETE |
| 1SGC160 |  | Cure Slab - B1 CD | 7d | 2021-05-03 A | 2021-05-07 A | 1SGC150 | 100% |  | 2021-05-05 | 2021-05-11 |  |  | 7-D | COST [2300 h] | 2,300 | 2,300 | 03-30-01 CAST IN PLACE CONCRETE / BELOW GRADE PROD | 2000 | CONC | BLD1 | 0001 | CO | 4 | CIP CONCRETE |

Notes:
- 1FNA130: Delay Impacts: 2/5/2021-2/18/2021 - RFI-0125 Telecommunications Ductbank in Revised / Footing Depth

| ID | WBS | Activity | Duration | Start | Finish | Predecessors | Complete | Remaining | Planned start | Planned finish | Total float | Free float | Calendar | Resources | Cost | Actual cost | Specification | CS | RESP | AREA | BIDI | PHAS | CATW | FOW | WRKP | MODF | Sheet |
| --- | --- | --- | --- | --- | --- | --- | --- | --- | --- | --- | --- | --- | --- | --- | --- | --- | --- | --- | --- | --- | --- | --- | --- | --- | --- | --- | --- |
|  | 4 | **Area A & B (1-S101 & 1-S102)** |  | 2020-11-20 | 2021-07-02 |  |  |  |  |  |  |  |  |  |  |  |  |  |  |  |  |  |  |  |  |  |  |
| 1SGA110 |  | Underslab Shallow Elec - B1 AB | 10d | 2020-11-20 A | 2021-03-02 A | 1SGA100, 1SGC110 | 100% |  | 2021-06-02 | 2021-06-15 |  |  | 5-DW | COST [64300 h] | 64,300 | 64,300 | 26-05-01 BUILDING ELECTRICAL | 56112 | ELEC | BLD1 | 0001 | CO | 4 | U/G ELECTRICAL DIST |  |  |  |
| 1SGA100 |  | Grade Pad/Rem Spoils - B1 AB | 3d | 2021-01-19 A | 2021-04-08 A | 1FNA210 | 100% |  | 2021-05-28 | 2021-06-02 |  |  | 5-DW | COST [22900 h] | 22,900 | 22,900 | 03-30-01 CAST IN PLACE CONCRETE / BELOW GRADE PROD | 20000 | CONC | BLD1 | 0001 | CO | 4 | CLEAR/GRUB/GRADING |  |  |  |
| 1SGA130 |  | Vapor Barrier - B1 AB | 3d | 2021-03-31 A | 2021-04-12 A | 1SGA110, 1SGA120 | 100% |  | 2021-04-29 | 2021-05-03 |  |  | 5-DW | COST [45800 h] | 45,800 | 45,800 | 03-30-01 CAST IN PLACE CONCRETE / BELOW GRADE PROD | 40000 | CONC | BLD1 | 0001 | CO | 4 | CIP CONCRETE |  |  |  |
| 1SGA120 |  | Set 6" Base - B1 AB | 7d | 2021-04-12 A | 2021-04-12 A | 1SGA100, 1SGA110 | 100% |  | 2021-04-30 | 2021-05-10 |  |  | 5-DW | COST [51500 h] | 51,500 | 51,500 | 03-30-01 CAST IN PLACE CONCRETE / BELOW GRADE PROD | 45000 | CONC | BLD1 | 0001 | CO | 4 | CIP CONCRETE |  |  |  |
| 1SGA140 |  | Slab Rebar - B1 AB | 5d | 2021-04-20 A | 2021-04-23 A | 1SGA130 | 100% |  | 2021-05-14 | 2021-05-20 |  |  | 5-DW | COST [20600 h] | 20,600 | 20,600 | 03-20-01 REINFORCING STEEL |  | REBR | BLD1 | 0001 | CO | 4 | CONCRETE REINFORCE |  |  |  |
| 1SGA150 |  | Place Concrete Slab - B1 AB | 1d | 2021-04-30 A | 2021-07-02 | 1SGA140 | 95% | 0d | 2021-05-07 | 2021-05-07 | 2d | 0d | 5-DW | COST [97300 h] | 97,300 | 92,435 | 03-30-01 CAST IN PLACE CONCRETE / BELOW GRADE PROD | 85000 | CONC | BLD1 | 0001 | CO | 4 | CIP CONCRETE |  |  |  |
| 1SGA160 |  | Cure Slab - B1 AB | 7d | 2021-05-03 A | 2021-05-07 A | 1SGA150 | 100% |  | 2021-05-08 | 2021-05-14 |  |  | 7-D | COST [2300 h] | 2,300 | 2,300 | 03-30-01 CAST IN PLACE CONCRETE / BELOW GRADE PROD | 2000 | CONC | BLD1 | 0001 | CO | 4 | CIP CONCRETE |  |  |  |
|  | 2 | **Metal Building Structure & Exterior** |  | 2021-03-24 | 2022-03-04 |  |  |  |  |  |  |  |  |  |  |  |  |  |  |  |  |  |  |  |  |  |  |
|  | 1 | **Area E** |  | 2021-03-24 | 2021-10-18 |  |  |  |  |  |  |  |  |  |  |  |  |  |  |  |  |  |  |  |  |  |  |
| 1STE100 |  | Unload/Shakeout Mtl Bldg - B1 | 5d | 2021-03-24 A | 2021-05-07 A | PREP1260, 133419-12 | 100% |  | 2021-04-13 | 2021-04-20 |  |  | 5-DW | COST [1495600 h] | 1,495,600 | 1,495,600 | 13-34-01 METAL BUILDING SYSTEMS | 1305960.7 | PEMB | BLD1 | 0001 | CO | 4 | METAL BUILDING SYS |  |  |  |
| 1STE140 |  | Electrical in CMU Walls - B1 E | 25d | 2021-04-12 A | 2021-08-09 | 1STE110 | 10% | 25d | 2021-06-10 | 2021-07-19 | 30d | 29d | 5-DW | COST [55500 h] | 55,500 | 5,550 | 26-05-01 BUILDING ELECTRICAL | 48498 | ELEC | BLD1 | 0001 | CO | 4 | ROUGH ELECTRICAL |  |  |  |
| 1STE110 |  | Erect Metal Bldg Steel - B1 E | 13d | 2021-04-27 A | 2021-05-21 A | 1SGE160, 1SGC150, 133419-12, PREP1260, 1STE100, RFP02-140 | 100% |  | 2021-05-21 | 2021-06-09 |  |  | 5-DW | COST [130500 h] | 130,500 | 130,500 | 13-34-01 METAL BUILDING SYSTEMS | 113974.75 | PEMB | BLD1 | 0001 | CO | 4 | METAL BUILDING SYS | 015 |  |  |
| RFP02-140 |  | Addtl Field Erection Time | 5d | 2021-04-27 A | 2021-05-14 A | 1SGC150, PREP1260, 1STE100, 1SGE160 | 100% |  | 2021-05-14 | 2021-05-20 |  |  | 5-DW |  |  |  |  |  | PEMB | BLD1 | 0001 | CO | 4 | METAL BUILDING SYS |  | R00001 |  |
| 1STE180 |  | Mtl Panels/Air Barrier - B1 E | 7d | 2021-05-21 A | 2021-10-08 | 1STE120, 1STE160, 1STA110 | 25% | 7d | 2021-08-19 | 2021-08-27 | 1d | 0d | 5-DW | COST [119600 h] | 119,600 | 29,900 | 13-34-01 METAL BUILDING SYSTEMS | 104476.86 | PEMB | BLD1 | 0001 | CO | 4 | METAL BUILDING SYS | 012 |  |  |
| 1STE130 |  | Plumbing in CMU Walls - B1 E | 25d | 2021-06-11 A | 2021-09-03 | 1STE110, 042000-52 | 5% | 25d | 2021-06-29 | 2021-08-04 | 12d | 11d | 5-DW | COST [51200 h] | 51,200 | 2,560 | 22-05-01 PLUMBING |  | PLUM | BLD1 | 0001 | CO | 4 | PLUMBING |  |  |  |
| 1STE120 |  | Erect CMU Walls - B1 E | 35d | 2021-08-02 | 2021-09-23 | 1STE110, 1STE130 FF, 1STE140 FF, 1STE150 SS, 1STE150 FF, 083463-90, PREP1340, 042000-52 |  |  |  |  | 1d | 0d | 5-DW | COST [652000 h] | 652,000 |  | 04-20-01 MASONRY | 594305 | MASO | BLD1 | 0001 | CO | 4 | MASONRY | 009 |  |  |
| 1STE150 |  | Set HM Frames in CMU - B1 E | 5d | 2021-08-02 | 2021-08-06 | 1STE110, 083463-90 |  |  |  |  | 1d | 0d | 5-DW | COST [5700 h] | 5,700 |  | 04-20-01 MASONRY |  | MASO | BLD1 | 0001 | CO | 4 | MASONRY |  |  |  |
| 1STE160 |  | Insulation at CMU Perim - B1 E | 3d | 2021-09-24 | 2021-09-28 | 1STE120, PREP1440 |  |  |  |  | 1d | 0d | 5-DW | COST [1500 h] | 1,500 |  | 13-34-01 METAL BUILDING SYSTEMS |  | PEMB | BLD1 | 0001 | CO | 4 | WALL INSULATION |  |  |  |
| 1STE170 |  | Rigid Insulation - Sally Port | 3d | 2021-09-24 | 2021-09-28 | 1STE120 |  |  |  |  | 153d | 7d | 5-DW | COST [2900 h] | 2,900 |  | 07-20-01 BUILDING INSULATION |  | INSU | BLD1 | 0001 | CO | 4 | WALL INSULATION |  |  |  |
| 1STE190 |  | Erect 4" CMU - Sally Port | 5d | 2021-10-11 | 2021-10-18 | 1STE180, 1STE170 |  |  |  |  | 146d | 68d | 5-DW | COST [22900 h] | 22,900 |  | 04-20-01 MASONRY |  | MASO | BLD1 | 0001 | CO | 4 | MASONRY |  |  |  |
|  | 2 | **Areas C & D** |  | 2021-05-17 | 2021-10-07 |  |  |  |  |  |  |  |  |  |  |  |  |  |  |  |  |  |  |  |  |  |  |
| 1STC100 |  | Erect Metal Bldg Steel - B1 CD | 22d | 2021-05-17 A | 2021-07-02 | 1SGA150, 1STE110, 1SGC160 | 95% | 0d | 2021-06-02 | 2021-07-02 | 21d | 0d | 5-DW | COST [201200 h] | 201,200 | 191,140 | 13-34-01 METAL BUILDING SYSTEMS | 175711.08 | PEMB | BLD1 | 0001 | CO | 4 | METAL BUILDING SYS | 015 |  | 1-S202 |
| 1STC140 |  | Mtl Panels/Air Barrier - B1 CD | 11d | 2021-06-09 A | 2021-07-20 | 1STC100, 1STA100 FF | 45% | 11d | 2021-06-07 | 2021-06-22 | 21d | 0d | 5-DW | COST [161500 h] | 161,500 | 72,675 | 13-34-01 METAL BUILDING SYSTEMS | 141013.18 | PEMB | BLD1 | 0001 | CO | 4 | METAL BUILDING SYS |  |  |  |
| 1STC110 |  | Air Barrier Mockup - B1 | 7d | 2021-09-24 | 2021-10-04 | 1STC100, PREP1380 |  |  |  |  | 5d | 0d | 5-DW | COST |  |  | 13-34-01 METAL BUILDING SYSTEMS |  | PEMB | BLD1 | 0001 | CO | 4 | AIR BARRIER |  |  |  |
| 1STC120 |  | Set Windows in Mockup - B1 | 2d | 2021-10-01 | 2021-10-04 | 1STC110 FF, 084113-03, 088100-03, PREP1400 |  |  |  |  | 5d | 0d | 5-DW | COST [6200 h] | 6,200 |  | 08-41-01 STOREFRONTS, GLAZING |  | GLAZ | BLD1 | 0001 | CO | 4 | ALUM DOOR/FRAME/GLAZ |  |  |  |
| 1STC130 |  | Test Air Barrier Mockup - B1 | 1d | 2021-10-05 | 2021-10-05 | 1STC110, 1STC120 |  |  |  |  | 5d | 0d | 5-DW | COST [1100 h] | 1,100 |  | 02-10-13 AIR BARRIER TESTING |  | AIRB | BLD1 | 0001 | CO | 4 | AIR BARRIER |  |  |  |
| 1STC150 |  | GOV APPR Air Barrier Mockup | 2d | 2021-10-06 | 2021-10-07 | 1STC130 |  |  |  |  | 7d | 6d |  |  |  |  | 13-34-01 METAL BUILDING SYSTEMS |  | USAC | BLD1 | 0001 | CO | 5 | AIR BARRIER |  |  |  |

Notes:
- 1STE130: Activity Notes: 5/20/2021 - Materials delivered for plumbing rough in at CMU / walls

| ID | WBS | Activity | Duration | Start | Finish | Predecessors | Complete | Remaining | Planned start | Planned finish | Total float | Free float | Calendar | Resources | Cost | Actual cost | Specification | CS | Sheet | RESP | WRKP | AREA | BIDI | PHAS | CATW | FOW |
| --- | --- | --- | --- | --- | --- | --- | --- | --- | --- | --- | --- | --- | --- | --- | --- | --- | --- | --- | --- | --- | --- | --- | --- | --- | --- | --- |
|  | 3 | **Areas A & B** |  | 2021-05-17 | 2021-08-04 |  |  |  |  |  |  |  |  |  |  |  |  |  |  |  |  |  |  |  |  |  |
| 1STA100 |  | Erect Metal Bldg Steel - B1 AB | 19d | 2021-05-17 A | 2021-05-28 A | 1STC100, 1SGA160 | 100% |  | 2021-07-06 | 2021-08-02 |  |  | 5-DW | COST [179500 h] | 179,500 | 179,500 | 13-34-01 METAL BUILDING SYSTEMS | 156715.28 | 1-S201 | PEMB | 015 | BLD1 | 0001 | CO | 4 | METAL BUILDING SYS |
| 1STA110 |  | Mtl Panels/Air Barrier - B1 AB | 11d | 2021-06-09 A | 2021-08-04 | 1STA100, 1STC100, 1STC140 | 45% | 11d | 2021-06-23 | 2021-07-08 | 25d | 0d | 5-DW | COST [163100 h] | 163,100 | 73,395 | 13-34-01 METAL BUILDING SYSTEMS | 142417.39 |  | PEMB |  | BLD1 | 0001 | CO | 4 | METAL BUILDING SYS |
|  | 4 | **All Areas** |  | 2021-07-30 | 2022-03-04 |  |  |  |  |  |  |  |  |  |  |  |  |  |  |  |  |  |  |  |  |  |
| 1EX100 |  | Tube Daylight Devices - B1 RF | 15d | 2021-07-30 | 2021-08-20 | 1STA110 SS, 086200-21, PREP1420 |  |  |  |  | 47d | 46d | 5-DW | COST [17200 h] | 17,200 |  | 13-34-01 METAL BUILDING SYSTEMS | 15000 |  | PEMB |  | BLD1 | 0001 | CO | 4 | TUBULAR DAYLIGHTING |
| 1EX110 |  | Roof Top Mech Units - B1 RF | 10d | 2021-10-11 | 2021-10-26 | 1STA100, 1STA110, 1STC140, 1STE180 |  |  |  |  | 54d | 0d | 5-DW | COST [34400 h] | 34,400 |  | 23-05-01 HVAC | 30000 |  | HVAC | 002 | BLD1 | 0001 | CO | 4 | HVAC |
| 1EX120 |  | Gutter, Dwn Spout, Trim - B1 | 15d | 2021-10-11 | 2021-11-03 | 1STA110, 1STE180 |  |  |  |  | 15d | 0d | 5-DW | COST [32600 h] | 32,600 |  | 13-34-01 METAL BUILDING SYSTEMS | 28493.69 |  | PEMB |  | BLD1 | 0001 | CO | 4 | METAL BUILDING SYS |
| 1EX130 |  | Elec Connect Rf Top Units - B1 | 5d | 2021-10-27 | 2021-11-03 | 1EX110 |  |  |  |  | 54d | 53d | 5-DW | COST [69400 h] | 69,400 |  | 26-05-01 BUILDING ELECTRICAL | 60622 |  | ELEC |  | BLD1 | 0001 | CO | 4 | ROUGH ELECTRICAL |
| 1EX150 |  | Exterior HM Doors - B1 | 8d | 2021-11-04 | 2021-11-17 | 081113-31, 1EX120, PREP1660 |  |  |  |  | 58d | 0d | 5-DW | COST [88800 h] | 88,800 |  | 08-11-01 DOORS, FRAMES & HARDWARE |  |  | DOOR |  | BLD1 | 0001 | CO | 4 | DOORS AND FRAMES |
| 1EX160 |  | Lightning Protection - B1, B1A | 15d | 2021-11-04 | 2021-12-02 | 1EX120, 1RIC100, 1RIA100, 1RIE100, 264100-02, 1RIC110, 1RIA110, 1RIE110, 1AFI100 |  |  |  |  | 30d | 20d | 5-DW | COST [77200 h] | 77,200 |  | 26-05-01 BUILDING ELECTRICAL | 67451 |  | ELEC |  | BLD1 | 0001 | CO | 4 | LIGHTNING PROTECTION |
| 1EX140 |  | Alum Windows - B1 | 18d | 2021-11-17 | 2021-12-20 | 084113-21, 088100-21, 1EX120 |  |  |  |  | 26d | 0d | 5-DW | COST [126000 h] | 126,000 |  | 08-41-01 STOREFRONTS, GLAZING |  |  | GLAZ |  | BLD1 | 0001 | CO | 4 | ALUM DOOR/FRAME/GLAZ |
| 1EX170 |  | Exterior Door Hardware - B1 | 5d | 2021-11-18 | 2021-11-29 | 1EX150, 087100-21 |  |  |  |  | 58d | 57d | 5-DW | COST [74900 h] | 74,900 |  | 08-11-01 DOORS, FRAMES & HARDWARE |  |  | DOOR |  | BLD1 | 0001 | CO | 4 | DOORS AND FRAMES |
| 1EX190 |  | Exterior Painting - B1 | 5d | 2022-01-10 | 2022-01-17 | 1EX120, 099000-03, PREP1700, 1FIC130, 1FIA140, 1FIE730 |  |  |  |  | 98d | 0d | 5-DW | COST [8000 h] | 8,000 |  | 09-91-01 PAINTING & COATINGS |  |  | PAIN |  | BLD1 | 0001 | CO | 4 | PAINTING |
| 1EX180 |  | Alum Storefront Entrances - B1 | 20d | 2022-01-14 | 2022-02-16 | 1EX140, 087100-90, 1ENT270 |  |  |  |  | 15d | 0d | 5-DW | COST [171800 h] | 171,800 |  | 08-41-01 STOREFRONTS, GLAZING |  |  | GLAZ |  | BLD1 | 0001 | CO | 4 | ALUM DOOR/FRAME/GLAZ |
| 1EX200 |  | Ext Bldg Light Fixtures - B1 | 5d | 2022-01-19 | 2022-01-25 | 1EX190, 1RIC270, 1RIA300, 1RIE290 |  |  |  |  | 98d | 69d | 5-DW | COST [13000 h] | 13,000 |  | 26-05-01 BUILDING ELECTRICAL | 12124 |  | ELEC |  | BLD1 | 0001 | CO | 4 | FINISH ELECTRICAL |
| 1EX210 |  | Sunshades Above Windows - B1 | 9d | 2022-02-18 | 2022-03-04 | 1EX140, 107000-09, PREP2120, 1EX180 |  |  |  |  | 76d | 47d | 5-DW | COST [43000 h] | 43,000 |  | 10-71-13 EXTERIOR SUN CONTROL DEVICES |  |  | GLAZ |  | BLD1 | 0001 | CO | 4 | EXTERIOR SUN CONTROL |
| 1EX220 |  | Wire Mesh Partitions - B1 | 5d | 2022-02-24 | 2022-03-02 | 1FIE820, PREP2280, 102213-09, 1STE190 |  |  |  |  | 78d | 49d | 5-DW | COST [29000 h] | 29,000 |  | 10-22-13 WIRE MESH PARTITIONS | 25321 |  | WIRE |  | BLD1 | 0001 | CO | 4 | WIRE MESH PARTITIONS |
| 1EX230 |  | OH Coiling Doors - Sally Port | 5d | 2022-02-24 | 2022-03-02 | 083323-21, PREP2260, 1FIE820, 1STE190 |  |  |  |  | 78d | 49d | 5-DW | COST [90000 h] | 90,000 |  | 08-33-23 OVERHEAD DOORS |  |  | OHDR |  | BLD1 | 0001 | CO | 4 | OH COILING DOORS |
|  | 4 | **Interior** |  | 2021-06-03 | 2022-05-13 |  |  |  |  |  |  |  |  |  |  |  |  |  |  |  |  |  |  |  |  |  |
|  | 2 | **Areas C & D (1-A103 & 1-A104)** |  | 2021-06-03 | 2022-03-16 |  |  |  |  |  |  |  |  |  |  |  |  |  |  |  |  |  |  |  |  |  |
|  | 1 | **Rough In** |  | 2021-06-03 | 2022-01-14 |  |  |  |  |  |  |  |  |  |  |  |  |  |  |  |  |  |  |  |  |  |
| 1RIC100 |  | Electrical Rough In OH - B1 CD | 20d | 2021-06-03 A | 2021-08-25 | 1STC140 SS+5d, 260000-02 | 35% | 13d | 2021-07-08 | 2021-08-04 | 79d | 46d |  | COST [109700 h] | 109,700 | 38,395 | 26-05-01 BUILDING ELECTRICAL | 95822 |  | ELEC |  | BLD1 | 0001 | CO | 5 | ROUGH ELECTRICAL |
| 1RIC110 |  | Fire Alarm Rough In OH - B1 CD | 20d | 2021-06-03 A | 2021-07-07 | 1STC140 SS+5d | 85% | 3d | 2021-06-14 | 2021-07-12 | 114d | 81d |  | COST [75000 h] | 75,000 | 63,750 | 26-05-01 BUILDING ELECTRICAL | 65472 |  | ELEC |  | BLD1 | 0001 | CO | 5 | FIRE ALARM SYSTEM |
| 1RIC160 |  | Waste & Vent Rough In - B1 CD | 10d | 2021-06-11 A | 2021-08-03 | 1RIC120 SS+5d | 3% | 10d | 2021-07-21 | 2021-08-03 | 48d | 7d |  | COST [68300 h] | 68,300 | 2,049 | 22-05-01 PLUMBING |  |  | PLUM |  | BLD1 | 0001 | CO | 5 | PLUMBING |
| 1RIC120 |  | Layout Framing - B1 CD | 4d | 2021-06-21 A | 2021-07-21 | 1STC140, PREP1480 | 90% | 1d | 2021-07-23 | 2021-07-28 | 22d | 0d |  | COST [11300 h] | 11,300 | 10,170 | 09-29-01 FRAMING & DRYWALL | 7860 |  | FRAM | 002 | BLD1 | 0001 | CO | 5 | METAL STUD FRAMING |
| 1RIC130 |  | Fire Sprink Rough In - B1 CD | 10d | 2021-06-23 A | 2021-07-27 | 1RIC120 SS, 211313-12, PREP1500 | 50% | 5d | 2021-07-23 | 2021-08-05 | 33d | 6d |  | COST [57300 h] | 57,300 | 28,650 | 21-13-13 FIRE SPRINKLER SYSTEMS |  |  | FIRE |  | BLD1 | 0001 | CO | 5 | WET PIPE SPRINKLER |
| 1RIC140 |  | Frame Walls - B1 CD | 10d | 2021-07-22 | 2021-08-04 | 1RIC120, 054000-02 |  |  |  |  | 22d | 0d |  | COST [256800 h] | 256,800 |  | 09-29-01 FRAMING & DRYWALL | 221229 |  | FRAM | 014 | BLD1 | 0001 | CO | 5 | METAL STUD FRAMING |
| 1RIC200 |  | Top Down Drywall - B1 CD | 8d | 2021-08-05 | 2021-08-16 | 1RIC140, PREP1540 |  |  |  |  | 59d | 3d |  | COST [39400 h] | 39,400 |  | 09-29-01 FRAMING & DRYWALL | 34424 |  | FRAM | 006 | BLD1 | 0001 | CO | 5 | GYPSUM BOARD |
| 1RIC210 |  | Set Interior HM Frames - B1 CD | 5d | 2021-08-05 | 2021-08-11 | 1RIC140, 081113-91 |  |  |  |  | 47d | 46d |  | COST [6900 h] | 6,900 |  | 09-29-01 FRAMING & DRYWALL |  |  | FRAM |  | BLD1 | 0001 | CO | 5 | METAL STUD FRAMING |
| 1RIC190 |  | Elec Rough In Walls - B1 CD | 20d | 2021-08-16 | 2021-09-13 | 1RIC140, 262000-02 |  |  |  |  | 15d | 0d |  | COST [82300 h] | 82,300 |  | 26-05-01 BUILDING ELECTRICAL | 71866 |  | ELEC |  | BLD1 | 0001 | CO | 5 | ROUGH ELECTRICAL |
| 1RIC220 |  | FA Rough In Walls - B1 CD | 20d | 2021-08-16 | 2021-09-13 | 1RIC140, 262000-02 |  |  |  |  | 15d | 0d |  | COST [66600 h] | 66,600 |  | 26-05-01 BUILDING ELECTRICAL | 58197 |  | ELEC |  | BLD1 | 0001 | CO | 5 | FIRE ALARM SYSTEM |
| 1RIC230 |  | Tel/Data Rough In Wall - B1 CD | 20d | 2021-08-16 | 2021-09-13 | 1RIC140, 262000-02 |  |  |  |  | 15d | 0d |  | COST [47200 h] | 47,200 |  | 26-05-01 BUILDING ELECTRICAL | 41182 |  | ELEC |  | BLD1 | 0001 | CO | 5 | COMMUNICATIONS (BLD) |
| 1RIC240 |  | ESS Rough In Walls - B1 CD | 20d | 2021-08-16 | 2021-09-13 | 1RIC140, 262000-02 |  |  |  |  | 15d | 0d |  | COST [56400 h] | 56,400 |  | 26-05-01 BUILDING ELECTRICAL | 49225 |  | ELEC |  | BLD1 | 0001 | CO | 5 | ELECTRONIC SECURITY |
| 1RIC180 |  | Water & Gas Rough In - B1 CD | 15d | 2021-08-23 | 2021-09-13 | 1RIC140, 231125-02 |  |  |  |  | 15d | 0d |  | COST [79600 h] | 79,600 |  | 22-05-01 PLUMBING |  |  | PLUM |  | BLD1 | 0001 | CO | 5 | PLUMBING |
| 1RIC150 |  | HVAC Hangers - B1 CD | 5d | 2021-08-31 | 2021-09-07 | 1RIC120, PREP1520, 230000-02 |  |  |  |  | 42d | 0d |  | COST [19700 h] | 19,700 |  | 23-05-01 HVAC | 11200 |  | HVAC | 005 | BLD1 | 0001 | CO | 5 | HVAC |
| 1RIC170 |  | OH Mech Units - B1 CD | 5d | 2021-09-14 | 2021-09-20 | 1RIC150, 230000-22 |  |  |  |  | 41d | 0d |  | COST [18100 h] | 18,100 |  | 23-05-01 HVAC | 13800 |  | HVAC | 005 | BLD1 | 0001 | CO | 5 | HVAC |
| 1RIC260 |  | Insulate Plumbing - B1 CD | 5d | 2021-09-14 | 2021-09-20 | 1RIC180, 220719-02 |  |  |  |  | 15d | 14d |  | COST [5700 h] | 5,700 |  | 22-05-01 PLUMBING |  |  | PLUM |  | BLD1 | 0001 | CO | 5 | PLUMBING |
| 1RIC250 |  | Ductwork & Accessories - B1 CD | 30d | 2021-09-21 | 2021-11-01 | 1RIC200, 1RIC170 |  |  |  |  | 41d | 0d |  | COST [99900 h] | 99,900 |  | 23-05-01 HVAC | 87200 |  | HVAC | 005 | BLD1 | 0001 | CO | 5 | HVAC |
| 1RIC270 |  | Power & Lighting Wire - B1 CD | 10d | 2021-11-01 | 2021-11-15 | 1RIC100, 260519-02, 1FIC110, 1RIC110 |  |  |  |  | 33d | 0d |  | COST [41200 h] | 41,200 |  | 26-05-01 BUILDING ELECTRICAL | 35933 |  | ELEC |  | BLD1 | 0001 | CO | 5 | ROUGH ELECTRICAL |
| 1RIC280 |  | Hydronic Piping - B1 CD | 15d | 2021-11-02 | 2021-11-23 | 1RIC250, 230515-02, 236426-12 |  |  |  |  | 41d | 0d |  | COST [216100 h] | 216,100 |  | 23-05-01 HVAC | 188727 |  | HVAC | 006 | BLD1 | 0001 | CO | 5 | HVAC |
| 1RIC283 |  | Perform DALT - B1 CD | 2d | 2021-11-02 | 2021-11-03 | 1RIC250, 230593-23 |  |  |  |  | 53d | 0d |  | COST [5000 h] | 5,000 |  | 23-05-93 TEST, ADJUST & BALANCING |  |  | TABA |  | BLD1 | 0001 | CO | 6 | TAB |
| 1RIC286 |  | Submit DALT Report - B1 CD | 2d | 2021-11-04 | 2021-11-05 | 1RIC283 |  |  |  |  | 53d | 0d |  |  |  |  |  |  |  | TABA |  | BLD1 | 0001 | CO | 6 | TAB |
| 1RIC288 |  | GOV APPR Dalt Report - B1 CD | 5d | 2021-11-08 | 2021-11-15 | 1RIC286 |  |  |  |  | 53d | 0d |  |  |  |  |  |  |  | USAC |  | BLD1 | 0001 | CO | 6 | TAB |
| 1RIC290 |  | Insulate Ductwork - B1 CD | 8d | 2021-11-16 | 2021-11-29 | 1RIC250, PREP1720, 1RIC286, 1RIC288 |  |  |  |  | 53d | 22d |  | COST [34400 h] | 34,400 |  | 23-05-01 HVAC | 30000 |  | HVAC | 002 | BLD1 | 0001 | CO | 5 | MECH SYS INSULATION |
| 1RIC300 |  | Elec Connect OH Units - B1 CD | 5d | 2021-11-16 | 2021-11-22 | 1RIC250, 1RIC100, 1RIC270, 1RIC110 |  |  |  |  | 56d | 28d |  | COST [21900 h] | 21,900 |  | 26-05-01 BUILDING ELECTRICAL | 19164 |  | ELEC |  | BLD1 | 0001 | CO | 5 | ROUGH ELECTRICAL |
| 1RIC310 |  | Pull Fire Alarm Cable - B1 CD | 5d | 2021-11-23 | 2021-12-01 | 1RIC100, PREP1560, 1FIC120, 1RIC110 |  |  |  |  | 51d | 23d |  | COST [25000 h] | 25,000 |  | 26-05-01 BUILDING ELECTRICAL | 21824 |  | ELEC |  | BLD1 | 0001 | CO | 5 | FIRE ALARM SYSTEM |
| 1RIC320 |  | Insulate Hydronic Pipe - B1 CD | 5d | 2021-11-24 | 2021-12-02 | 1RIC280, PREP1720 |  |  |  |  | 50d | 0d |  | COST [204800 h] | 204,800 |  | 23-05-01 HVAC | 178794 |  | HVAC | 002 | BLD1 | 0001 | CO | 5 | MECH SYS INSULATION |
| 1RIC330 |  | Condensate to OH Units - B1 CD | 5d | 2021-11-24 | 2021-12-02 | 1RIC280 |  |  |  |  | 41d | 4d |  | COST [2900 h] | 2,900 |  | 23-05-01 HVAC |  |  | HVAC |  | BLD1 | 0001 | CO | 5 | HVAC |
| 1RIC340 |  | Frame Hardlids - B1 D | 3d | 2021-12-03 | 2021-12-07 | 1RIC320 |  |  |  |  | 69d | 0d |  | COST [4800 h] | 4,800 |  | 09-29-01 FRAMING & DRYWALL | 4196 |  | FRAM | 004 | BLD1 | 0001 | CO | 5 | METAL STUD FRAMING |
| 1RIC350 |  | Cable Trays - B1 CD | 8d | 2021-12-09 | 2021-12-20 | 1FIC130, PREP1900, 270528-12, 270528-90 |  |  |  |  | 28d | 0d |  | COST [38900 h] | 38,900 |  | 26-05-01 BUILDING ELECTRICAL | 33948 |  | ELEC |  | BLD1 | 0001 | CO | 5 | COMMUNICATIONS (BLD) |
| 1RIC360 |  | Communication Cable - B1 CD | 10d | 2021-12-21 | 2022-01-05 | 1RIC350, 275400-02, 272100-02 |  |  |  |  | 28d | 0d |  | COST [71400 h] | 71,400 |  | 26-05-01 BUILDING ELECTRICAL | 62329 |  | ELEC |  | BLD1 | 0001 | CO | 5 | COMMUNICATIONS (BLD) |
| 1RIC370 |  | Pull Security Cable - B1 CD | 10d | 2022-01-03 | 2022-01-14 | 1RIC350, 281005-12, PREP1960, 281005-90 |  |  |  |  | 74d | 0d |  | COST [104700 h] | 104,700 |  | 26-05-01 BUILDING ELECTRICAL | 91418 |  | ELEC |  | BLD1 | 0001 | CO | 5 | ELECTRONIC SECURITY |

Notes:
- 1RIC100: Activity Notes: RFI-0194 - Circuitry for Exit Signs

| ID | WBS | Activity | Duration | Start | Finish | Predecessors | Total float | Free float | Resources | Cost | Specification | RESP | AREA | BIDI | PHAS | CATW | FOW | CS | WRKP |
| --- | --- | --- | --- | --- | --- | --- | --- | --- | --- | --- | --- | --- | --- | --- | --- | --- | --- | --- | --- |
|  | 2 | **Finishes** |  | 2021-10-11 | 2022-03-16 |  |  |  |  |  |  |  |  |  |  |  |  |  |  |
| 1FIC100 |  | Insulation & Firestop - B1 CD | 5d | 2021-10-11 | 2021-10-15 | 1RIC160, 1RIC260, 1RIC190, PM1180, 1EX100 SS, 1RIC220, 1RIC230, 1RIC240 | 1d | 0d | COST [13700 h] | 13,700 | 07-20-01 BUILDING INSULATION | INSU | BLD1 | 0001 | CO | 5 | WALL INSULATION |  |  |
| 1FIC110 |  | Hang Drywall - B1 CD | 10d | 2021-10-18 | 2021-10-29 | 1FIC100, 1RIC210, 1STC150 | 1d | 0d | COST [223900 h] | 223,900 | 09-29-01 FRAMING & DRYWALL | FRAM | BLD1 | 0001 | CO | 5 | GYPSUM BOARD | 195618 | 012 |
| 1FIC120 |  | Tape & Finish Drywall - B1 CD | 15d | 2021-11-01 | 2021-11-22 | 1FIC110 | 1d | 0d | COST [107700 h] | 107,700 | 09-29-01 FRAMING & DRYWALL | FRAM | BLD1 | 0001 | CO | 5 | GYPSUM BOARD | 94012 | 008 |
| 1FIC130 |  | Prime & 1st Coat Walls - B1 CD | 10d | 2021-11-23 | 2021-12-08 | 1FIC120, 099000-03, PREP1700 | 1d | 0d | COST [17200 h] | 17,200 | 09-91-01 PAINTING & COATINGS | PAIN | BLD1 | 0001 | CO | 5 | PAINTING |  |  |
| 1FIC190 |  | Hang/Tape Gyp Hardlids - B1 D | 5d | 2021-12-08 | 2021-12-14 | 1RIC340 | 69d | 0d | COST [10200 h] | 10,200 | 09-29-01 FRAMING & DRYWALL | FRAM | BLD1 | 0001 | CO | 5 | GYPSUM BOARD | 8890 | 008 |
| 1FIC140 |  | Paint Exposed Struct - B1 CD | 10d | 2021-12-09 | 2021-12-22 | 1FIC130 | 51d | 23d | COST [17200 h] | 17,200 | 09-91-01 PAINTING & COATINGS | PAIN | BLD1 | 0001 | CO | 5 | PAINTING |  |  |
| 1FIC150 |  | Install Controls - B1 CD | 8d | 2021-12-09 | 2021-12-20 | 1FIC130, PREP1820, 230900-02 | 105d | 34d | COST [74400 h] | 74,400 | 23-09-01 DDC CONTROLS | CTRL | BLD1 | 0001 | CO | 5 | HVAC CONTROLS |  |  |
| 1FIC160 |  | Coil Counter Drs - Issue Area | 3d | 2021-12-09 | 2021-12-13 | 1FIC130, 083313-13, PREP1860 | 120d | 96d | COST [11500 h] | 11,500 | 08-33-23 OVERHEAD DOORS | OHDR | BLD1 | 0001 | CO | 5 | COILING COUNTER DOOR |  |  |
| 1FIC170 |  | Elec Finish & Trim - B1 CD | 15d | 2021-12-09 | 2021-12-30 | 1FIC130, 1RIC270 | 83d | 32d | COST [36000 h] | 36,000 | 26-05-01 BUILDING ELECTRICAL | ELEC | BLD1 | 0001 | CO | 5 | FINISH ELECTRICAL | 31426 |  |
| 1FIC180 |  | Ceiling Grid - Rooms - B1 CD | 7d | 2021-12-09 | 2021-12-17 | 1FIC130, 1RIC330, 095100-13, PREP1840 | 37d | 0d | COST [12700 h] | 12,700 | 09-51-01 ACOUSTICAL CEILINGS | ACOU | BLD1 | 0001 | CO | 5 | ACOUSTIC CEILINGS | 11099 | 002 |
| 1FIC200 |  | Paint Hardlids - B1 D | 3d | 2021-12-15 | 2021-12-17 | 1FIC190 | 69d | 0d | COST [5100 h] | 5,100 | 09-91-01 PAINTING & COATINGS | PAIN | BLD1 | 0001 | CO | 5 | PAINTING |  |  |
| 1FIC210 |  | Ceiling Grid Corridors - B1 CD | 5d | 2022-01-06 | 2022-01-12 | 1FIC130, 1RIC320, 1RIC290, 1RIC100, 1RIC300, 1RIC360, 1FIC180, 1RIC310, 1RIC110 | 28d | 0d | COST [12700 h] | 12,700 | 09-51-01 ACOUSTICAL CEILINGS | ACOU | BLD1 | 0001 | CO | 5 | ACOUSTIC CEILINGS | 11099 | 002 |
| 1FIC220 |  | Cut Fire Sprink Drops - B1 CD | 3d | 2022-01-06 | 2022-01-10 | 1RIC340, 1FIC210 SS | 92d | 21d | COST [17200 h] | 17,200 | 21-13-13 FIRE SPRINKLER SYSTEMS | FIRE | BLD1 | 0001 | CO | 5 | WET PIPE SPRINKLER |  |  |
| 1FIC230 |  | Install Light Fixtures - B1 CD | 10d | 2022-01-13 | 2022-01-26 | 1FIC210 SS+5d, 1RIC270, 260923-02, 265400-12, 265200-12, 265300-12, 265553-12, 265553-90, 265300-90, 265200-90, 265100-90 | 28d | 0d | COST [16000 h] | 16,000 | 26-05-01 BUILDING ELECTRICAL | ELEC | BLD1 | 0001 | CO | 5 | FINISH ELECTRICAL | 14258 |  |
| 1FIC240 |  | HVAC Registers/Grilles - B1 CD | 5d | 2022-01-13 | 2022-01-19 | 1FIC210 | 85d | 14d | COST [12000 h] | 12,000 | 23-05-01 HVAC | HVAC | BLD1 | 0001 | CO | 5 | HVAC | 10935 | 002 |
| 1FIC250 |  | Fire Alarm Devices - B1 CD | 10d | 2022-01-13 | 2022-01-26 | 1FIC210, 283164-12, 283164-90 | 74d | 61d | COST [19000 h] | 19,000 | 26-05-01 BUILDING ELECTRICAL | ELEC | BLD1 | 0001 | CO | 5 | FIRE ALARM SYSTEM | 17071 |  |
| 1FIC260 |  | Casework & Countertops - B1 CD | 5d | 2022-01-19 | 2022-01-25 | 1FIC180, 064116-32, 066116-32, 123600-09, PREP2140, 062000-32, 062000-90, 064116-90, 066116-90, 1FIA190 | 29d | 0d | COST [30000 h] | 30,000 | 06-40-01 CASEWORK / COUNTERTOPS | CASE | BLD1 | 0001 | CO | 5 | CASEWORK | 30127 | 003 |
| 1FIC290 |  | Vinyl Tile Flooring - B1 CD | 10d | 2022-01-26 | 2022-02-08 | 1FIC260, 1FIC210, 096500-13 | 51d | 0d | COST [29000 h] | 29,000 | 09-60-01 RESILIENT FLOORING | FLOO | BLD1 | 0001 | CO | 5 | RESILIENT FLOORING |  |  |
| 1FIC300 |  | Tile Backsplash Brkrm - B1 D | 5d | 2022-01-26 | 2022-02-01 | 1FIC260 | 61d | 10d | COST [8000 h] | 8,000 | 09-30-13 CERAMIC TILE | TILE | BLD1 | 0001 | CO | 5 | CERAMIC/QUARRY TILE |  |  |
| 1FIC310 |  | Telecom Finish & Trim - B1 CD | 5d | 2022-01-26 | 2022-02-01 | 1RIC360, 1FIC130, 1FIC260 | 61d | 10d | COST [100000 h] | 100,000 | 26-05-01 BUILDING ELECTRICAL | ELEC | BLD1 | 0001 | CO | 5 | COMMUNICATIONS (BLD) | 87296 |  |
| 1FIC270 |  | Carpet Tile - Bldg 1 - Area C | 5d | 2022-01-27 | 2022-02-02 | 1FIC140, 1FIC180, 1FIC230, 096800-13, PREP2060 | 28d | 0d | COST [28000 h] | 28,000 | 09-60-01 RESILIENT FLOORING | FLOO | BLD1 | 0001 | CO | 5 | CARPETING |  |  |
| 1FIC320 |  | Int Doors & Hardware - B1 CD | 8d | 2022-02-03 | 2022-02-14 | 1FIC700, PREP1660, 081400-23, 087100-21, 1FIC270 | 28d | 0d | COST [68000 h] | 68,000 | 08-11-01 DOORS, FRAMES & HARDWARE | DOOR | BLD1 | 0001 | CO | 5 | DOORS AND FRAMES |  |  |
| 1FIC350 |  | Wall/Corner Protection - B1 CD | 5d | 2022-02-09 | 2022-02-15 | 1FIC290, 102600-09, PREP2180 | 51d | 0d | COST [9000 h] | 9,000 | 10-26-01 WALL AND DOOR PROTECTION | PAIN | BLD1 | 0001 | CO | 5 | WALL & DOOR PROTECT |  |  |
| 1FIC360 |  | Seismic Joint Covers - B1 CD | 5d | 2022-02-09 | 2022-02-15 | 1FIC290 | 76d | 52d | COST [5000 h] | 5,000 | 07-60-01 SHEET METAL FLASHING / TRIM / FLASHING | SHTM | BLD1 | 0001 | CO | 5 |  |  |  |
| 1FIC370 |  | Drop Ceiling Tiles - B1 CD | 5d | 2022-02-09 | 2022-02-15 | 1FIC240, 1FIC150, 1FIC230, 1FIC220, 1FIC290 | 71d | 0d | COST [6000 h] | 6,000 | 09-51-01 ACOUSTICAL CEILINGS | ACOU | BLD1 | 0001 | CO | 5 | ACOUSTIC CEILINGS | 5550 | 002 |
| 1FIC330 |  | Seal Concrete Floors - B1 D | 3d | 2022-02-14 | 2022-02-16 | 1ELD140, 1MCD150 | 67d | 0d | COST [5000 h] | 5,000 | 09-63-43 QUARTZ FLOORING | PAIN | BLD1 | 0001 | CO | 5 | PAINTING |  |  |
| 1FIC340 |  | Access Ctrl / ESS Trim - B1 CD | 10d | 2022-02-15 | 2022-03-01 | 1FIC320 | 28d | 0d | COST [26000 h] | 26,000 | 26-05-01 BUILDING ELECTRICAL | ELEC | BLD1 | 0001 | CO | 5 | ELECTRONIC SECURITY | 22742 |  |
| 1FIC380 |  | Final Paint - B1 CD | 5d | 2022-02-16 | 2022-02-23 | 1FIC320, 1FIC350, 1FIC290, 1FIC170, 1FIC310, 1FIC300 | 51d | 0d | COST [8500 h] | 8,500 | 09-91-01 PAINTING & COATINGS | PAIN | BLD1 | 0001 | CO | 5 | PAINTING |  |  |
| 1FIC390 |  | Finish Fire Sprinklers - B1 CD | 5d | 2022-02-16 | 2022-02-23 | 1FIC370 | 71d | 47d | COST [6500 h] | 6,500 | 21-13-13 FIRE SPRINKLER SYSTEMS | FIRE | BLD1 | 0001 | CO | 5 | WET PIPE SPRINKLER |  |  |
| 1FIC280 |  | Rubber Floor (Fitness) - B1 D | 5d | 2022-02-17 | 2022-02-24 | 1FIC140, 1FIC230, 1EX180, 096566-13, PREP2100 | 60d | 4d | COST [27000 h] | 27,000 | 09-60-01 RESILIENT FLOORING | FLOO | BLD1 | 0001 | CO | 5 | RESILIENT FLOORING |  |  |
| 1FIC400 |  | Resilient Base - B1 CD | 5d | 2022-02-24 | 2022-03-02 | 1FIC270, 1FIC290, 1FIC380 | 51d | 0d | COST [25000 h] | 25,000 | 09-60-01 RESILIENT FLOORING | FLOO | BLD1 | 0001 | CO | 5 | RESILIENT FLOORING |  |  |
| 1FIC410 |  | Fitness Equipment - B1 D | 5d | 2022-03-03 | 2022-03-09 | 1FIC400, PREP2300, 1FIC280 | 56d | 0d | COST [80000 h] | 80,000 | 11-66-13 EXERCISE EQUIPMENT (CFCI) | FITN | BLD1 | 0001 | CO | 5 | EXERCISE EQUIPMENT |  |  |
| 1FIC420 |  | Fitness Mirrors - B1 D | 5d | 2022-03-10 | 2022-03-16 | 1FIC410 | 56d | 32d | COST [10000 h] | 10,000 | 08-41-01 STOREFRONTS, GLAZING | GLAZ | BLD1 | 0001 | CO | 5 | ALUM DOOR/FRAME/GLAZ | 10000 |  |

| ID | WBS | Activity | Duration | Start | Finish | Predecessors | Total float | Free float | Resources | Cost | Specification | RESP | AREA | BIDI | PHAS | CATW | FOW | CS | WRKP | Sheet |
| --- | --- | --- | --- | --- | --- | --- | --- | --- | --- | --- | --- | --- | --- | --- | --- | --- | --- | --- | --- | --- |
|  | 1 | **Restrooms & Locker Rooms** |  | 2021-12-20 | 2022-03-11 |  |  |  |  |  |  |  |  |  |  |  |  |  |  |  |
| 1FIC700 |  | Quarts Floor Locker Rms - B1 D | 10d | 2021-12-20 | 2022-01-04 | 1FIC180, 096726-03, PREP1920 | 49d | 0d | COST [67400 h] | 67,400 | 09-63-43 QUARTZ FLOORING | PAIN | BLD1 | 0001 | CO | 5 | QUARTZ FLOORING |  |  |  |
| 1FIC710 |  | Float/Waterprf Showers - B1 D | 5d | 2021-12-20 | 2021-12-27 | 1FIC200, 1FIC130, PREP1940, 093010-13 | 69d | 0d | COST [10300 h] | 10,300 | 09-30-13 CERAMIC TILE | TILE | BLD1 | 0001 | CO | 5 | CERAMIC/QUARRY TILE |  |  |  |
| 1FIC720 |  | Porcelain Wall Tile - B1 D | 10d | 2021-12-28 | 2022-01-11 | 1FIC710 | 69d | 0d | COST [18200 h] | 18,200 | 09-30-13 CERAMIC TILE | TILE | BLD1 | 0001 | CO | 5 | CERAMIC/QUARRY TILE |  |  |  |
| 1FIC730 |  | Install Lockers - B1 D | 15d | 2022-01-05 | 2022-01-25 | 1FIC700, 105113-09, PREP1980 | 81d | 0d | COST [400800 h] | 400,800 | 10-51-01 METAL LOCKERS | LCKR | BLD1 | 0001 | CO | 5 | METAL LOCKERS |  |  |  |
| 1FIC740 |  | Porcelain Floor Tile - B1 D | 10d | 2022-01-12 | 2022-01-25 | 1FIC720 | 69d | 10d | COST [18000 h] | 18,000 | 09-30-13 CERAMIC TILE | TILE | BLD1 | 0001 | CO | 5 | CERAMIC/QUARRY TILE |  |  |  |
| 1FIC750 |  | Elec Finish at Lockers - B1 D | 10d | 2022-01-26 | 2022-02-08 | 1FIC730 | 81d | 57d | COST [5500 h] | 5,500 | 26-05-01 BUILDING ELECTRICAL | ELEC | BLD1 | 0001 | CO | 5 | FINISH ELECTRICAL | 5020 |  |  |
| 1FIC760 |  | Countertop - Restrooms - B1 CD | 1d | 2022-02-09 | 2022-02-09 | 1FIC740, 1FIA710 | 59d | 0d | COST [6000 h] | 6,000 | 06-40-01 CASEWORK / COUNTERTOPS | CASE | BLD1 | 0001 | CO | 5 | CASEWORK | 5250 | 003 |  |
| 1FIC770 |  | Plumbing Fixtures - B1 CD | 8d | 2022-02-10 | 2022-02-22 | 1FIC760, 220000-09, PREP2200 | 59d | 0d | COST [20000 h] | 20,000 | 22-05-01 PLUMBING | PLUM | BLD1 | 0001 | CO | 5 | FINISH PLUMBING |  |  |  |
| 1FIC780 |  | Toilet Partitions - B1 CD | 8d | 2022-02-23 | 2022-03-04 | 1FIC770, PREP2240, 101453-09 | 59d | 0d | COST [10000 h] | 10,000 | 10-22-01 TOILET COMPARTMENTS & ACCESSORIES | TOIL | BLD1 | 0001 | CO | 5 | TOILET ACCESSORIES |  |  |  |
| 1FIC790 |  | Toilet Accessories - B1 CD | 5d | 2022-03-07 | 2022-03-11 | 1FIC780, 102813-09 | 59d | 35d | COST [10000 h] | 10,000 | 10-22-01 TOILET COMPARTMENTS & ACCESSORIES | TOIL | BLD1 | 0001 | CO | 5 | TOILET ACCESSORIES |  |  |  |
|  | 4 | **Electrical Room** |  | 2021-11-08 | 2022-01-25 |  |  |  |  |  |  |  |  |  |  |  |  |  |  |  |
| 1ELD100 |  | Paint Electrical Rooms - B1 D | 2d | 2021-11-08 | 2021-11-09 | 1FIC120 SS+5d, 099000-03 | 6d | 0d | COST [3400 h] | 3,400 | 09-91-01 PAINTING & COATINGS | PAIN | BLD1 | 0001 | CO | 5 | PAINTING |  |  |  |
| 1ELD110 |  | Set Electrical Panels - B1 D | 20d | 2021-11-10 | 2021-12-10 | 1ELD100, 262416-12, PREP1600, 262416-90 | 6d | 0d | COST [77400 h] | 77,400 | 26-05-01 BUILDING ELECTRICAL | ELEC | BLD1 | 0001 | CO | 5 | SET ELECTRICAL EQUIP | 67618 |  | 2/1-E402 |
| 1ELD120 |  | Set Transformers - B1 Rm 1161 | 5d | 2021-12-13 | 2021-12-17 | 1ELD110 | 6d | 0d | COST [29800 h] | 29,800 | 26-05-01 BUILDING ELECTRICAL | ELEC | BLD1 | 0001 | CO | 5 | SET ELECTRICAL EQUIP | 26007 |  | 2/1-E402 |
| 1ELD130 |  | Pull Feeders - B1 - Rm 1184 | 5d | 2021-12-20 | 2021-12-27 | 1ELD120, 1ELD110, 260519-02 | 6d | 0d | COST [71300 h] | 71,300 | 26-05-01 BUILDING ELECTRICAL | ELEC | BLD1 | 0001 | CO | 5 | SET ELECTRICAL EQUIP | 62271 |  | 2/1-E402 |
| 1ELD140 |  | Make Up Elec Panels - B1 D | 20d | 2021-12-28 | 2022-01-25 | 1ELD130, 1LVD180 FF, 1RIC270 | 6d | 5d | COST [11900 h] | 11,900 | 26-05-01 BUILDING ELECTRICAL | ELEC | BLD1 | 0001 | CO | 5 | SET ELECTRICAL EQUIP | 10403 |  | 2/1-E402 |
|  | 6 | **LV Rooms (Telecom / Security)** |  | 2021-11-23 | 2022-01-21 |  |  |  |  |  |  |  |  |  |  |  |  |  |  |  |
| 1LVD100 |  | Plywood Walls - LV Rms - B1 D | 3d | 2021-11-23 | 2021-11-29 | 1FIC120, 061000-02 | 17d | 0d | COST [700 h] | 700 | 06-10-01 ROUGH CARPENTY | ROUG | BLD1 | 0001 | CO | 5 | METAL STUD FRAMING |  |  |  |
| 1LVD110 |  | Paint Plywood - LV Rms - B1 D | 3d | 2021-11-30 | 2021-12-02 | 1LVD100 | 17d | 0d | COST [5100 h] | 5,100 | 09-91-01 PAINTING & COATINGS | PAIN | BLD1 | 0001 | CO | 5 | PAINTING |  |  |  |
| 1LVD120 |  | Anti-Static Flooring - B1 D | 5d | 2021-12-03 | 2021-12-09 | 1LVD110, 096238-12, PREP1880 | 22d | 0d | COST [23900 h] | 23,900 | 09-60-01 RESILIENT FLOORING | FLOO | BLD1 | 0001 | CO | 5 | STATIC CONTROL FLOOR |  |  |  |
| 1LVD130 |  | Cable Tray/Ladder LV Rm - B1 D | 10d | 2021-12-09 | 2021-12-22 | 1LVD110, PREP1900 | 13d | 0d | COST [6400 h] | 6,400 | 26-05-01 BUILDING ELECTRICAL | ELEC | BLD1 | 0001 | CO | 5 | COMMUNICATIONS (BLD) | 5565 |  |  |
| 1LVD140 |  | Set CRAC Units - LV Rms - B1 D | 2d | 2021-12-10 | 2021-12-13 | 1LVD110, 1LVD120, 230000-32 | 33d | 0d | COST [29600 h] | 29,600 | 23-05-01 HVAC | HVAC | BLD1 | 0001 | CO | 5 | HVAC | 25840 | 002 |  |
| 1LVD150 |  | Build Out CRAC Units - B1 D | 10d | 2021-12-14 | 2021-12-28 | 1LVD140 | 33d | 32d | COST [5200 h] | 5,200 | 23-05-01 HVAC | HVAC | BLD1 | 0001 | CO | 5 | HVAC | 4500 | 002 |  |
| 1LVD160 |  | Racks/Cabinets - LV Rms - B1 D | 10d | 2021-12-23 | 2022-01-07 | 1LVD130, 1LVD120 | 13d | 0d | COST [5800 h] | 5,800 | 26-05-01 BUILDING ELECTRICAL | ELEC | BLD1 | 0001 | CO | 5 | COMMUNICATIONS (BLD) | 5092 |  |  |
| 1LVD180 |  | UPS Equipment - LV Rms - B1 D | 5d | 2022-01-10 | 2022-01-14 | 1LVD160, PREP2000, 263353-12, 263353-90 | 13d | 7d | COST [2500 h] | 2,500 | 26-05-01 BUILDING ELECTRICAL | ELEC | BLD1 | 0001 | CO | 5 | UPS | 2226 |  | 1/1-E403 |
| 1LVD190 |  | Patch Panel/Termination - B1 D | 10d | 2022-01-10 | 2022-01-21 | 1LVD160 | 63d | 4d | COST [7800 h] | 7,800 | 26-05-01 BUILDING ELECTRICAL | ELEC | BLD1 | 0001 | CO | 5 | COMMUNICATIONS (BLD) | 6790 |  |  |
| 1LVD200 |  | Grounding - LV Rms - B1 D | 5d | 2022-01-10 | 2022-01-14 | 1LVD160, 280526-02 | 13d | 12d | COST [800 h] | 800 | 26-05-01 BUILDING ELECTRICAL | ELEC | BLD1 | 0001 | CO | 5 | ROUGH ELECTRICAL | 679 |  |  |
| 1LVD170 |  | ESS Panel Wiring/Makeup - B1 D | 5d | 2022-01-17 | 2022-01-21 | 1RIC370, 1LVD120 | 74d | 64d | COST [2700 h] | 2,700 | 26-05-01 BUILDING ELECTRICAL | ELEC | BLD1 | 0001 | CO | 5 | ELECTRONIC SECURITY | 2328 |  |  |

| ID | WBS | Activity | Duration | Start | Finish | Predecessors | Complete | Remaining | Planned start | Planned finish | Total float | Free float | Resources | Cost | Actual cost | Specification | CS | RESP | WRKP | AREA | BIDI | PHAS | CATW | FOW |
| --- | --- | --- | --- | --- | --- | --- | --- | --- | --- | --- | --- | --- | --- | --- | --- | --- | --- | --- | --- | --- | --- | --- | --- | --- |
|  | 3 | **Mechanical Room (1167)** |  | 2021-12-09 | 2022-02-11 |  |  |  |  |  |  |  |  |  |  |  |  |  |  |  |  |  |  |  |
| 1MCD100 |  | Build-Out AHU - B1 - Rm 1167 | 5d | 2021-12-09 | 2021-12-15 | 237313-12, 1FIC130 |  |  |  |  | 1d | 0d | COST [176600 h] | 176,600 |  | 23-05-01 HVAC | 154240 | HVAC | 005 | BLD1 | 0001 | CO | 5 | HVAC |
| 1MCD110 |  | Duct & Mech Piping - RM 1167 | 20d | 2021-12-16 | 2022-01-14 | 1FIC130, 1MCD100 |  |  |  |  | 1d | 0d | COST [12800 h] | 12,800 |  | 23-05-01 HVAC | 11200 | HVAC | 005 | BLD1 | 0001 | CO | 5 | HVAC |
| 1MCD120 |  | Install VFDs - B1 - Rm 1167 | 5d | 2022-01-17 | 2022-01-21 | 1MCD110, 262923-12 |  |  |  |  | 6d | 0d | COST [6000 h] | 6,000 |  | 23-05-01 HVAC | 5600 | HVAC | 002 | BLD1 | 0001 | CO | 5 | HVAC |
| 1MCD130 |  | Insulate Duct/Piping - Rm 1167 | 10d | 2022-01-17 | 2022-01-28 | 1MCD110 |  |  |  |  | 1d | 0d | COST [9000 h] | 9,000 |  | 23-05-01 HVAC | 8200 | HVAC | 004 | BLD1 | 0001 | CO | 5 | MECH SYS INSULATION |
| 1MCD140 |  | Elec Connect Mec Units-Rm 1167 | 10d | 2022-01-24 | 2022-02-04 | 1MCD120 |  |  |  |  | 6d | 5d | COST [19000 h] | 19,000 |  | 26-05-01 BUILDING ELECTRICAL | 16769 | ELEC |  | BLD1 | 0001 | CO | 5 | ROUGH ELECTRICAL |
| 1MCD150 |  | Install Controls - Rm 1167 | 10d | 2022-01-31 | 2022-02-11 | 1MCD130, 230900-02, PREP1820 |  |  |  |  | 1d | 0d | COST [50000 h] | 50,000 |  | 23-09-01 DDC CONTROLS |  | CTRL |  | BLD1 | 0001 | CO | 5 | HVAC CONTROLS |
|  | 3 | **Areas A & B (1-A101 & 1-A102)** |  | 2021-06-03 | 2022-03-16 |  |  |  |  |  |  |  |  |  |  |  |  |  |  |  |  |  |  |  |
|  | 1 | **Rough In** |  | 2021-06-03 | 2022-01-26 |  |  |  |  |  |  |  |  |  |  |  |  |  |  |  |  |  |  |  |
| 1RIA100 |  | Electrical Rough In OH - B1 AB | 20d | 2021-06-03 A | 2021-08-25 | 1STA110 SS+5d, 260000-02 | 35% | 13d | 2021-07-08 | 2021-08-04 | 79d | 49d | COST [97900 h] | 97,900 | 34,265 | 26-05-01 BUILDING ELECTRICAL | 85463 | ELEC |  | BLD1 | 0001 | CO | 5 | ROUGH ELECTRICAL |
| 1RIA110 |  | Fire Alarm Rough In OH - B1 AB | 20d | 2021-06-03 A | 2021-07-23 | 1STA110 SS+5d | 85% | 3d | 2021-06-30 | 2021-07-28 | 102d | 72d | COST [69400 h] | 69,400 | 58,990 | 26-05-01 BUILDING ELECTRICAL | 60561 | ELEC |  | BLD1 | 0001 | CO | 5 | FIRE ALARM SYSTEM |
| 1RIA120 |  | Layout Framing - B1 AB | 4d | 2021-06-21 A | 2021-08-05 | 1RIC120, 1STA110 | 95% | 1d | 2021-07-29 | 2021-08-03 | 27d | 0d | COST [11300 h] | 11,300 | 10,735 | 09-29-01 FRAMING & DRYWALL | 7860 | FRAM | 002 | BLD1 | 0001 | CO | 5 | METAL STUD FRAMING |
| 1RIA130 |  | Fire Sprink Rough In - B1 AB | 10d | 2021-06-21 A | 2021-08-11 | 1RIA120 SS, 1RIC130 | 50% | 5d | 2021-08-05 | 2021-08-18 | 27d | 0d | COST [57300 h] | 57,300 | 28,650 | 21-13-13 FIRE SPRINKLER SYSTEMS |  | FIRE |  | BLD1 | 0001 | CO | 5 | WET PIPE SPRINKLER |
| 1RIA140 |  | Frame Walls - B1 AB | 10d | 2021-08-06 | 2021-08-19 | 1RIA120, 1RIC140 |  |  |  |  | 31d | 0d | COST [226000 h] | 226,000 |  | 09-29-01 FRAMING & DRYWALL | 197319 | FRAM | 014 | BLD1 | 0001 | CO | 5 | METAL STUD FRAMING |
| 1RIA160 |  | Waste & Vent Rough In - B1 AB | 10d | 2021-08-13 | 2021-08-26 | 1RIC160, 1RIA140 SS+5d |  |  |  |  | 46d | 31d | COST [56900 h] | 56,900 |  | 22-05-01 PLUMBING |  | PLUM |  | BLD1 | 0001 | CO | 5 | PLUMBING |
| 1RIA190 |  | Top Down Drywall - B1 AB | 8d | 2021-08-20 | 2021-08-31 | 1RIA140, 1RIC200 |  |  |  |  | 56d | 14d | COST [41300 h] | 41,300 |  | 09-29-01 FRAMING & DRYWALL | 36890 | FRAM | 006 | BLD1 | 0001 | CO | 5 | GYPSUM BOARD |
| 1RIA200 |  | Set Interior HM Frames - B1 AB | 5d | 2021-08-20 | 2021-08-26 | 1RIA140 |  |  |  |  | 51d | 45d | COST [6200 h] | 6,200 |  | 09-29-01 FRAMING & DRYWALL |  | FRAM |  | BLD1 | 0001 | CO | 5 | METAL STUD FRAMING |
| 1RIA210 |  | Folding Partition Track - B1 B | 3d | 2021-08-20 | 2021-08-24 | 1RIA140, 102239-09, PREP1620 |  |  |  |  | 132d | 69d | COST [6600 h] | 6,600 |  | 10-22-16 FOLDING PANEL PATITIONS | 5800 | PART | 003 | BLD1 | 0001 | CO | 5 | FOLDING PANEL PART |
| 1RIA180 |  | Water & Gas Rough In - B1 AB | 15d | 2021-08-23 | 2021-09-13 | 1RIA140, 231125-02 |  |  |  |  | 30d | 0d | COST [68300 h] | 68,300 |  | 22-05-01 PLUMBING |  | PLUM |  | BLD1 | 0001 | CO | 5 | PLUMBING |
| 1RIA150 |  | HVAC Hangers - B1 AB | 5d | 2021-09-08 | 2021-09-14 | 1RIA120, 1RIC150 |  |  |  |  | 42d | 0d | COST [17900 h] | 17,900 |  | 23-05-01 HVAC | 10600 | HVAC | 002 | BLD1 | 0001 | CO | 5 | HVAC |
| 1RIA220 |  | Elec Rough In Walls - B1 AB | 20d | 2021-09-14 | 2021-10-11 | 1RIA140, 1RIC190, 262000-02 |  |  |  |  | 15d | 0d | COST [73400 h] | 73,400 |  | 26-05-01 BUILDING ELECTRICAL | 64097 | ELEC |  | BLD1 | 0001 | CO | 5 | ROUGH ELECTRICAL |
| 1RIA240 |  | FA Rough In Walls - B1 AB | 20d | 2021-09-14 | 2021-10-11 | 1RIA140, 262000-02, 1RIC220 |  |  |  |  | 15d | 0d | COST [61600 h] | 61,600 |  | 26-05-01 BUILDING ELECTRICAL | 53832 | ELEC |  | BLD1 | 0001 | CO | 5 | FIRE ALARM SYSTEM |
| 1RIA250 |  | Tel/Data Rough In Wall - B1 AB | 20d | 2021-09-14 | 2021-10-11 | 1RIA140, 262000-02, 1RIC230 |  |  |  |  | 15d | 0d | COST [51300 h] | 51,300 |  | 26-05-01 BUILDING ELECTRICAL | 44815 | ELEC |  | BLD1 | 0001 | CO | 5 | COMMUNICATIONS (BLD) |
| 1RIA260 |  | ESS Rough In Walls - B1 AB | 20d | 2021-09-14 | 2021-10-11 | 1RIA140, 262000-02, 1RIC240 |  |  |  |  | 15d | 0d | COST [52100 h] | 52,100 |  | 26-05-01 BUILDING ELECTRICAL | 45533 | ELEC |  | BLD1 | 0001 | CO | 5 | ELECTRONIC SECURITY |
| 1RIA270 |  | Insulate Plumbing - B1 AB | 5d | 2021-09-14 | 2021-09-20 | 1RIA180, 220719-02 |  |  |  |  | 30d | 15d | COST [5700 h] | 5,700 |  | 22-05-01 PLUMBING |  | PLUM |  | BLD1 | 0001 | CO | 5 | PLUMBING |
| 1RIA170 |  | OH Mech Units - B1 AB | 5d | 2021-09-15 | 2021-09-21 | 1RIA150, 230000-22 |  |  |  |  | 42d | 0d | COST [11700 h] | 11,700 |  | 23-05-01 HVAC | 10260 | HVAC | 005 | BLD1 | 0001 | CO | 5 | HVAC |
| 1RIA230 |  | Ductwork & Accessories - B1 AB | 25d | 2021-09-22 | 2021-10-26 | 1RIA190, 1RIA170 |  |  |  |  | 42d | 0d | COST [95300 h] | 95,300 |  | 23-05-01 HVAC | 83200 | HVAC | 004 | BLD1 | 0001 | CO | 5 | HVAC |
| 1RIA280 |  | Hydronic Piping - B1 AB | 15d | 2021-10-27 | 2021-11-17 | 1RIA230, 230515-02, 236426-12 |  |  |  |  | 42d | 0d | COST [106100 h] | 106,100 |  | 23-05-01 HVAC | 92610 | HVAC | 002 | BLD1 | 0001 | CO | 5 | HVAC |
| 1RIA283 |  | Perform DALT - B1 AB | 2d | 2021-10-27 | 2021-10-28 | 1RIA230, 230593-23 |  |  |  |  | 55d | 0d | COST [5000 h] | 5,000 |  | 23-05-93 TEST, ADJUST & BALANCING |  | TABA |  | BLD1 | 0001 | CO | 6 | TAB |
| 1RIA286 |  | Submit DALT Report - B1 AB | 2d | 2021-10-29 | 2021-11-01 | 1RIA283 |  |  |  |  | 55d | 0d |  |  |  |  |  | TABA |  | BLD1 | 0001 | CO | 6 | TAB |
| 1RIA288 |  | GOV APPR Dalt Report - B1 AB | 5d | 2021-11-02 | 2021-11-08 | 1RIA286 |  |  |  |  | 55d | 0d |  |  |  |  |  | USAC |  | BLD1 | 0001 | CO | 6 | TAB |
| 1RIA290 |  | Insulate Ductwork - B1 AB | 10d | 2021-11-09 | 2021-11-23 | 1RIA230, 1RIA286, 1RIA288 |  |  |  |  | 55d | 24d | COST [34400 h] | 34,400 |  | 23-05-01 HVAC | 30000 | HVAC | 002 | BLD1 | 0001 | CO | 5 | MECH SYS INSULATION |
| 1RIA300 |  | Power & Lighting Wire - B1 AB | 10d | 2021-11-16 | 2021-12-01 | 1RIA100, 260519-02, 1FIA120, 1RIA110 |  |  |  |  | 23d | 0d | COST [36700 h] | 36,700 |  | 26-05-01 BUILDING ELECTRICAL | 32048 | ELEC |  | BLD1 | 0001 | CO | 5 | ROUGH ELECTRICAL |
| 1RIA310 |  | Insulate Hydronic Pipe - B1 AB | 10d | 2021-11-18 | 2021-12-03 | 1RIA280 |  |  |  |  | 42d | 0d | COST [27500 h] | 27,500 |  | 23-05-01 HVAC | 24000 | HVAC | 002 | BLD1 | 0001 | CO | 5 | MECH SYS INSULATION |
| 1RIA320 |  | Elect Connect OH Units - B1 AB | 5d | 2021-12-02 | 2021-12-08 | 1RIA230, 1RIA100, 1RIA300, 1RIA110 |  |  |  |  | 61d | 33d | COST [19600 h] | 19,600 |  | 26-05-01 BUILDING ELECTRICAL | 17093 | ELEC |  | BLD1 | 0001 | CO | 5 | ROUGH ELECTRICAL |
| 1RIA330 |  | Frame Hardlids - B1 AB | 3d | 2021-12-06 | 2021-12-08 | 1RIA310, 1RIA210 |  |  |  |  | 63d | 0d | COST [4200 h] | 4,200 |  | 09-29-01 FRAMING & DRYWALL | 3690 | FRAM | 004 | BLD1 | 0001 | CO | 5 | METAL STUD FRAMING |
| 1RIA350 |  | Condensate to OH Units - B1 AB | 5d | 2021-12-06 | 2021-12-10 | 1RIA310 |  |  |  |  | 42d | 13d | COST [2900 h] | 2,900 |  | 23-05-01 HVAC |  | HVAC |  | BLD1 | 0001 | CO | 5 | HVAC |
| 1RIA340 |  | Pull Fire Alarm Wiring - B1 AB | 5d | 2021-12-16 | 2021-12-22 | 1RIA100, 1FIA130, 1RIA110 |  |  |  |  | 51d | 23d | COST [23100 h] | 23,100 |  | 26-05-01 BUILDING ELECTRICAL | 20187 | ELEC |  | BLD1 | 0001 | CO | 5 | FIRE ALARM SYSTEM |
| 1RIA360 |  | Cable Trays - B1 AB | 8d | 2022-01-03 | 2022-01-12 | 1FIA140 |  |  |  |  | 28d | 0d | COST [55500 h] | 55,500 |  | 26-05-01 BUILDING ELECTRICAL | 48498 | ELEC |  | BLD1 | 0001 | CO | 5 | COMMUNICATIONS (BLD) |
| 1RIA370 |  | Communication Cable - B1 AB | 10d | 2022-01-13 | 2022-01-26 | 1RIA360, 272100-02 |  |  |  |  | 28d | 0d | COST [77000 h] | 77,000 |  | 26-05-01 BUILDING ELECTRICAL | 67829 | ELEC |  | BLD1 | 0001 | CO | 5 | COMMUNICATIONS (BLD) |
| 1RIA380 |  | Security Cable - B1 AB | 10d | 2022-01-13 | 2022-01-26 | 1RIA360, 281005-12 |  |  |  |  | 61d | 0d | COST [96000 h] | 96,000 |  | 26-05-01 BUILDING ELECTRICAL | 84562 | ELEC |  | BLD1 | 0001 | CO | 5 | ELECTRONIC SECURITY |

Notes:
- 1RIA100: Activity Notes: RFI-0194 - Circuitry for Exit Signs

| ID | WBS | Activity | Duration | Start | Finish | Predecessors | Total float | Free float | Resources | Cost | Specification | CS | RESP | WRKP | AREA | BIDI | PHAS | CATW | FOW |
| --- | --- | --- | --- | --- | --- | --- | --- | --- | --- | --- | --- | --- | --- | --- | --- | --- | --- | --- | --- |
|  | 2 | **Finishes** |  | 2021-09-14 | 2022-03-16 |  |  |  |  |  |  |  |  |  |  |  |  |  |  |
| 1FIA100 |  | Bullet Resist Panels - Lobby | 5d | 2021-09-14 | 2021-09-20 | 1RIA180, 102641-09, PREP1640 | 35d | 29d | COST [45500 h] | 45,500 | 09-29-01 FRAMING & DRYWALL | 29760 | FRAM | 004 | BLD1 | 0001 | CO | 5 | BULLET RESISTANT PAN |
| 1FIA110 |  | Insulation & Firestop - B1 AB | 5d | 2021-10-12 | 2021-10-18 | 1RIA140, 1RIA160, 1RIA270, 1RIA220, 1EX100 SS, 1RIA240, 1RIA250, 1RIA260 | 15d | 9d | COST [13700 h] | 13,700 | 07-20-01 BUILDING INSULATION |  | INSU |  | BLD1 | 0001 | CO | 5 | WALL INSULATION |
| 1FIA120 |  | Hang Drywall - B1 AB | 10d | 2021-11-01 | 2021-11-15 | 1FIA110, 1RIA200, 1FIC110, 1FIA100 | 6d | 0d | COST [206800 h] | 206,800 | 09-29-01 FRAMING & DRYWALL | 180553 | FRAM | 012 | BLD1 | 0001 | CO | 5 | GYPSUM BOARD |
| 1FIA130 |  | Tape & Finish Drywall - B1 AB | 15d | 2021-11-23 | 2021-12-15 | 1FIA120, 1FIC120 | 1d | 0d | COST [109300 h] | 109,300 | 09-29-01 FRAMING & DRYWALL | 95480 | FRAM | 008 | BLD1 | 0001 | CO | 5 | GYPSUM BOARD |
| 1FIA150 |  | Hang/Tape Gyp Hardlids - B1 AB | 5d | 2021-12-09 | 2021-12-15 | 1RIA330 | 63d | 0d | COST [8700 h] | 8,700 | 09-29-01 FRAMING & DRYWALL | 7622 | FRAM | 008 | BLD1 | 0001 | CO | 5 | GYPSUM BOARD |
| 1FIA140 |  | Prime & 1st Coat Walls - B1 AB | 10d | 2021-12-16 | 2021-12-30 | 1FIA130 | 28d | 0d | COST [17200 h] | 17,200 | 09-91-01 PAINTING & COATINGS |  | PAIN |  | BLD1 | 0001 | CO | 5 | PAINTING |
| 1FIA160 |  | Paint Hardlids - B1 AB | 3d | 2021-12-16 | 2021-12-20 | 1FIA150 | 63d | 14d | COST [5100 h] | 5,100 | 09-91-01 PAINTING & COATINGS |  | PAIN |  | BLD1 | 0001 | CO | 5 | PAINTING |
| 1FIA170 |  | Paint Exposed Struct - B1 AB | 10d | 2022-01-03 | 2022-01-14 | 1FIA140 | 36d | 8d | COST [17200 h] | 17,200 | 09-91-01 PAINTING & COATINGS |  | PAIN |  | BLD1 | 0001 | CO | 5 | PAINTING |
| 1FIA180 |  | Install Controls - B1 AB | 10d | 2022-01-03 | 2022-01-14 | 1FIA140 | 93d | 25d | COST [74400 h] | 74,400 | 23-09-01 DDC CONTROLS |  | CTRL |  | BLD1 | 0001 | CO | 5 | HVAC CONTROLS |
| 1FIA190 |  | Ceiling Grid - Rooms - B1 AB | 7d | 2022-01-03 | 2022-01-11 | 1FIA140, 1RIA350, 1FIC180 | 29d | 0d | COST [30000 h] | 30,000 | 09-51-01 ACOUSTICAL CEILINGS | 27748 | ACOU | 002 | BLD1 | 0001 | CO | 5 | ACOUSTIC CEILINGS |
| 1FIA200 |  | Elec Finish & Trim - B1 AB | 10d | 2022-01-12 | 2022-01-25 | 1FIA140, 1RIA300, 1FIA190 | 66d | 25d | COST [35000 h] | 35,000 | 26-05-01 BUILDING ELECTRICAL | 30554 | ELEC |  | BLD1 | 0001 | CO | 5 | FINISH ELECTRICAL |
| 1FIA210 |  | Casework & Countertops - B1 AB | 5d | 2022-01-26 | 2022-02-01 | 1FIA190, 1FIC260 | 29d | 0d | COST [51000 h] | 51,000 | 06-40-01 CASEWORK / COUNTERTOPS | 44736 | CASE | 003 | BLD1 | 0001 | CO | 5 | CASEWORK |
| 1FIA220 |  | Ceiling Grid Corridors - B1 AB | 7d | 2022-01-27 | 2022-02-04 | 1FIA140, 1RIA310, 1RIA290, 1RIA100, 1RIA320, 1RIA370, 1RIA340, 1RIA110 | 28d | 0d | COST [30000 h] | 30,000 | 09-51-01 ACOUSTICAL CEILINGS | 27748 | ACOU | 002 | BLD1 | 0001 | CO | 5 | ACOUSTIC CEILINGS |
| 1FIA230 |  | Cut Fire Sprink Drops - B1 AB | 3d | 2022-01-27 | 2022-01-31 | 1RIA330, 1FIA220 SS | 82d | 14d | COST [17000 h] | 17,000 | 21-13-13 FIRE SPRINKLER SYSTEMS |  | FIRE |  | BLD1 | 0001 | CO | 5 | WET PIPE SPRINKLER |
| 1FIA240 |  | Install Light Fixtures - B1 AB | 10d | 2022-01-27 | 2022-02-09 | 1FIA220 SS, 1RIA300, 260923-02, 265400-12, 265200-12, 265300-12, 1FIA170, 265553-12, 265553-90, 265300-90, 265200-90, 265100-90 | 28d | 0d | COST [94000 h] | 94,000 | 26-05-01 BUILDING ELECTRICAL | 82446 | ELEC |  | BLD1 | 0001 | CO | 5 | FINISH ELECTRICAL |
| 1FIA250 |  | Tile Backsplash Brkrm - B1 AB | 5d | 2022-02-02 | 2022-02-08 | 1FIA210 | 56d | 15d | COST [8000 h] | 8,000 | 09-30-13 CERAMIC TILE |  | TILE |  | BLD1 | 0001 | CO | 5 | CERAMIC/QUARRY TILE |
| 1FIA260 |  | Telecom Finish & Trim - B1 AB | 8d | 2022-02-02 | 2022-02-11 | 1RIA370, 1FIA140, 1FIA210 | 53d | 12d | COST [15000 h] | 15,000 | 26-05-01 BUILDING ELECTRICAL | 13579 | ELEC |  | BLD1 | 0001 | CO | 5 | COMMUNICATIONS (BLD) |
| 1FIA270 |  | Acoustical Wall Panels - B1 B | 5d | 2022-02-02 | 2022-02-08 | 098420-02, 1FIA210 | 81d | 57d | COST [34000 h] | 34,000 | 09-83-13 ACOUSTIC WALL PANELS |  | ACWL |  | BLD1 | 0001 | CO | 5 |  |
| 1FIA280 |  | Vinyl Tile Flooring - B1 AB | 10d | 2022-02-07 | 2022-02-18 | 1FIA210, 1FIA220, 096500-13 | 41d | 0d | COST [29000 h] | 29,000 | 09-60-01 RESILIENT FLOORING |  | FLOO |  | BLD1 | 0001 | CO | 5 | RESILIENT FLOORING |
| 1FIA290 |  | HVAC Registers/Grilles - B1 AB | 8d | 2022-02-07 | 2022-02-16 | 1FIA220 | 70d | 2d | COST [9000 h] | 9,000 | 23-05-01 HVAC | 8270 | HVAC | 002 | BLD1 | 0001 | CO | 5 | HVAC |
| 1FIA300 |  | Fire Alarm Devices - B1 AB | 10d | 2022-02-07 | 2022-02-18 | 1FIA220, 283164-12 | 57d | 44d | COST [24000 h] | 24,000 | 26-05-01 BUILDING ELECTRICAL | 21364 | ELEC |  | BLD1 | 0001 | CO | 5 | FIRE ALARM SYSTEM |
| 1FIA310 |  | Access Floor Cmd & Ctrl - B1 B | 5d | 2022-02-07 | 2022-02-11 | 1FIA220, 096919-13, 1FN100, PREP2220 | 73d | 5d | COST [34000 h] | 34,000 | 09-69-19 STRINGLESS ACCESS FLOORING | 30398 | AFLR | 002 | BLD1 | 0001 | CO | 5 | ACCESS FLOORING |
| 1FIA330 |  | Carpet Tile - B1 AB | 5d | 2022-02-10 | 2022-02-16 | 1FIA210, 1FIA240, 096800-13 | 28d | 0d | COST [28000 h] | 28,000 | 09-60-01 RESILIENT FLOORING |  | FLOO |  | BLD1 | 0001 | CO | 5 | CARPETING |
| 1FIA320 |  | Porcelain Tile at Lobby - B1 A | 7d | 2022-02-17 | 2022-02-28 | 1FIA710, 1EX180 | 43d | 2d | COST [13000 h] | 13,000 | 09-30-13 CERAMIC TILE |  | TILE |  | BLD1 | 0001 | CO | 5 | CERAMIC/QUARRY TILE |
| 1FIA340 |  | Seal Concrete Floors - B1 AB | 5d | 2022-02-17 | 2022-02-24 | 1MCA160, 1ELB140, 1FIC330 | 67d | 0d | COST [5000 h] | 5,000 | 09-63-43 QUARTZ FLOORING |  | PAIN |  | BLD1 | 0001 | CO | 5 | PAINTING |
| 1FIA350 |  | Int Doors & Hardware - B1 AB | 8d | 2022-02-17 | 2022-03-01 | 1FIA330, 081400-23 | 28d | 0d | COST [65000 h] | 65,000 | 08-11-01 DOORS, FRAMES & HARDWARE |  | DOOR |  | BLD1 | 0001 | CO | 5 | DOORS AND FRAMES |
| 1FIA360 |  | Wall/Corner Protection - B1 AB | 7d | 2022-02-22 | 2022-03-02 | 1FIA280, 102600-09 | 41d | 0d | COST [9000 h] | 9,000 | 10-26-01 WALL AND DOOR PROTECTION |  | PAIN |  | BLD1 | 0001 | CO | 5 | WALL & DOOR PROTECT |
| 1FIA370 |  | Drop Ceiling Tiles - B1 AB | 5d | 2022-02-22 | 2022-02-28 | 1FIA290, 1FIA180, 1FIA240, 1FIA230, 1FIA310, 1FIA280, 1FN120 | 68d | 0d | COST [12000 h] | 12,000 | 09-51-01 ACOUSTICAL CEILINGS | 11098 | ACOU | 002 | BLD1 | 0001 | CO | 5 | ACOUSTIC CEILINGS |
| 1FIA380 |  | Folding Panel Partition - B1 B | 5d | 2022-02-22 | 2022-02-28 | 1FIA280, 102239-10 | 68d | 44d | COST [45000 h] | 45,000 | 10-22-16 FOLDING PANEL PATITIONS | 43580 | PART | 003 | BLD1 | 0001 | CO | 5 | FOLDING PANEL PART |
| 1FIA390 |  | Finish Fire Sprinklers - B1 AB | 5d | 2022-03-01 | 2022-03-07 | 1FIA370 | 68d | 55d | COST [6000 h] | 6,000 | 21-13-13 FIRE SPRINKLER SYSTEMS |  | FIRE |  | BLD1 | 0001 | CO | 5 | WET PIPE SPRINKLER |
| 1FIA400 |  | Access Ctrl / ESS Trim - B1 AB | 10d | 2022-03-02 | 2022-03-15 | 1FIA350, 1FIC340 | 28d | 18d | COST [16000 h] | 16,000 | 26-05-01 BUILDING ELECTRICAL | 16295 | ELEC |  | BLD1 | 0001 | CO | 5 | ELECTRONIC SECURITY |
| 1FIA410 |  | Final Paint - B1 AB | 5d | 2022-03-03 | 2022-03-09 | 1FIA350, 1FIA360, 1FIA280, 1FIA200, 1FIA260, 1FIA320, 1FIA250 | 41d | 0d | COST [8000 h] | 8,000 | 09-91-01 PAINTING & COATINGS |  | PAIN |  | BLD1 | 0001 | CO | 5 | PAINTING |
| 1FIA420 |  | Resilient Base - B1 AB | 5d | 2022-03-10 | 2022-03-16 | 1FIA330, 1FIA280, 1FIA410 | 41d | 0d | COST [25000 h] | 25,000 | 09-60-01 RESILIENT FLOORING |  | FLOO |  | BLD1 | 0001 | CO | 5 | RESILIENT FLOORING |

| ID | WBS | Activity | Duration | Start | Finish | Predecessors | Total float | Free float | Resources | Cost | Specification | RESP | AREA | BIDI | PHAS | CATW | FOW | CS | WRKP |
| --- | --- | --- | --- | --- | --- | --- | --- | --- | --- | --- | --- | --- | --- | --- | --- | --- | --- | --- | --- |
|  | 1 | **Restrooms** |  | 2022-01-12 | 2022-03-07 |  |  |  |  |  |  |  |  |  |  |  |  |  |  |
| 1FIA700 |  | Wall Tile - Restrooms - B1 AB | 10d | 2022-01-12 | 2022-01-25 | 1FIA140, 1FIA190, 1FIA160 | 49d | 0d | COST [22000 h] | 22,000 | 09-30-13 CERAMIC TILE | TILE | BLD1 | 0001 | CO | 5 | CERAMIC/QUARRY TILE |  |  |
| 1FIA710 |  | Flr Tile - Restrooms - B1 AB | 10d | 2022-01-26 | 2022-02-08 | 1FIA700 | 49d | 0d | COST [22000 h] | 22,000 | 09-30-13 CERAMIC TILE | TILE | BLD1 | 0001 | CO | 5 | CERAMIC/QUARRY TILE |  |  |
| 1FIA720 |  | Countertop - Restrooms - B1 AB | 1d | 2022-02-10 | 2022-02-10 | 1FIA710, 1FIC760 | 63d | 0d | COST [6000 h] | 6,000 | 06-40-01 CASEWORK / COUNTERTOPS | CASE | BLD1 | 0001 | CO | 5 | CASEWORK | 5250 | 003 |
| 1FIA730 |  | Plumbing Fixtures - B1 AB | 5d | 2022-02-11 | 2022-02-17 | 1FIA720, 220000-09, PREP2200 | 63d | 0d | COST [22000 h] | 22,000 | 22-05-01 PLUMBING | PLUM | BLD1 | 0001 | CO | 5 | FINISH PLUMBING |  |  |
| 1FIA740 |  | Toilet Partitions - B1 AB | 8d | 2022-02-18 | 2022-03-02 | 1FIA730 | 63d | 0d | COST [10000 h] | 10,000 | 10-22-01 TOILET COMPARTMENTS & ACCESSORIES | TOIL | BLD1 | 0001 | CO | 5 | TOILET ACCESSORIES |  |  |
| 1FIA750 |  | Toilet Accessories - B1 AB | 3d | 2022-03-03 | 2022-03-07 | 1FIA740 | 63d | 39d | COST [10000 h] | 10,000 | 10-22-01 TOILET COMPARTMENTS & ACCESSORIES | TOIL | BLD1 | 0001 | CO | 5 | TOILET ACCESSORIES |  |  |
|  | 5 | **Electrical Room** |  | 2021-12-02 | 2022-02-01 |  |  |  |  |  |  |  |  |  |  |  |  |  |  |
| 1ELB100 |  | Paint - Elec Rooms - B1 B | 2d | 2021-12-02 | 2021-12-03 | 1FIA130 SS+5d | 1d | 0d | COST [3400 h] | 3,400 | 09-91-01 PAINTING & COATINGS | PAIN | BLD1 | 0001 | CO | 5 | PAINTING |  |  |
| 1ELB110 |  | Set Electrical Panels - B1 B | 20d | 2021-12-06 | 2022-01-04 | 1ELB100, 262416-12, 262416-90 | 1d | 0d | COST [73500 h] | 73,500 | 26-05-01 BUILDING ELECTRICAL | ELEC | BLD1 | 0001 | CO | 5 | SET ELECTRICAL EQUIP | 64150 |  |
| 1ELB120 |  | Set Transformers - B1 B | 20d | 2021-12-06 | 2022-01-04 | 1ELB110 SS | 1d | 0d | COST [28300 h] | 28,300 | 26-05-01 BUILDING ELECTRICAL | ELEC | BLD1 | 0001 | CO | 5 | SET ELECTRICAL EQUIP | 24673 |  |
| 1ELB130 |  | Pull Feeders - B1 - Rm 1161 | 5d | 2022-01-05 | 2022-01-11 | 1ELB110, 260519-02 | 1d | 0d | COST [96000 h] | 96,000 | 26-05-01 BUILDING ELECTRICAL | ELEC | BLD1 | 0001 | CO | 5 | SET ELECTRICAL EQUIP | 85623 |  |
| 1ELB140 |  | Make Up Elec Panels - B1 B | 20d | 2022-01-05 | 2022-02-01 | 1ELB130 SS, 1RIA300, 1ELB120, 1LVB170 FF, 1ELB130 FF | 1d | 0d | COST [11000 h] | 11,000 | 26-05-01 BUILDING ELECTRICAL | ELEC | BLD1 | 0001 | CO | 5 | SET ELECTRICAL EQUIP | 9869 |  |
|  | 3 | **LV Rooms (Telecom / LAN / Security)** |  | 2021-12-02 | 2022-02-25 |  |  |  |  |  |  |  |  |  |  |  |  |  |  |
| 1LVB100 |  | Plywood Walls - LV Rms - B1 B | 2d | 2021-12-02 | 2021-12-03 | 1FIA130 SS+5d, 061000-02 | 9d | 0d | COST [700 h] | 700 | 06-10-01 ROUGH CARPENTY | ROUG | BLD1 | 0001 | CO | 5 | METAL STUD FRAMING |  |  |
| 1LVB110 |  | Paint - LV Rms - B1 B | 2d | 2021-12-06 | 2021-12-07 | 1LVB100 | 9d | 0d | COST [3400 h] | 3,400 | 09-91-01 PAINTING & COATINGS | PAIN | BLD1 | 0001 | CO | 5 | PAINTING |  |  |
| 1LVB120 |  | Cable Tray/Ladder LV Rm - B1 B | 10d | 2021-12-08 | 2021-12-21 | 1LVB110 | 9d | 0d | COST [6900 h] | 6,900 | 26-05-01 BUILDING ELECTRICAL | ELEC | BLD1 | 0001 | CO | 5 | COMMUNICATIONS (BLD) | 6056 |  |
| 1LVB130 |  | Anti-Static Flooring - B1 B | 5d | 2021-12-08 | 2021-12-14 | 1LVB110, 096238-12 | 14d | 0d | COST [23900 h] | 23,900 | 09-60-01 RESILIENT FLOORING | FLOO | BLD1 | 0001 | CO | 5 | STATIC CONTROL FLOOR |  |  |
| 1LVB140 |  | Set CRAC Units - LV Rms - B1 B | 2d | 2021-12-15 | 2021-12-16 | 1LVB110, 1LVB130, 230000-32 | 30d | 0d | COST [129200 h] | 129,200 | 23-05-01 HVAC | HVAC | BLD1 | 0001 | CO | 5 | HVAC | 112850 | 004 |
| 1LVB150 |  | Build Out CRAC Units - B1 B | 10d | 2021-12-17 | 2022-01-03 | 1LVB140 | 30d | 29d | COST [17800 h] | 17,800 | 23-05-01 HVAC | HVAC | BLD1 | 0001 | CO | 5 | HVAC | 15520 | 004 |
| 1LVB160 |  | Racks/Cabinets - LV Rms - B1 B | 15d | 2021-12-22 | 2022-01-13 | 1LVB120, 1LVB130 | 9d | 0d | COST [5800 h] | 5,800 | 26-05-01 BUILDING ELECTRICAL | ELEC | BLD1 | 0001 | CO | 5 | COMMUNICATIONS (BLD) | 5092 |  |
| 1LVB170 |  | UPS Equipment - LV Rms - B1 B | 5d | 2022-01-14 | 2022-01-20 | 1LVB160, 263353-12, 263353-90 | 9d | 8d | COST [2500 h] | 2,500 | 26-05-01 BUILDING ELECTRICAL | ELEC | BLD1 | 0001 | CO | 5 | UPS | 2422 |  |
| 1LVB180 |  | Patch Panel/Termination - B1 B | 10d | 2022-01-14 | 2022-01-27 | 1LVB160 | 50d | 0d | COST [7500 h] | 7,500 | 26-05-01 BUILDING ELECTRICAL | ELEC | BLD1 | 0001 | CO | 5 | COMMUNICATIONS (BLD) | 6790 |  |
| 1LVB190 |  | Grounding - LV Rms - B1 B | 5d | 2022-01-14 | 2022-01-20 | 1LVB160, 280526-02 | 9d | 8d | COST [800 h] | 800 | 26-05-01 BUILDING ELECTRICAL | ELEC | BLD1 | 0001 | CO | 5 | ROUGH ELECTRICAL | 679 |  |
| 1LVB200 |  | ESS Panel Wiring/Makeup - B1 B | 10d | 2022-01-27 | 2022-02-09 | 1RIA380, 1LVB130 | 61d | 51d | COST [2500 h] | 2,500 | 26-05-01 BUILDING ELECTRICAL | ELEC | BLD1 | 0001 | CO | 5 | ELECTRONIC SECURITY | 2328 |  |
| 1LVB210 |  | AT&T Install FO Lines & Equip | 20d | 2022-01-28 | 2022-02-25 | 1LVB160, ATT100, 1LVB180 | 50d | 40d |  |  | 26-05-01 BUILDING ELECTRICAL | ATT | BLD1 | 0001 | CO | 5 | COMMUNICATIONS (BLD) |  |  |

| ID | WBS | Activity | Duration | Start | Finish | Predecessors | Complete | Remaining | Planned start | Planned finish | Total float | Free float | Resources | Cost | Actual cost | Specification | RESP | AREA | BIDI | PHAS | CATW | FOW | CS | WRKP |
| --- | --- | --- | --- | --- | --- | --- | --- | --- | --- | --- | --- | --- | --- | --- | --- | --- | --- | --- | --- | --- | --- | --- | --- | --- |
|  | 4 | **Mechanical Room (1125)** |  | 2021-11-30 | 2022-01-25 |  |  |  |  |  |  |  |  |  |  |  |  |  |  |  |  |  |  |  |
| 1MCA100 |  | Paint Mech Rm 1125 - B1 A | 2d | 2021-11-30 | 2021-12-01 | 1FIA130 SS+3d |  |  |  |  | 14d | 0d | COST |  |  | 09-91-01 PAINTING & COATINGS | PAIN | BLD1 | 0001 | CO | 5 | PAINTING |  |  |
| 1MCA110 |  | AHUs in Mech Rm 1125 - B1 A | 5d | 2021-12-02 | 2021-12-08 | 237313-12, 1MCA100 |  |  |  |  | 14d | 0d | COST [297700 h] | 297,700 |  | 23-05-01 HVAC | HVAC | BLD1 | 0001 | CO | 5 | HVAC | 260000 | 006 |
| 1MCA120 |  | Duct & Mech Piping - Rm 1125 | 15d | 2021-12-09 | 2021-12-30 | 1MCA110 |  |  |  |  | 14d | 0d | COST [49900 h] | 49,900 |  | 23-05-01 HVAC | HVAC | BLD1 | 0001 | CO | 5 | HVAC | 43600 | 004 |
| 1MCA130 |  | Install VFDs - B1 - Rm 1125 | 3d | 2022-01-03 | 2022-01-05 | 1MCA120, 262923-12 |  |  |  |  | 21d | 0d | COST [6000 h] | 6,000 |  | 23-05-01 HVAC | HVAC | BLD1 | 0001 | CO | 5 | HVAC | 5450 | 002 |
| 1MCA140 |  | Insulate Duct/Piping - Rm 1125 | 7d | 2022-01-03 | 2022-01-11 | 1MCA120 |  |  |  |  | 14d | 0d | COST [28000 h] | 28,000 |  | 23-05-01 HVAC | HVAC | BLD1 | 0001 | CO | 5 | MECH SYS INSULATION | 25000 | 002 |
| 1MCA150 |  | Elec Connect Mec Units-Rm 1125 | 7d | 2022-01-06 | 2022-01-14 | 1MCA130 |  |  |  |  | 21d | 20d | COST [17000 h] | 17,000 |  | 26-05-01 BUILDING ELECTRICAL | ELEC | BLD1 | 0001 | CO | 5 | ROUGH ELECTRICAL | 14956 |  |
| 1MCA160 |  | Install Controls - Rm 1125 | 10d | 2022-01-12 | 2022-01-25 | 1MCA140 |  |  |  |  | 14d | 13d | COST [50000 h] | 50,000 |  | 23-09-01 DDC CONTROLS | CTRL | BLD1 | 0001 | CO | 5 | HVAC CONTROLS |  |  |
|  | 1 | **Area E (1-A105)** |  | 2021-06-03 | 2022-04-22 |  |  |  |  |  |  |  |  |  |  |  |  |  |  |  |  |  |  |  |
|  | 1 | **Rough In** |  | 2021-06-03 | 2022-02-02 |  |  |  |  |  |  |  |  |  |  |  |  |  |  |  |  |  |  |  |
| 1RIE100 |  | Electrical Rough In OH - B1 E | 20d | 2021-06-03 A | 2021-08-25 | 260000-02, 1STE110 | 35% | 13d | 2021-09-13 | 2021-10-08 | 88d | 49d | COST [62300 h] | 62,300 | 21,805 | 26-05-01 BUILDING ELECTRICAL | ELEC | BLD1 | 0001 | CO | 5 | ROUGH ELECTRICAL | 54385 |  |
| 1RIE110 |  | Fire Alarm Rough In OH - B1 E | 20d | 2021-06-03 A | 2021-07-08 | 1STE110 | 80% | 4d | 2021-09-13 | 2021-10-08 | 122d | 83d | COST [40300 h] | 40,300 | 32,240 | 26-05-01 BUILDING ELECTRICAL | ELEC | BLD1 | 0001 | CO | 5 | FIRE ALARM SYSTEM | 35209 |  |
| 1RIE140 |  | Fire Sprinkler Rough In - B1 E | 10d | 2021-08-12 | 2021-08-25 | 1RIA130, 211317-12 |  |  |  |  | 27d | 0d | COST [34400 h] | 34,400 |  | 21-13-13 FIRE SPRINKLER SYSTEMS | FIRE | BLD1 | 0001 | CO | 5 | WET PIPE SPRINKLER |  |  |
| 1RIE170 |  | Dry Pipe Sprink - Sally Port | 8d | 2021-08-26 | 2021-09-07 | 1RIE140, 211317-12, PREP1580 |  |  |  |  | 162d | 109d | COST [68700 h] | 68,700 |  | 21-13-13 FIRE SPRINKLER SYSTEMS | FIRE | BLD1 | 0001 | CO | 5 | DRY PIPE SPRINKLER |  |  |
| 1RIE160 |  | Frame Top of CMU Walls - B1 E | 10d | 2021-09-24 | 2021-10-07 | 1RIE140, 1STE120 |  |  |  |  | 7d | 0d | COST [46100 h] | 46,100 |  | 09-29-01 FRAMING & DRYWALL | FRAM | BLD1 | 0001 | CO | 5 | METAL STUD FRAMING | 40284 | 007 |
| 1RIE180 |  | Water & Gas Rough In - B1 E | 10d | 2021-10-08 | 2021-10-21 | 1RIE160, 231125-02 |  |  |  |  | 21d | 0d | COST [102400 h] | 102,400 |  | 22-05-01 PLUMBING | PLUM | BLD1 | 0001 | CO | 5 | PLUMBING |  |  |
| 1RIE190 |  | Top Down Drywall - B1 E | 8d | 2021-10-08 | 2021-10-19 | 1RIE160 |  |  |  |  | 7d | 3d | COST [12800 h] | 12,800 |  | 09-29-01 FRAMING & DRYWALL | FRAM | BLD1 | 0001 | CO | 5 | GYPSUM BOARD | 11160 | 003 |
| 1RIE120 |  | Waste & Vent Rough In - B1 E | 10d | 2021-10-11 | 2021-10-22 | 1STE180 |  |  |  |  | 25d | 4d | COST [136500 h] | 136,500 |  | 22-05-01 PLUMBING | PLUM | BLD1 | 0001 | CO | 5 | PLUMBING |  |  |
| 1RIE130 |  | HVAC Hangers - B1 E | 5d | 2021-10-11 | 2021-10-15 | 1STE180 |  |  |  |  | 4d | 0d | COST [12900 h] | 12,900 |  | 23-05-01 HVAC | HVAC | BLD1 | 0001 | CO | 5 | HVAC | 11250 | 005 |
| 1RIE220 |  | Elec Rough In Walls - B1 E | 10d | 2021-10-12 | 2021-10-25 | 1RIE160, 1RIA220, 262000-02 |  |  |  |  | 24d | 3d | COST [46700 h] | 46,700 |  | 26-05-01 BUILDING ELECTRICAL | ELEC | BLD1 | 0001 | CO | 5 | ROUGH ELECTRICAL | 40789 |  |
| 1RIE230 |  | FA Rough In Walls - B1 E | 10d | 2021-10-12 | 2021-10-25 | 1RIE160, 262000-02, 1RIA240 |  |  |  |  | 24d | 3d | COST [35700 h] | 35,700 |  | 26-05-01 BUILDING ELECTRICAL | ELEC | BLD1 | 0001 | CO | 5 | FIRE ALARM SYSTEM | 31208 |  |
| 1RIE240 |  | Tel/Data Rough In Walls - B1 E | 10d | 2021-10-12 | 2021-10-25 | 1RIE160, 262000-02, 1RIA250 |  |  |  |  | 24d | 3d | COST [38100 h] | 38,100 |  | 26-05-01 BUILDING ELECTRICAL | ELEC | BLD1 | 0001 | CO | 5 | COMMUNICATIONS (BLD) | 33227 |  |
| 1RIE250 |  | ESS Rough In Walls - B1 E | 10d | 2021-10-12 | 2021-10-25 | 1RIE160, 262000-02, 1RIA260 |  |  |  |  | 24d | 3d | COST [31000 h] | 31,000 |  | 26-05-01 BUILDING ELECTRICAL | ELEC | BLD1 | 0001 | CO | 5 | ELECTRONIC SECURITY | 27074 |  |
| 1RIE260 |  | Intercom Rough In - B1 E | 10d | 2021-10-12 | 2021-10-25 | 1RIE160, 1RIA220, 262000-02, 1RIA240, 1RIA250, 1RIA260 |  |  |  |  | 24d | 3d | COST [10900 h] | 10,900 |  | 26-05-01 BUILDING ELECTRICAL | ELEC | BLD1 | 0001 | CO | 5 | COMMUNICATIONS (BLD) | 9493 |  |
| 1RIE150 |  | OH Mech Units - B1 E | 5d | 2021-10-18 | 2021-10-22 | 1RIE130, 230000-22 |  |  |  |  | 4d | 0d | COST [8100 h] | 8,100 |  | 23-05-01 HVAC | HVAC | BLD1 | 0001 | CO | 5 | HVAC | 7040 | 005 |
| 1RIE210 |  | Insulate Plumbing Lines - B1 E | 5d | 2021-10-22 | 2021-10-28 | 1RIE180, 220719-02 |  |  |  |  | 21d | 0d | COST [5700 h] | 5,700 |  | 22-05-01 PLUMBING | PLUM | BLD1 | 0001 | CO | 5 | PLUMBING |  |  |
| 1RIE200 |  | Ductwork & Accessories - B1 E | 22d | 2021-10-25 | 2021-11-24 | 1RIE190, 1RIE150 |  |  |  |  | 4d | 0d | COST [95500 h] | 95,500 |  | 23-05-01 HVAC | HVAC | BLD1 | 0001 | CO | 5 | HVAC | 84260 | 005 |
| 1RIE270 |  | Hydronic Piping - B1 E | 15d | 2021-11-29 | 2021-12-17 | 1RIE200, 230515-02, 236426-12 |  |  |  |  | 4d | 0d | COST [51000 h] | 51,000 |  | 23-05-01 HVAC | HVAC | BLD1 | 0001 | CO | 5 | HVAC | 44560 | 006 |
| 1RIE273 |  | Perform DALT - B1 E | 2d | 2021-11-29 | 2021-11-30 | 1RIE200, 230593-23 |  |  |  |  | 37d | 0d | COST [5000 h] | 5,000 |  | 23-05-93 TEST, ADJUST & BALANCING | TABA | BLD1 | 0001 | CO | 6 | TAB |  |  |
| 1RIE276 |  | Submit DALT Report - B1 E | 2d | 2021-12-01 | 2021-12-02 | 1RIE273 |  |  |  |  | 37d | 0d |  |  |  |  | TABA | BLD1 | 0001 | CO | 6 | TAB |  |  |
| 1RIE290 |  | Power & Lighting Wire - B1 E | 10d | 2021-12-02 | 2021-12-15 | 1RIE100, 260519-02, 1FIE710, 1RIE110 |  |  |  |  | 36d | 0d | COST [24900 h] | 24,900 |  | 26-05-01 BUILDING ELECTRICAL | ELEC | BLD1 | 0001 | CO | 5 | ROUGH ELECTRICAL | 21754 |  |
| 1RIE278 |  | GOV APPR Dalt Report | 5d | 2021-12-03 | 2021-12-09 | 1RIE276 |  |  |  |  | 37d | 0d |  |  |  |  | USAC | BLD1 | 0001 | CO | 6 | TAB |  |  |
| 1RIE280 |  | Insulate Ductwork - B1 E | 8d | 2021-12-10 | 2021-12-21 | 1RIE200, 1RIE276, 1RIE278 |  |  |  |  | 37d | 6d | COST [29300 h] | 29,300 |  | 23-05-01 HVAC | HVAC | BLD1 | 0001 | CO | 5 | MECH SYS INSULATION | 25600 | 002 |
| 1RIE320 |  | Elec Connect OH Units - B1 E | 5d | 2021-12-16 | 2021-12-22 | 1RIE200, 1FIE710, 1RIE290 |  |  |  |  | 36d | 35d | COST [12500 h] | 12,500 |  | 26-05-01 BUILDING ELECTRICAL | ELEC | BLD1 | 0001 | CO | 5 | ROUGH ELECTRICAL | 10877 |  |
| 1RIE300 |  | Insulate Hydronic Pipe - B1 E | 8d | 2021-12-20 | 2021-12-30 | 1RIE270 |  |  |  |  | 10d | 0d | COST [33100 h] | 33,100 |  | 23-05-01 HVAC | HVAC | BLD1 | 0001 | CO | 5 | MECH SYS INSULATION | 28000 | 002 |
| 1RIE310 |  | Condensate to OH Units - B1 E | 5d | 2021-12-20 | 2021-12-27 | 1RIE270 |  |  |  |  | 13d | 3d | COST [1700 h] | 1,700 |  | 23-05-01 HVAC | HVAC | BLD1 | 0001 | CO | 5 | HVAC |  |  |
| 1RIE330 |  | Pull Fire Alarm Wiring - B1 E | 10d | 2021-12-23 | 2022-01-07 | 1FIE720 |  |  |  |  | 36d | 26d | COST [12000 h] | 12,000 |  | 26-05-01 BUILDING ELECTRICAL | ELEC | BLD1 | 0001 | CO | 5 | FIRE ALARM SYSTEM | 11203 |  |
| 1RIE340 |  | Cable Trays - B1 E | 8d | 2022-01-10 | 2022-01-19 | 1FIE730 |  |  |  |  | 18d | 0d | COST [16000 h] | 16,000 |  | 26-05-01 BUILDING ELECTRICAL | ELEC | BLD1 | 0001 | CO | 5 | COMMUNICATIONS (BLD) | 14549 |  |
| 1RIE350 |  | Unit Heaters - Fire Riser Rms | 2d | 2022-01-17 | 2022-01-18 | 1FIE760, 235416-12 |  |  |  |  | 66d | 0d | COST [1000 h] | 1,000 |  | 23-05-01 HVAC | HVAC | BLD1 | 0001 | CO | 5 | HVAC |  |  |
| 1RIE360 |  | Communication Cable - B1 E | 10d | 2022-01-20 | 2022-02-02 | 1RIE340, 272100-02 |  |  |  |  | 18d | 8d | COST [59000 h] | 59,000 |  | 26-05-01 BUILDING ELECTRICAL | ELEC | BLD1 | 0001 | CO | 5 | COMMUNICATIONS (BLD) | 52214 |  |
| 1RIE370 |  | Pull Security Cable - B1 E | 10d | 2022-01-20 | 2022-02-02 | 1RIE340, 281005-12 |  |  |  |  | 18d | 8d | COST [57600 h] | 57,600 |  | 26-05-01 BUILDING ELECTRICAL | ELEC | BLD1 | 0001 | CO | 5 | ELECTRONIC SECURITY | 50280 |  |

Notes:
- 1RIE100: Activity Notes: RFI-0194 - Circuitry for Exit Signs

| ID | WBS | Activity | Duration | Start | Finish | Predecessors | Total float | Free float | Calendar | Resources | Cost | Specification | RESP | AREA | BIDI | PHAS | CATW | FOW | CS | WRKP |
| --- | --- | --- | --- | --- | --- | --- | --- | --- | --- | --- | --- | --- | --- | --- | --- | --- | --- | --- | --- | --- |
|  | 2 | **Finishes** |  | 2021-10-29 | 2022-04-22 |  |  |  |  |  |  |  |  |  |  |  |  |  |  |  |
| 1FIE700 |  | Insulation & Firestop - B1 E | 3d | 2021-10-29 | 2021-11-02 | 1RIE160, 1RIE120, 1RIE210, 1RIE220, 1RIE230, 1RIE240, 1RIE250, 1RIE260 | 21d | 8d |  | COST [11500 h] | 11,500 | 07-20-01 BUILDING INSULATION | INSU | BLD1 | 0001 | CO | 5 | WALL INSULATION |  |  |
| 1FIE710 |  | Hang Secur Mesh & Gyp - B1 E | 10d | 2021-11-16 | 2021-12-01 | 1FIE700, 1FIA120 | 13d | 0d |  | COST [68800 h] | 68,800 | 09-29-01 FRAMING & DRYWALL | FRAM | BLD1 | 0001 | CO | 5 | GYPSUM BOARD | 60092 | 008 |
| 1FIE720 |  | Tape & Finish Drywall - B1 E | 15d | 2021-12-02 | 2021-12-22 | 1FIE710 | 14d | 0d |  | COST [8600 h] | 8,600 | 09-29-01 FRAMING & DRYWALL | FRAM | BLD1 | 0001 | CO | 5 | GYPSUM BOARD | 7524 | 005 |
| 1FIE730 |  | Prime & 1st Coat Walls - B1 E | 10d | 2021-12-23 | 2022-01-07 | 1FIE720 | 14d | 0d |  | COST [17200 h] | 17,200 | 09-91-01 PAINTING & COATINGS | PAIN | BLD1 | 0001 | CO | 5 | PAINTING |  |  |
| 1FIE740 |  | Support for Plaster Clg - B1 E | 8d | 2022-01-03 | 2022-01-12 | 1RIE300, 1FIE730 SS, 092200-02, 1RIE310, PREP2040 | 10d | 0d |  | COST [40000 h] | 40,000 | 09-29-01 FRAMING & DRYWALL | FRAM | BLD1 | 0001 | CO | 5 | CEMENT STUCCO | 35600 | 006 |
| 1FIE760 |  | Paint Exposed Struct - B1 E | 5d | 2022-01-10 | 2022-01-14 | 1FIE730 | 36d | 0d |  | COST [8000 h] | 8,000 | 09-91-01 PAINTING & COATINGS | PAIN | BLD1 | 0001 | CO | 5 | PAINTING |  |  |
| 1FIE750 |  | Lath Ceilings - B1 E | 5d | 2022-01-13 | 2022-01-19 | 1FIE740 | 10d | 0d |  | COST [12000 h] | 12,000 | 09-29-01 FRAMING & DRYWALL | FRAM | BLD1 | 0001 | CO | 5 | CEMENT STUCCO |  | 006 |
| 1FIE790 |  | Install Controls - B1 E | 8d | 2022-01-19 | 2022-01-28 | 1FIE730, 1RIE350 | 66d | 39d |  | COST [63000 h] | 63,000 | 23-09-01 DDC CONTROLS | CTRL | BLD1 | 0001 | CO | 5 | HVAC CONTROLS |  |  |
| 1FIE770 |  | Scratch Coat Ceilings - B1 E | 2d | 2022-01-20 | 2022-01-21 | 1FIE750 | 10d | 0d |  | COST [12000 h] | 12,000 | 09-29-01 FRAMING & DRYWALL | FRAM | BLD1 | 0001 | CO | 5 | CEMENT STUCCO |  | 006 |
| 1FIE780 |  | Cure Scratch Coat - B1 E | 2d | 2022-01-22 | 2022-01-23 | 1FIE770 | 15d | 0d | 7-D |  |  | 09-29-01 FRAMING & DRYWALL | FRAM | BLD1 | 0001 | CO | 5 | CEMENT STUCCO |  |  |
| 1FIE800 |  | Brown Coat Ceilings - B1 E | 4d | 2022-01-24 | 2022-01-27 | 1FIE780 | 11d | 0d |  | COST [12000 h] | 12,000 | 09-29-01 FRAMING & DRYWALL | FRAM | BLD1 | 0001 | CO | 5 | CEMENT STUCCO |  | 006 |
| 1FIE810 |  | Cure Brown Coat - B1 E | 10d | 2022-01-28 | 2022-02-06 | 1FIE800 | 15d | 0d | 7-D |  |  | 09-29-01 FRAMING & DRYWALL | FRAM | BLD1 | 0001 | CO | 5 | CEMENT STUCCO |  |  |
| 1FIE820 |  | Color Coat Ceilings - B1 E | 6d | 2022-02-07 | 2022-02-14 | 092423-13, 1FIE810 | 10d | 0d |  | COST [12000 h] | 12,000 | 09-29-01 FRAMING & DRYWALL | FRAM | BLD1 | 0001 | CO | 5 | CEMENT STUCCO | 43847 | 006 |
| 1FIE830 |  | Ceiling Grid - B1 E | 5d | 2022-02-15 | 2022-02-22 | 1FIE730, 1RIE300, 1RIE280, 1RIE100, 1RIE320, 1RIE360, 1RIE370, 1RIE310, 1FIA190, 1FIE820, 1RIE330, 1RIE110 | 10d | 0d |  | COST [12000 h] | 12,000 | 09-51-01 ACOUSTICAL CEILINGS | ACOU | BLD1 | 0001 | CO | 5 | ACOUSTIC CEILINGS | 11099 | 002 |
| 1FIE840 |  | Cut Fire Sprink Drops - B1 E | 2d | 2022-02-15 | 2022-02-16 | 1FIE740, 1FIE830 SS, 1RIE170 | 53d | 26d |  | COST [8500 h] | 8,500 | 21-13-13 FIRE SPRINKLER SYSTEMS | FIRE | BLD1 | 0001 | CO | 5 | WET PIPE SPRINKLER |  |  |
| 1FIE850 |  | Elec Finish & Trim - B1 E | 10d | 2022-02-15 | 2022-03-01 | 1FIE730, 1RIE290, 1FIE820 | 52d | 28d |  | COST [22000 h] | 22,000 | 26-05-01 BUILDING ELECTRICAL | ELEC | BLD1 | 0001 | CO | 5 | FINISH ELECTRICAL | 19205 |  |
| 1FIE860 |  | Telecom Finish & Trim - B1 E | 5d | 2022-02-15 | 2022-02-22 | 1RIE360, 1FIE730, 1FIE820 | 57d | 33d |  | COST [13000 h] | 13,000 | 26-05-01 BUILDING ELECTRICAL | ELEC | BLD1 | 0001 | CO | 5 | COMMUNICATIONS (BLD) | 11542 |  |
| 1FIE880 |  | Install Light Fixtures - B1 E | 10d | 2022-02-23 | 2022-03-08 | 1FIE830, 1RIE290, 1FIE820, 260923-02, 265400-12, 265200-12, 265300-12, 1FIE760, 265553-12, 265553-90, 265300-90, 265200-90, 265100-90 | 10d | 0d |  | COST [58000 h] | 58,000 | 26-05-01 BUILDING ELECTRICAL | ELEC | BLD1 | 0001 | CO | 5 | FINISH ELECTRICAL | 53347 |  |
| 1FIE890 |  | Casework & Countertops - B1 E | 5d | 2022-02-23 | 2022-03-01 | 1FIE830, 1FIA210 | 15d | 5d |  | COST [20000 h] | 20,000 | 06-40-01 CASEWORK / COUNTERTOPS | CASE | BLD1 | 0001 | CO | 5 | CASEWORK | 17848 | 003 |
| 1FIE900 |  | HVAC Registers/Grilles - B1 E | 5d | 2022-02-23 | 2022-03-01 | 1FIE830, 1FIE820 | 45d | 18d |  | COST [8500 h] | 8,500 | 23-05-01 HVAC | HVAC | BLD1 | 0001 | CO | 5 | HVAC | 7777 | 002 |
| 1FIE910 |  | FACP & FA Devices - B1 E | 10d | 2022-02-23 | 2022-03-08 | 1FIE830, 1FIE820 | 46d | 33d |  | COST [20000 h] | 20,000 | 26-05-01 BUILDING ELECTRICAL | ELEC | BLD1 | 0001 | CO | 5 | FIRE ALARM SYSTEM | 17918 |  |
| 1FIE920 |  | Access Floor Ctrl/Mon - B1 E | 5d | 2022-02-23 | 2022-03-01 | 1FIE830, 096919-13, 1FN100, PREP2220 | 45d | 18d |  | COST [30000 h] | 30,000 | 09-69-19 STRINGLESS ACCESS FLOORING | AFLR | BLD1 | 0001 | CO | 5 | ACCESS FLOORING | 27222 | 002 |
| 1FIE870 |  | Seal Concrete Floors - B1 E | 3d | 2022-02-25 | 2022-03-01 | 1ELE140, 1FIA340 | 67d | 43d |  | COST [5000 h] | 5,000 | 09-63-43 QUARTZ FLOORING | PAIN | BLD1 | 0001 | CO | 5 | PAINTING |  |  |
| 1FIE930 |  | Quartz Flooring - B1 E | 13d | 2022-03-09 | 2022-03-25 | 1FIE830, 1FIE820, 1FIE890, 1FIE880, 1FIC700, 096726-03 | 10d | 0d |  | COST [65000 h] | 65,000 | 09-63-43 QUARTZ FLOORING | PAIN | BLD1 | 0001 | CO | 5 | QUARTZ FLOORING |  |  |
| 1FIE1000 |  | Acoustical Wall Panels - B1 E | 5d | 2022-03-28 | 2022-04-01 | 1FIE930, 098420-02 | 44d | 20d |  | COST [33000 h] | 33,000 | 09-83-13 ACOUSTIC WALL PANELS | ACWL | BLD1 | 0001 | CO | 5 |  |  |  |
| 1FIE940 |  | Plumbing Fixtures - B1 E | 5d | 2022-03-28 | 2022-04-01 | 1FIE930, 220000-09 | 41d | 0d |  | COST [22000 h] | 22,000 | 22-05-01 PLUMBING | PLUM | BLD1 | 0001 | CO | 5 | FINISH PLUMBING |  |  |
| 1FIE950 |  | Detention Doors & HW - B1 E | 10d | 2022-03-28 | 2022-04-08 | 1FIE930, 083463-31, 087163-21, PREP2340 | 10d | 0d |  | COST [160000 h] | 160,000 | 08-34-63 DETENTION DOORS, FRAMES & HARDWARE | DETN | BLD1 | 0001 | CO | 5 | DETENTION DOORS |  |  |
| 1FIE960 |  | Drop Ceiling Tiles - B1 E | 4d | 2022-03-28 | 2022-03-31 | 1FIE900, 1FIE790, 1FIE880, 1FIE840, 1FIE930, 1FIE880 FF, 1FIE920 | 27d | 0d |  | COST [6000 h] | 6,000 | 09-51-01 ACOUSTICAL CEILINGS | ACOU | BLD1 | 0001 | CO | 5 | ACOUSTIC CEILINGS | 5550 | 002 |
| 1FIE970 |  | Install Weapons Lockers - B1 E | 5d | 2022-03-28 | 2022-04-01 | 1FIE930 | 44d | 20d |  | COST [93000 h] | 93,000 | 10-51-01 METAL LOCKERS | LCKR | BLD1 | 0001 | CO | 5 | METAL LOCKERS |  |  |
| 1FIE980 |  | SS Countertops - B1 E | 3d | 2022-03-28 | 2022-03-30 | 1FIE890, 1FIE930 | 44d | 12d |  | COST [4000 h] | 4,000 | 06-40-01 CASEWORK / COUNTERTOPS | CASE | BLD1 | 0001 | CO | 5 | CASEWORK | 3600 | 003 |
| 1FIE990 |  | Vault Door & Day Gate - B1 E | 5d | 2022-03-28 | 2022-04-01 | 1FIE930, PREP2360, 083459-21 | 10d | 0d |  | COST [21000 h] | 21,000 | 08-34-59 VAULT DOOR & DATE GATES | DOOR | BLD1 | 0001 | CO | 5 | VAULT DOOR DAY GATE |  |  |
| 1FIE1010 |  | Finish Fire Sprinklers - B1 E | 3d | 2022-04-01 | 2022-04-05 | 1FIE960 | 27d | 3d |  | COST [2900 h] | 2,900 | 21-13-13 FIRE SPRINKLER SYSTEMS | FIRE | BLD1 | 0001 | CO | 5 | WET PIPE SPRINKLER |  |  |
| 1FIE1020 |  | Toilet Accessories - B1 E | 3d | 2022-04-04 | 2022-04-06 | 1FIE940 | 41d | 17d |  | COST [10000 h] | 10,000 | 10-22-01 TOILET COMPARTMENTS & ACCESSORIES | TOIL | BLD1 | 0001 | CO | 5 | TOILET ACCESSORIES |  |  |
| 1FIE1030 |  | Standard Int Drs & HW - B1 E | 5d | 2022-04-04 | 2022-04-08 | 1FIE990, 081113-31, 083402-21 | 10d | 0d |  | COST [56000 h] | 56,000 | 08-11-01 DOORS, FRAMES & HARDWARE | DOOR | BLD1 | 0001 | CO | 5 | DOORS AND FRAMES |  |  |
| 1FIE1040 |  | Detention Padding - B1 E | 5d | 2022-04-11 | 2022-04-15 | 1FIE930, 119819-21, PREP2420, 1FIE950 | 34d | 10d |  | COST [35000 h] | 35,000 | 10-25-16 DETENTION PADDING | DETN | BLD1 | 0001 | CO | 5 | DETENTION PADDING |  |  |
| 1FIE1050 |  | Final Paint - B1 E | 5d | 2022-04-11 | 2022-04-15 | 1FIE930, 1FIE950, 1FIE1030, 1FIE1010, 1FIE850, 1FIE860 | 24d | 0d |  | COST [8000 h] | 8,000 | 09-91-01 PAINTING & COATINGS | PAIN | BLD1 | 0001 | CO | 5 | PAINTING |  |  |
| 1FIE1060 |  | Detention Windows/Glass - B1 E | 5d | 2022-04-11 | 2022-04-15 | 1FIE950, 088853-21, 085663-21 | 34d | 10d |  | COST [36000 h] | 36,000 | 08-34-63 DETENTION DOORS, FRAMES & HARDWARE | DETN | BLD1 | 0001 | CO | 5 | DETENTION DOORS |  |  |
| 1FIE1070 |  | Access Ctrl / ESS Trim - B1 E | 10d | 2022-04-11 | 2022-04-22 | 1FIE990, 1FIE1030, 1FIA400, 1FIE950 | 10d | 0d |  | COST [16000 h] | 16,000 | 26-05-01 BUILDING ELECTRICAL | ELEC | BLD1 | 0001 | CO | 5 | ELECTRONIC SECURITY | 13967 |  |
| 1FIE1080 |  | Intercom Sys & Devices - B1 E | 10d | 2022-04-11 | 2022-04-22 | 1FIE990, 1FIE1030, 1FIE950 | 10d | 0d |  | COST [3900 h] | 3,900 | 26-05-01 BUILDING ELECTRICAL | ELEC | BLD1 | 0001 | CO | 5 | COMMUNICATIONS (BLD) | 3395 |  |
| 1FIE1090 |  | Handcuff Rails - B1 E | 2d | 2022-04-18 | 2022-04-19 | 1FIE980, 1FIE1050 | 32d | 8d |  | COST [2300 h] | 2,300 |  | PRIM | BLD1 | 0001 | CO | 5 |  |  |  |

| ID | WBS | Activity | Duration | Start | Finish | Predecessors | Total float | Free float | Calendar | Resources | Cost | Specification | RESP | AREA | BIDI | PHAS | CATW | FOW | CS | Sheet | WRKP |
| --- | --- | --- | --- | --- | --- | --- | --- | --- | --- | --- | --- | --- | --- | --- | --- | --- | --- | --- | --- | --- | --- |
|  | 3 | **Electrical Room** |  | 2021-11-16 | 2022-01-18 |  |  |  |  |  |  |  |  |  |  |  |  |  |  |  |  |
| 1ELE100 |  | Paint - Bldg 1 - Rm 1214 | 2d | 2021-11-16 | 2021-11-17 | 1FIE710 SS | 13d | 0d |  | COST [3400 h] | 3,400 | 09-91-01 PAINTING & COATINGS | PAIN | BLD1 | 0001 | CO | 5 | PAINTING |  |  |  |
| 1ELE110 |  | Receive Main Switchboard MSB1 | 2d | 2021-11-16 | 2021-11-17 | 262413-12, 1ELE100 SS | 13d | 0d |  | COST [452100 h] | 452,100 | 26-05-01 BUILDING ELECTRICAL | ELEC | BLD1 | 0001 | CO | 5 | SET ELECTRICAL EQUIP | 394744 |  |  |
| 1ELE120 |  | Set Switch Gear - B1 - Rm 1214 | 5d | 2021-11-18 | 2021-11-24 | 1ELE100, 262300-12, 262413-12, 1ELE110, 260548-02 | 13d | 0d |  | COST [48900 h] | 48,900 | 26-05-01 BUILDING ELECTRICAL | ELEC | BLD1 | 0001 | CO | 5 | SET ELECTRICAL EQUIP | 42678 | 1-E111 |  |
| 1ELE130 |  | Receive All Other Switchboards | 5d | 2021-11-18 | 2021-11-24 | 260571-02, 262300-12, 1ELE110 | 43d | 30d |  | COST [174000 h] | 174,000 | 26-05-01 BUILDING ELECTRICAL | ELEC | BLD1 | 0001 | CO | 5 | SET ELECTRICAL EQUIP | 151946 |  |  |
| 1ELE140 |  | Build Switch Gear - B1 Rm 1214 | 30d | 2021-11-29 | 2022-01-11 | 1ELE120, 1ELE130 FF | 13d | 0d |  | COST [9300 h] | 9,300 | 26-05-01 BUILDING ELECTRICAL | ELEC | BLD1 | 0001 | CO | 5 | SET ELECTRICAL EQUIP | 8158 | 1-E111 |  |
| 1ELE150 |  | FA Control Panel - B1 Rm 1214 | 5d | 2021-11-29 | 2021-12-03 | 1ELE120 | 110d | 97d |  | COST [2700 h] | 2,700 | 26-05-01 BUILDING ELECTRICAL | ELEC | BLD1 | 0001 | CO | 5 | SET ELECTRICAL EQUIP | 2401 | 1-E111 |  |
| 1ELE160 |  | Pull Feeders - B1 - Rm 1214 | 10d | 2021-11-30 | 2021-12-13 | 1ELE140 SS, EL1560 | 23d | 0d |  | COST [92000 h] | 92,000 | 26-05-01 BUILDING ELECTRICAL | ELEC | BLD1 | 0001 | CO | 5 | SET ELECTRICAL EQUIP | 80433 | 1-E111 |  |
| 1ELE200 |  | Test UG Elec Distribution | 1d | 2021-12-01 | 2021-12-01 | 1ELE160 SS+1d | 31d | 0d |  |  |  |  | ELEC | BLD1 | 0001 | CO | 5 | SET ELECTRICAL EQUIP |  |  |  |
| 1ELE210 |  | GOV APPR UG Elect Test Report | 14d | 2021-12-02 | 2021-12-15 | 1ELE200 | 49d | 48d | 7-D |  |  |  | USAC | BLD1 | 0001 | CO | 5 | SET ELECTRICAL EQUIP |  |  |  |
| 1ELE170 |  | Makeup Switchgear - B1 Rm 1214 | 5d | 2021-12-14 | 2021-12-20 | 1ELE160, 1ELE200 | 23d | 0d |  | COST [12000 h] | 12,000 | 26-05-01 BUILDING ELECTRICAL | ELEC | BLD1 | 0001 | CO | 5 | SET ELECTRICAL EQUIP | 10669 | 1-E111 |  |
| 1ELE220 |  | Apparatus Insp & Testing | 5d | 2021-12-21 | 2021-12-28 | 1ELE170, 260800-02 | 23d | 0d |  |  |  |  | ELEC | BLD1 | 0001 | CO | 5 | SET ELECTRICAL EQUIP |  |  |  |
| 1ELE230 |  | GOV APPR Apparatus Test | 14d | 2021-12-29 | 2022-01-11 | 1ELE220 | 34d | 31d | 7-D |  |  |  | USAC | BLD1 | 0001 | CO | 5 | SET ELECTRICAL EQUIP |  |  |  |
| 1ELE180 |  | Schedule SDG&E Inspection | 3d | 2022-01-12 | 2022-01-14 | 1ELE160, 1ELE170, 1EX160, EL1060, EL1200, EL1220, EL1360, 3ST220, 1ELE140 | 17d | 2d | 7-D | COST |  | 26-05-01 BUILDING ELECTRICAL | ELEC | BLD1 | 0001 | CO | 5 | SET ELECTRICAL EQUIP |  |  |  |
| 1ELE190 |  | SDG&E Inspection & Set Meter | 2d | 2022-01-17 | 2022-01-18 | 1ELE180, EL1580 | 11d | 10d |  |  |  | 26-05-01 BUILDING ELECTRICAL | SDGE | BLD1 | 0001 | CO | 5 | SET ELECTRICAL EQUIP |  |  |  |
|  | 4 | **All Areas** |  | 2021-09-24 | 2022-05-13 |  |  |  |  |  |  |  |  |  |  |  |  |  |  |  |  |
| 1FN100 |  | Layout Access Floor - B1 | 1d | 2021-09-24 | 2021-09-24 | 1RIC140, 1STE120 | 146d | 90d |  | COST [1000 h] | 1,000 | 09-69-19 STRINGLESS ACCESS FLOORING | AFLR | BLD1 | 0001 | CO | 5 |  | 880 |  | 001 |
| 1FN110 |  | Build Out Fire Risers - B1 | 10d | 2022-01-03 | 2022-01-14 | 1RIA130, 1RIE140, 1FIA140 | 103d | 90d |  | COST [28000 h] | 28,000 | 21-13-13 FIRE SPRINKLER SYSTEMS | FIRE | BLD1 | 0001 | CO | 5 | WET PIPE SPRINKLER |  |  |  |
| 1FN130 |  | FRP in Janitors Closets - B1 | 10d | 2022-01-10 | 2022-01-21 | 1FIC130, 1FIA140, 1FIE730 | 93d | 69d |  | COST [9000 h] | 9,000 | 10-26-01 WALL AND DOOR PROTECTION | PAIN | BLD1 | 0001 | CO | 5 | PAINTING |  |  |  |
| 1FN120 |  | Tube Daylight Diffuser - B1 AC | 7d | 2022-01-12 | 2022-01-20 | 1EX100, 1FIA190, 1FIC180 | 89d | 21d |  | COST [17000 h] | 17,000 | 13-34-01 METAL BUILDING SYSTEMS | PEMB | BLD1 | 0001 | CO | 5 | TUBULAR DAYLIGHTING | 15000 |  |  |
| 1FN140 |  | AV System & Equip - B1 | 30d | 2022-01-28 | 2022-03-11 | 1LVB160, 1LVD160, 1LVD190, 1LVB180 | 59d | 35d |  | COST [430000 h] | 430,000 | 11-52-01 AUDIO VISUAL | AVSY | BLD1 | 0001 | CO | 5 |  |  |  |  |
| 1FN150 |  | Walk-Off Mats - B1 | 2d | 2022-02-22 | 2022-02-23 | 1ENT270, 1FIA280, 1EX180, 124813-09 | 71d | 47d |  | COST [20000 h] | 20,000 | 10-73-01 ENTRANCE FLOOR MATS & FRAMES | MATS | BLD1 | 0001 | CO | 5 | FLOOR MATS |  |  |  |
| 1FN160 |  | Window Coverings - B1 | 8d | 2022-03-10 | 2022-03-21 | 1FIA410, 122413-09, PREP2320 | 53d | 29d |  | COST [6700 h] | 6,700 | 12-21-01 WINDOW COVERINGS | WSHD | BLD1 | 0001 | CO | 5 | ROLLER WINDOW SHADES | 5883 |  |  |
| 1FN170 |  | Fire Ext & Cabinets - B1 | 5d | 2022-03-28 | 2022-04-01 | 1FIE930, 1FIA280, 1FIC290, 104416-09 | 44d | 20d |  | COST [6000 h] | 6,000 | 10-44-13 FIRE EXTINGUSHERS | TOIL | BLD1 | 0001 | CO | 5 | TOILET ACCESSORIES |  |  |  |
| 1FN180 |  | Shelving & Storage Equip - B1 | 15d | 2022-03-28 | 2022-04-15 | 1FIE930, 1FIC400, 1FIA420, 105613-09, PREP2400 | 34d | 10d |  | COST [55000 h] | 55,000 | 10-56-13 SHELVING (CFCI) | LCKR | BLD1 | 0001 | CO | 5 | SHELVING |  |  |  |
| 1FN190 |  | Kitchen Equipment - B1 | 5d | 2022-04-18 | 2022-04-22 | 1FIE1050, PREP2440 | 29d | 5d |  | COST [11000 h] | 11,000 | 11-44-13 ELECTRIC KITCHEN EQUIPMENT | KITC | BLD1 | 0001 | CO | 5 | ELECTRIC KITCHEN EQP |  |  |  |
| 1FN200 |  | Bldg Signage - B1 | 10d | 2022-04-18 | 2022-04-29 | 101400-09, 101400-29, 1FIE1050, PREP2460 | 24d | 0d |  | COST [20000 h] | 20,000 | 10-14-01 BUILDING SIGNAGE | SIGN | BLD1 | 0001 | CO | 5 | SIGNAGE |  |  |  |
| 1FN210 |  | Final Clean - B1 | 10d | 2022-05-02 | 2022-05-13 | 1FIE1060, 1FN160, 1FN170, 1FN150, 1FN190, 1FIA420, 1FIE870, 1FIE1020, 1FIE1040, 1FIE970, 1FIE1090, 1FN180, 1FN200, 1FIC160, 1FIA380, 1FIC390, 1FIC410, 1FIC360, 1FIC790, 1FIC750, 1FIA750, 1FN130, 1FN140, 1FIE1000, 1FIA270, 1FIE1080, 1FIC420 | 24d | 0d |  | COST [10000 h] | 10,000 | 02-42-01 FINAL CLEANING | FNCL | BLD1 | 0001 | CO | 5 |  |  |  |  |

| ID | WBS | Activity | Duration | Start | Finish | Predecessors | Complete | Remaining | Planned start | Planned finish | Total float | Free float | Calendar | Resources | Cost | Actual cost | Specification | CS | RESP | AREA | BIDI | PHAS | CATW | FOW | NOTES | WRKP |
| --- | --- | --- | --- | --- | --- | --- | --- | --- | --- | --- | --- | --- | --- | --- | --- | --- | --- | --- | --- | --- | --- | --- | --- | --- | --- | --- |
|  | 6 | **BPS Entry Stairs & Ramp** |  | 2021-06-09 | 2022-01-21 |  |  |  |  |  |  |  |  |  |  |  |  |  |  |  |  |  |  |  |  |  |
| 1ENT100 |  | Dig & Form Ftg - B1 Entry RW | 2d | 2021-06-09 A | 2021-06-10 A | 1EX120 | 100% |  | 2021-10-18 | 2021-10-20 |  |  | 5-DW | COST [14300 h] | 14,300 | 14,300 | 03-30-01 CAST IN PLACE CONCRETE / BELOW GRADE PROD | 12500 | CONC | BLD1 | 0001 | CO | 4 | CIP CONCRETE |  |  |
| 1ENT110 |  | Ftg Rebar - B1 Entry RW | 2d | 2021-06-11 A | 2021-06-11 A | 1ENT100 | 100% |  | 2021-10-21 | 2021-10-22 |  |  | 5-DW | COST [4000 h] | 4,000 | 4,000 | 03-20-01 REINFORCING STEEL |  | REBR | BLD1 | 0001 | CO | 4 | CONCRETE REINFORCE |  |  |
| 1ENT120 |  | Place Ftg Conc - B1 Entry RW | 1d | 2021-06-14 A | 2021-11-04 | 1ENT110 | 95% | 0d | 2021-10-25 | 2021-10-25 | 15d | 0d | 5-DW | COST [17200 h] | 17,200 | 16,340 | 03-30-01 CAST IN PLACE CONCRETE / BELOW GRADE PROD | 15000 | CONC | BLD1 | 0001 | CO | 4 | CIP CONCRETE |  |  |
| 1ENT130 |  | Form 1 Side Walls -B1 Entry RW | 3d | 2021-06-16 A | 2021-06-17 A | 1ENT120 | 100% |  | 2021-10-26 | 2021-10-28 |  |  | 5-DW | COST [10300 h] | 10,300 | 10,300 | 03-30-01 CAST IN PLACE CONCRETE / BELOW GRADE PROD | 9000 | CONC | BLD1 | 0001 | CO | 4 | CIP CONCRETE |  |  |
| 1ENT140 |  | Wall Rebar - B1 Entry RW | 3d | 2021-06-17 A | 2021-06-18 A | 1ENT130 SS+2d | 100% |  | 2021-10-28 | 2021-11-01 |  |  | 5-DW | COST [14300 h] | 14,300 | 14,300 | 03-20-01 REINFORCING STEEL |  | REBR | BLD1 | 0001 | CO | 4 | CONCRETE REINFORCE |  |  |
| 1ENT150 |  | Close Wall Forms - B1 Entry RW | 2d | 2021-06-23 A | 2021-06-28 A | 1ENT140, 1ENT130 | 100% |  | 2021-11-03 | 2021-11-04 |  |  | 5-DW | COST [10300 h] | 10,300 | 10,300 | 03-30-01 CAST IN PLACE CONCRETE / BELOW GRADE PROD | 9000 | CONC | BLD1 | 0001 | CO | 4 | CIP CONCRETE |  |  |
| 1ENT160 |  | Place Wall Concr - B1 Entry RW | 1d | 2021-06-30 A | 2021-11-04 | 1ENT150 | 75% | 1d | 2021-11-05 | 2021-11-05 | 15d | 0d | 5-DW | COST [11500 h] | 11,500 | 8,625 | 03-30-01 CAST IN PLACE CONCRETE / BELOW GRADE PROD | 10000 | CONC | BLD1 | 0001 | CO | 4 | CIP CONCRETE |  |  |
| 1ENT170 |  | Cure Walls - B1 Entry RW | 7d | 2021-06-30 A | 2021-11-11 | 1ENT160 |  | 7d | 2021-11-06 | 2021-11-12 | 31d | 0d | 7-D | COST [1100 h] | 1,100 |  | 03-30-01 CAST IN PLACE CONCRETE / BELOW GRADE PROD | 1000 | CONC | BLD1 | 0001 | CO | 4 | CIP CONCRETE |  |  |
| 1ENT180 |  | Strip Walls - B1 Entry RW | 2d | 2021-11-12 | 2021-11-15 | 1ENT170 |  |  |  |  | 15d | 0d | 5-DW | COST [10300 h] | 10,300 |  | 03-30-01 CAST IN PLACE CONCRETE / BELOW GRADE PROD | 9000 | CONC | BLD1 | 0001 | CO | 4 | CIP CONCRETE |  |  |
| 1ENT190 |  | Waterproofing - B1 Entry RW | 1d | 2021-11-17 | 2021-11-17 | 1ENT180 |  |  |  |  | 15d | 0d | 5-DW |  |  |  | 07-10-01 WATERPROOFING |  | WPRF | BLD1 | 0001 | CO | 4 | WATERPROOFING | REVIEW |  |
| 1ENT200 |  | Backfill & Grade - B1 Entry | 5d | 2021-11-18 | 2021-11-29 | 1ENT190 |  |  |  |  | 15d | 0d | 5-DW | COST [58200 h] | 58,200 |  | 31-20-01 EARTHWORK | 50000 | GRAD | BLD1 | 0005 | CO | 5 | CLEAR/GRUB/GRADING | 1/20/21 - Revised | 008 |
| 1ENT210 |  | Form Entrance Ramps - B1 Entry | 8d | 2021-11-30 | 2021-12-13 | 1ENT200, 1ENT190 |  |  |  |  | 15d | 0d | 5-DW | COST [9200 h] | 9,200 |  | 03-30-01 CAST IN PLACE CONCRETE / BELOW GRADE PROD | 8000 | CONC | BLD1 | 0001 | CO | 5 | CIP CONCRETE |  |  |
| 1ENT220 |  | Flagpole Ftgs - B1 Entry | 5d | 2021-11-30 | 2021-12-08 | 1ENT200, 103500-90 |  |  |  |  | 31d | 16d | 5-DW | COST [2300 h] | 2,300 |  | 03-30-01 CAST IN PLACE CONCRETE / BELOW GRADE PROD | 2000 | CONC | BLD1 | 0001 | CO | 5 | CIP CONCRETE |  |  |
| 1ENT230 |  | Rebar Ramps - B1 Entry | 5d | 2021-12-14 | 2021-12-22 | 1ENT210 |  |  |  |  | 21d | 0d | 5-DW | COST [4900 h] | 4,900 |  | 03-20-01 REINFORCING STEEL |  | REBR | BLD1 | 0001 | CO | 5 | CONCRETE REINFORCE |  |  |
| 1ENT240 |  | Form Stairs & Slab - B1 Entry | 8d | 2021-12-14 | 2021-12-29 | 1ENT210 |  |  |  |  | 15d | 0d | 5-DW | COST [9200 h] | 9,200 |  | 03-30-01 CAST IN PLACE CONCRETE / BELOW GRADE PROD | 8000 | CONC | BLD1 | 0001 | CO | 5 | CIP CONCRETE |  |  |
| 1ENT250 |  | Place Ramp Concrete - B1 Entry | 2d | 2021-12-27 | 2021-12-28 | 1ENT230 |  |  |  |  | 21d | 6d | 5-DW | COST [8000 h] | 8,000 |  | 03-30-01 CAST IN PLACE CONCRETE / BELOW GRADE PROD | 7000 | CONC | BLD1 | 0001 | CO | 5 | CIP CONCRETE |  |  |
| 1ENT260 |  | Rebar Stairs & Slab - B1 Entry | 5d | 2022-01-04 | 2022-01-10 | 1ENT240 |  |  |  |  | 15d | 0d | 5-DW | COST [4900 h] | 4,900 |  | 03-20-01 REINFORCING STEEL |  | REBR | BLD1 | 0001 | CO | 5 | CONCRETE REINFORCE |  |  |
| 1ENT270 |  | Place Stairs & Slab - B1 Entry | 2d | 2022-01-11 | 2022-01-12 | 1ENT260, 1ENT220, 1ENT250 |  |  |  |  | 15d | 0d | 5-DW | COST [8000 h] | 8,000 |  | 03-30-01 CAST IN PLACE CONCRETE / BELOW GRADE PROD | 7000 | CONC | BLD1 | 0001 | CO | 5 | CIP CONCRETE |  |  |
| 1ENT280 |  | Set Handrails - B1 Entry | 5d | 2022-01-14 | 2022-01-21 | 1ENT270, 055200-09 |  |  |  |  | 100d | 77d | 5-DW | COST [11500 h] | 11,500 |  | 05-12-01 STRUCTURAL STEEL |  | STEE | BLD1 | 0001 | CO | 5 |  |  |  |
|  | 6 | **Building 1A Central Plant** |  | 2020-12-07 | 2022-03-02 |  |  |  |  |  |  |  |  |  |  |  |  |  |  |  |  |  |  |  |  |  |
|  | 1 | **Foundations** |  | 2021-05-24 | 2021-06-14 |  |  |  |  |  |  |  |  |  |  |  |  |  |  |  |  |  |  |  |  |  |
| 1AFN100 |  | Excavate Drilled Ftgs - B1A | 3d | 2021-05-24 A | 2021-05-27 A | 1FNA190 | 100% |  | 2021-05-07 | 2021-05-11 |  |  | 5-DW | COST [14900 h] | 14,900 | 14,900 | 03-30-01 CAST IN PLACE CONCRETE / BELOW GRADE PROD | 13000 | CONC | BLD1 | 0001 | CO | 4 | CIP CONCRETE |  |  |
| 1AFN120 |  | Set ABs in Drilled Ftgs - B1A | 2d | 2021-05-27 A | 2021-05-28 A | 1AFN110 | 100% |  | 2021-05-17 | 2021-05-18 |  |  | 5-DW | COST [8000 h] | 8,000 | 8,000 | 03-30-01 CAST IN PLACE CONCRETE / BELOW GRADE PROD | 7000 | CONC | BLD1 | 0001 | CO | 4 | CIP CONCRETE |  |  |
| 1AFN110 |  | Rebar in Drilled Ftg - B1A | 2d | 2021-05-28 A | 2021-05-28 A | 1AFN100 | 100% |  | 2021-05-13 | 2021-05-14 |  |  | 5-DW | COST [2900 h] | 2,900 | 2,900 | 03-20-01 REINFORCING STEEL |  | REBR | BLD1 | 0001 | CO | 4 | CONCRETE REINFORCE |  |  |
| 1AFN130 |  | Place Drilled Ftgs - B1A | 1d | 2021-06-07 A | 2021-06-07 A | 1AFN120 | 100% |  | 2021-06-02 | 2021-06-02 |  |  | 5-DW | COST [8000 h] | 8,000 | 8,000 | 03-30-01 CAST IN PLACE CONCRETE / BELOW GRADE PROD | 7000 | CONC | BLD1 | 0001 | CO | 4 | CIP CONCRETE |  |  |
| 1AFN140 |  | Cure Drilled Ftgs - B1A | 14d | 2021-06-07 A | 2021-06-14 A | 1AFN130 | 100% |  | 2021-06-03 | 2021-06-16 |  |  | 7-D | COST [1100 h] | 1,100 | 1,100 | 03-30-01 CAST IN PLACE CONCRETE / BELOW GRADE PROD | 1000 | CONC | BLD1 | 0001 | CO | 4 | CIP CONCRETE |  |  |

| ID | WBS | Activity | Duration | Start | Finish | Predecessors | Complete | Remaining | Planned start | Planned finish | Total float | Free float | Calendar | Resources | Cost | Actual cost | Specification | CS | RESP | AREA | BIDI | PHAS | CATW | FOW | Sheet | WRKP |
| --- | --- | --- | --- | --- | --- | --- | --- | --- | --- | --- | --- | --- | --- | --- | --- | --- | --- | --- | --- | --- | --- | --- | --- | --- | --- | --- |
|  | 2 | **Structure** |  | 2020-12-07 | 2021-08-10 |  |  |  |  |  |  |  |  |  |  |  |  |  |  |  |  |  |  |  |  |  |
| 1AST120 |  | Underslab Shallow Elec - B1A | 5d | 2020-12-07 A | 2021-01-15 A | 1AST100 | 100% |  | 2021-06-28 | 2021-07-02 |  |  | 5-DW | COST [24700 h] | 24,700 | 24,700 | 26-05-01 BUILDING ELECTRICAL | 21581 | ELEC | BL1A | 0001 | CO | 4 | U/G ELECTRICAL DIST |  |  |
| 1AST100 |  | Underslab Plumbing - B1A | 5d | 2020-12-14 A | 2021-07-02 | 1AFN130 | 95% | 1d | 2021-05-28 | 2021-06-04 | 69d | 0d |  | COST [15900 h] | 15,900 | 15,105 | 22-05-01 PLUMBING |  | PLUM | BL1A | 0001 | CO | 4 | PLUMBING | 1A-P101 |  |
| 1AST130 |  | Erect Metal Bldg - B1A | 10d | 2021-06-16 A | 2021-07-16 | 1STA100, 1AFN140, 1AST120 | 25% | 8d | 2021-06-25 | 2021-07-09 | 64d | 0d | 5-DW | COST [65300 h] | 65,300 | 16,325 | 13-34-01 METAL BUILDING SYSTEMS | 56987.38 | PEMB | BLD1 | 0001 | CO | 4 | METAL BUILDING SYS |  |  |
| 1AST110 |  | Underslab Mech Piping - B1A | 15d | 2021-06-29 A | 2021-07-26 | 1AFN130, 1AST100 | 25% | 15d | 2021-06-04 | 2021-06-24 | 104d | 100d |  | COST [103100 h] | 103,100 | 25,775 | 23-05-01 HVAC | 80000 | HVAC | BL1A | 0001 | CO | 4 | HVAC |  | 004 |
| 1AST140 |  | Set 6" Base - B1A | 2d | 2021-07-19 | 2021-07-20 | 1AST120, 1AST130 |  |  |  |  | 76d | 0d | 5-DW | COST [6900 h] | 6,900 |  | 03-30-01 CAST IN PLACE CONCRETE / BELOW GRADE PROD | 6000 | CONC | BL1A | 0001 | CO | 4 | CIP CONCRETE |  |  |
| 1AST150 |  | Install Vapor Barrier - B1A | 1d | 2021-07-21 | 2021-07-21 | 1AST120, 1AST140 |  |  |  |  | 76d | 0d | 5-DW | COST [5700 h] | 5,700 |  | 03-30-01 CAST IN PLACE CONCRETE / BELOW GRADE PROD | 5000 | CONC | BL1A | 0001 | CO | 4 | CIP CONCRETE |  |  |
| 1AST160 |  | Slab Rebar - B1A | 2d | 2021-07-22 | 2021-07-23 | 1AST150 |  |  |  |  | 76d | 0d | 5-DW | COST [4900 h] | 4,900 |  | 03-20-01 REINFORCING STEEL |  | REBR | BL1A | 0001 | CO | 4 | CONCRETE REINFORCE |  |  |
| 1AST170 |  | Place Concrete Slab - B1A | 1d | 2021-07-26 | 2021-07-26 | 1AST160 |  |  |  |  | 76d | 0d | 5-DW | COST [20600 h] | 20,600 |  | 03-30-01 CAST IN PLACE CONCRETE / BELOW GRADE PROD | 18000 | CONC | BL1A | 0001 | CO | 4 | CIP CONCRETE |  |  |
| 1AST180 |  | Cure SOG - B1A | 7d | 2021-07-27 | 2021-08-02 | 1AST170 |  |  |  |  | 121d | 0d | 7-D | COST [2900 h] | 2,900 |  | 03-30-01 CAST IN PLACE CONCRETE / BELOW GRADE PROD | 2500 | CONC | BL1A | 0001 | CO | 4 | CIP CONCRETE |  |  |
| 1AST190 |  | Form Equip Pads - B1A | 3d | 2021-08-03 | 2021-08-05 | 1AST180 |  |  |  |  | 73d | 0d | 5-DW | COST [5700 h] | 5,700 |  | 03-30-01 CAST IN PLACE CONCRETE / BELOW GRADE PROD | 5000 | CONC | BL1A | 0001 | CO | 4 | CIP CONCRETE |  |  |
| 1AST200 |  | Rebar Equip Pads - B1A | 2d | 2021-08-06 | 2021-08-09 | 1AST190 |  |  |  |  | 73d | 0d | 5-DW | COST [1700 h] | 1,700 |  | 03-20-01 REINFORCING STEEL |  | REBR | BL1A | 0001 | CO | 4 | CONCRETE REINFORCE |  |  |
| 1AST210 |  | Place Equip Pads - B1A | 1d | 2021-08-10 | 2021-08-10 | 1AST200 |  |  |  |  | 73d | 11d | 5-DW | COST [4600 h] | 4,600 |  | 03-30-01 CAST IN PLACE CONCRETE / BELOW GRADE PROD | 4000 | CONC | BL1A | 0001 | CO | 4 | CIP CONCRETE |  |  |
|  | 3 | **Plant Build-Out** |  | 2021-08-03 | 2022-03-02 |  |  |  |  |  |  |  |  |  |  |  |  |  |  |  |  |  |  |  |  |  |
| 1AFI100 |  | Rough Electrical - B1A | 5d | 2021-08-03 | 2021-08-09 | 1AST180 |  |  |  |  | 84d | 0d | 5-DW | COST [26000 h] | 26,000 |  | 26-05-01 BUILDING ELECTRICAL | 22661 | ELEC | BL1A | 0001 | CO | 4 | ROUGH ELECTRICAL | 1A-E Sheets |  |
| 1AFI110 |  | Power & Lighting Wire - B1A | 5d | 2021-08-10 | 2021-08-16 | 1AFI100 |  |  |  |  | 95d | 0d | 5-DW | COST [6300 h] | 6,300 |  | 26-05-01 BUILDING ELECTRICAL | 5503 | ELEC | BL1A | 0001 | CO | 4 | ROUGH ELECTRICAL | 1A-E Sheets |  |
| 1AFI170 |  | Finish Electrical - B1A | 3d | 2021-08-17 | 2021-08-20 | 1AFI110, 1AFI110 FF |  |  |  |  | 95d | 90d | 5-DW | COST [800 h] | 800 |  | 26-05-01 BUILDING ELECTRICAL | 655 | ELEC | BL1A | 0001 | CO | 4 | ROUGH ELECTRICAL | 1A-E102 |  |
| 1AFI150 |  | Set Pumps & Exp Tank - B1A | 3d | 2021-08-27 | 2021-08-31 | 1AST210, 232123-12 |  |  |  |  | 62d | 31d | 5-DW | COST [97300 h] | 97,300 |  | 23-05-01 HVAC | 85000 | HVAC | BL1A | 0001 | CO | 4 | HVAC | 1A-M101 | 003 |
| 1AFI120 |  | Set Air Handling Unit - B1A | 3d | 2021-09-13 | 2021-09-15 | 1AST210, 237313-12 |  |  |  |  | 53d | 22d | 5-DW | COST [263400 h] | 263,400 |  | 23-05-01 HVAC | 230000 | HVAC | BL1A | 0001 | CO | 4 | HVAC | 1A-M101 | 004 |
| 1AFI130 |  | Set Chillers - B1A | 3d | 2021-09-13 | 2021-09-15 | 1AST210, 236410-12 |  |  |  |  | 53d | 22d | 5-DW | COST [141400 h] | 141,400 |  | 23-05-01 HVAC | 120500 | HVAC | BL1A | 0001 | CO | 4 | HVAC | 1A-M101 | 004 |
| 1AFI140 |  | Set Boilers - B1A | 3d | 2021-10-12 | 2021-10-15 | 1AST210, 235200-12 |  |  |  |  | 34d | 3d | 5-DW | COST [108800 h] | 108,800 |  | 23-05-01 HVAC | 95000 | HVAC | BL1A | 0001 | CO | 4 | HVAC | 1A-M101 | 003 |
| 1AFI180 |  | Plumbing Piping - B1A | 20d | 2021-10-22 | 2021-11-23 | 1AFI120, 1AFI130, 1AFI140, 1AFI150, 1RIE180 |  |  |  |  | 31d | 0d | 5-DW | COST [5700 h] | 5,700 |  | 22-05-01 PLUMBING |  | PLUM | BL1A | 0001 | CO | 4 | PLUMBING | 1A-P101 |  |
| 1AFI160 |  | Install VFDs - B1A | 5d | 2021-12-02 | 2021-12-09 | 1AFI150, 1AFI140, 1AFI130, 1AFI120, 262923-12 |  |  |  |  | 30d | 25d | 5-DW | COST [17200 h] | 17,200 |  | 23-05-01 HVAC | 15000 | HVAC | BL1A | 0001 | CO | 4 | HVAC | 1A-M101 | 002 |
| 1AFI190 |  | Hydronic Piping - B1A | 20d | 2021-12-20 | 2022-01-26 | 1AFI120, 1AFI130, 1AFI140, 1AFI150, 1RIE270, 236426-12, 1AST110 |  |  |  |  | 2d | 0d | 5-DW | COST [144600 h] | 144,600 |  | 23-05-01 HVAC | 126240 | HVAC | BL1A | 0001 | CO | 4 | HVAC | 1A-M101 | 006 |
| 1AFI200 |  | Elec Connect to Mec Unts - B1A | 5d | 2022-01-28 | 2022-02-04 | 1AFI160, 1AFI110, 1AFI180, 1AFI190, 1AFI170 |  |  |  |  | 5d | 4d | 5-DW | COST [4800 h] | 4,800 |  | 26-05-01 BUILDING ELECTRICAL | 4208 | ELEC | BL1A | 0001 | CO | 4 | ROUGH ELECTRICAL | 1A-E103 |  |
| 1AFI210 |  | Insulate Hydronic Piping - B1A | 8d | 2022-01-28 | 2022-02-10 | 1AFI190 |  |  |  |  | 2d | 1d | 5-DW | COST [32000 h] | 32,000 |  | 23-05-01 HVAC | 28000 | HVAC | BL1A | 0001 | CO | 4 | HVAC |  | 004 |
| 1AFI220 |  | Install Controls - B1A | 5d | 2022-01-28 | 2022-02-04 | 1AFI190 |  |  |  |  | 5d | 4d | 5-DW | COST [68000 h] | 68,000 |  | 23-09-01 DDC CONTROLS |  | CTRL | BL1A | 0001 | CO | 4 | HVAC CONTROLS |  |  |
| 1AFI230 |  | Install Light Fixtures - B1A | 5d | 2022-02-24 | 2022-03-02 | 1AFI110, 1AFI180, 1FIE880 SS, 265400-12, 265553-12, 265553-90, 265100-90 |  |  |  |  | 78d | 49d | 5-DW | COST [2500 h] | 2,500 |  | 26-05-01 BUILDING ELECTRICAL | 2425 | ELEC | BL1A | 0001 | CO | 4 | ROUGH ELECTRICAL | 1A-E101 |  |

Notes:
- 1AST110: Activity Notes: 6/25/2021 - Unlinked from Bldg 1A Slab; the Underslab Mech Piping is / outside the building foot print.

| ID | WBS | Activity | Duration | Start | Finish | Predecessors | Complete | Remaining | Planned start | Planned finish | Total float | Free float | Calendar | Resources | Cost | Actual cost | Specification | CS | RESP | AREA | BIDI | PHAS | CATW | FOW | Sheet | WRKP | NOTES |
| --- | --- | --- | --- | --- | --- | --- | --- | --- | --- | --- | --- | --- | --- | --- | --- | --- | --- | --- | --- | --- | --- | --- | --- | --- | --- | --- | --- |
|  | 12 | **Building 3 Water Well Pumphouse** |  | 2021-02-22 | 2022-04-11 |  |  |  |  |  |  |  |  |  |  |  |  |  |  |  |  |  |  |  |  |  |  |
|  | 1 | **Foundations & Slab** |  | 2021-02-22 | 2021-07-22 |  |  |  |  |  |  |  |  |  |  |  |  |  |  |  |  |  |  |  |  |  |  |
| 3FN200 |  | Underslab Shallow Elec - B3 | 5d | 2021-02-22 A | 2021-03-03 A | 3FN190 | 100% |  | 2021-07-08 | 2021-07-15 |  |  | 5-DW | COST [16000 h] | 16,000 | 16,000 | 26-05-01 BUILDING ELECTRICAL | 10791 | ELEC | BLD3 | 0003 | CO | 4 | U/G ELECTRICAL DIST |  |  |  |
| 3FN100 |  | Dig Ftgs & GBs - B3 & Tanks | 2d | 2021-02-25 A | 2021-07-02 | 1SGA150 | 75% | 1d | 2021-06-09 | 2021-06-10 | 2d | 0d | 5-DW | COST [3000 h] | 3,000 | 2,250 | 03-30-01 CAST IN PLACE CONCRETE / BELOW GRADE PROD | 2000 | CONC | BLD3 | 0003 | CO | 4 | CIP CONCRETE | 3-S101, SS113 |  |  |
| 3FN120 |  | Set Anchor Bolts - B3 & Tanks | 1d | 2021-03-09 A | 2021-07-07 | 3FN110 | 75% | 1d | 2021-05-28 | 2021-05-28 | 61d | 0d | 5-DW | COST [3000 h] | 3,000 | 2,250 | 03-30-01 CAST IN PLACE CONCRETE / BELOW GRADE PROD | 2000 | CONC | BLD3 | 0003 | CO | 4 | CIP CONCRETE | 3-S101, SS113 |  |  |
| 3FN110 |  | Spread Ftg Rebar - B3 & Tanks | 2d | 2021-03-17 A | 2021-07-06 | 3FN100 | 75% | 1d | 2021-05-26 | 2021-05-27 | 61d | 0d | 5-DW | COST [3000 h] | 3,000 | 2,250 | 03-20-01 REINFORCING STEEL |  | REBR | BLD3 | 0003 | CO | 4 | CONCRETE REINFORCE | 3-S101, SS113 |  |  |
| 3FN130 |  | Place Spread Ftgs - B3 & Tanks | 1d | 2021-03-17 A | 2021-07-08 | 3FN120 | 75% | 1d | 2021-06-01 | 2021-06-01 | 61d | 0d | 5-DW | COST [3000 h] | 3,000 | 2,250 | 03-30-01 CAST IN PLACE CONCRETE / BELOW GRADE PROD | 2000 | CONC | BLD3 | 0003 | CO | 4 | CIP CONCRETE | 3-S101, SS113 |  |  |
| 3FN140 |  | Form Grade Beams - B3 & Tanks | 3d | 2021-04-12 A | 2021-07-09 | 3FN100, 3FN130 | 75% | 1d | 2021-07-01 | 2021-07-06 | 61d | 0d | 5-DW | COST [6000 h] | 6,000 | 4,500 | 03-30-01 CAST IN PLACE CONCRETE / BELOW GRADE PROD | 4000 | CONC | BLD3 | 0003 | CO | 4 | CIP CONCRETE | 3-S101, SS113 |  |  |
| 3FN150 |  | Grade Beam Rebar - B3 & Tanks | 3d | 2021-04-13 A | 2021-07-09 | 3FN140 SS+3d, 3FN140 FF, 3FN130 | 75% | 1d | 2021-07-07 | 2021-07-09 | 61d | 0d | 5-DW | COST [3000 h] | 3,000 | 2,250 | 03-20-01 REINFORCING STEEL |  | REBR | BLD3 | 0003 | CO | 4 | CONCRETE REINFORCE | 3-S101, SS113 |  |  |
| 3FN160 |  | Place Grade Beams - B3 & Tanks | 1d | 2021-04-19 A | 2021-07-12 | 3FN150 | 75% | 1d | 2021-07-12 | 2021-07-12 | 61d | 0d | 5-DW | COST [6000 h] | 6,000 | 4,500 | 03-30-01 CAST IN PLACE CONCRETE / BELOW GRADE PROD | 4000 | CONC | BLD3 | 0003 | CO | 4 | CIP CONCRETE | 3-S101, SS113 |  |  |
| 3FN170 |  | Cure Grade Beams - B3 & Tanks | 3d | 2021-04-19 A | 2021-07-13 | 3FN160 | 75% | 1d | 2021-07-13 | 2021-07-15 | 93d | 1d | 7-D | COST [700 h] | 700 | 525 | 03-30-01 CAST IN PLACE CONCRETE / BELOW GRADE PROD | 500 | CONC | BLD3 | 0003 | CO | 4 | CIP CONCRETE | 3-S101, SS113 |  |  |
| 3FN190 |  | Grade Pad/Remove Spoils - B3 | 2d | 2021-04-23 A | 2021-04-23 A | 3FN180 | 100% |  | 2021-07-19 | 2021-07-20 |  |  | 5-DW | COST [4000 h] | 4,000 | 4,000 | 03-30-01 CAST IN PLACE CONCRETE / BELOW GRADE PROD | 2500 | CONC | BLD3 | 0003 | CO | 4 | CLEAR/GRUB/GRADING | 3-S101, SS113 |  |  |
| 3FN180 |  | Strip Grade Beams - B3 & Tanks | 1d | 2021-04-26 A | 2021-07-15 | 3FN170 | 75% | 1d | 2021-07-16 | 2021-07-16 | 60d | 0d | 5-DW | COST [3000 h] | 3,000 | 2,250 | 03-30-01 CAST IN PLACE CONCRETE / BELOW GRADE PROD | 1500 | CONC | BLD3 | 0003 | CO | 4 | CIP CONCRETE | 3-S101, SS113 |  |  |
| 3FN210 |  | Set 6" Base - B3 | 2d | 2021-04-27 A | 2021-04-28 A | 3FN200 | 100% |  | 2021-07-21 | 2021-07-22 |  |  | 5-DW | COST [3000 h] | 3,000 | 3,000 | 03-30-01 CAST IN PLACE CONCRETE / BELOW GRADE PROD | 1500 | CONC | BLD3 | 0003 | CO | 4 | CIP CONCRETE |  |  |  |
| 3FN220 |  | Vapor Barrier - B3 | 1d | 2021-04-28 A | 2021-04-28 A | 3FN200, 3FN210 | 100% |  | 2021-07-23 | 2021-07-23 |  |  | 5-DW | COST [2000 h] | 2,000 | 2,000 | 03-30-01 CAST IN PLACE CONCRETE / BELOW GRADE PROD | 1000 | CONC | BLD3 | 0003 | CO | 4 | CIP CONCRETE |  |  |  |
| 3FN230 |  | Slab Rebar - B3 | 2d | 2021-04-29 A | 2021-04-30 A | 3FN220 | 100% |  | 2021-07-26 | 2021-07-27 |  |  | 5-DW | COST [3000 h] | 3,000 | 3,000 | 03-20-01 REINFORCING STEEL |  | REBR | BLD3 | 0003 | CO | 4 | CONCRETE REINFORCE |  |  |  |
| 3FN240 |  | Place Concrete Slab - B3 | 1d | 2021-05-10 A | 2021-05-10 A | 3FN230 | 100% |  | 2021-05-21 | 2021-05-21 |  |  | 5-DW | COST [12000 h] | 12,000 | 12,000 | 03-30-01 CAST IN PLACE CONCRETE / BELOW GRADE PROD | 7500 | CONC | BLD3 | 0003 | CO | 4 | CIP CONCRETE |  |  |  |
| 3FN250 |  | Cure Concrete Slab - B3 | 7d | 2021-05-10 A | 2021-05-14 A | 3FN240 | 100% |  | 2021-05-22 | 2021-05-28 |  |  | 7-D | COST [1500 h] | 1,500 | 1,500 | 03-30-01 CAST IN PLACE CONCRETE / BELOW GRADE PROD | 1000 | CONC | BLD3 | 0003 | CO | 4 | CIP CONCRETE |  |  |  |
| 3FN260 |  | Form Equip Pads - B3 | 2d | 2021-07-16 | 2021-07-19 | 3FN250 |  |  |  |  | 60d | 0d | 5-DW | COST [1500 h] | 1,500 |  | 03-30-01 CAST IN PLACE CONCRETE / BELOW GRADE PROD | 1000 | CONC | BLD3 | 0003 | CO | 4 | CIP CONCRETE |  |  |  |
| 3FN270 |  | Rebar Equip Pads - B3 | 2d | 2021-07-20 | 2021-07-21 | 3FN260 |  |  |  |  | 60d | 0d | 5-DW | COST [2500 h] | 2,500 |  | 03-20-01 REINFORCING STEEL |  | REBR | BLD3 | 0003 | CO | 4 | CONCRETE REINFORCE |  |  |  |
| 3FN280 |  | Place Equip Pads - B3 | 1d | 2021-07-22 | 2021-07-22 | 3FN270 |  |  |  |  | 60d | 51d | 5-DW | COST [4000 h] | 4,000 |  | 03-30-01 CAST IN PLACE CONCRETE / BELOW GRADE PROD | 2000 | CONC | BLD3 | 0003 | CO | 4 | CIP CONCRETE |  |  |  |
|  | 2 | **Structure & Exterior** |  | 2021-06-02 | 2022-04-11 |  |  |  |  |  |  |  |  |  |  |  |  |  |  |  |  |  |  |  |  |  |  |
| 3ST100 |  | Unload/Shakeout Mtl Bldg - B3 | 2d | 2021-06-02 A | 2021-06-04 A | 1STE100 | 100% |  | 2021-06-01 | 2021-06-02 |  |  | 5-DW | COST [190000 h] | 190,000 | 190,000 | 13-34-01 METAL BUILDING SYSTEMS | 128045 | PEMB | BLD3 | 0003 | CO | 4 | METAL BUILDING SYS |  |  |  |
| 3ST140 |  | Metal Panels/Air Barrier - B3 | 5d | 2021-06-02 A | 2021-10-26 | 3ST120, 3ST130 | 45% | 5d | 2021-10-08 | 2021-10-15 | 9d | 0d | 5-DW | COST [70000 h] | 70,000 | 31,500 | 13-34-01 METAL BUILDING SYSTEMS | 45598.15 | PEMB | BLD3 | 0003 | CO | 4 | METAL BUILDING SYS |  |  |  |
| 3ST150 |  | Trim, Gutters, Downspouts - B3 | 5d | 2021-06-02 A | 2021-11-03 | 3ST140 | 45% | 5d | 2021-10-18 | 2021-10-25 | 136d | 84d | 5-DW | COST [4000 h] | 4,000 | 1,800 | 13-34-01 METAL BUILDING SYSTEMS | 2560 | PEMB | BLD3 | 0003 | CO | 4 | METAL BUILDING SYS |  |  |  |
| 3ST120 |  | Erect Metal Bldg Struct - B3 | 5d | 2021-06-07 A | 2021-06-18 A | 3FN250, 1AST130, 3FN280, 1STE180, 3ST100 | 100% |  | 2021-09-23 | 2021-09-29 |  |  | 5-DW | COST [80000 h] | 80,000 | 80,000 | 13-34-01 METAL BUILDING SYSTEMS | 51218.15 | PEMB | BLD3 | 0003 | CO | 4 | METAL BUILDING SYS |  |  |  |
| 3ST130 |  | CMU Wall - B3 | 5d | 2021-10-11 | 2021-10-18 | 3ST120 |  |  |  |  | 9d | 0d | 5-DW | COST [20000 h] | 20,000 |  | 04-20-01 MASONRY | 13064 | MASO | BLD3 | 0003 | CO | 4 | MASONRY |  | 006 |  |
| 3ST160 |  | Light Pole Bases - B3 | 3d | 2021-10-27 | 2021-10-29 | 3ST140, SIT2000 |  |  |  |  | 82d | 39d | 5-DW | COST [6200 h] | 6,200 |  | 03-30-01 CAST IN PLACE CONCRETE / BELOW GRADE PROD | 5000 | CONC | BLD3 | 0005 | CO | 4 | CIP CONCRETE |  |  | 1/20/21 - Revised |
| 3ST110 |  | Set Water Tanks - B3 | 5d | 2021-11-09 | 2021-11-17 | 3FN180, 331615-12, PREP1360, 264214-02 |  |  |  |  | 32d | 21d | 5-DW | COST [387600 h] | 387,600 |  | 33-16-01 WATER STORAGE TANKS |  | WELL | BLD3 | 0005 | CO | 4 | WATER STORAGE TANKS |  |  | 1/20/21 - Revised |
| 3ST180 |  | FRP Door Frames - B3 | 1d | 2021-11-23 | 2021-11-23 | 3FI180, 082200-21 |  |  |  |  | 120d | 0d | 5-DW | COST [1500 h] | 1,500 |  | 08-11-01 DOORS, FRAMES & HARDWARE |  | DOOR | BLD3 | 0003 | CO | 4 | DOORS AND FRAMES |  |  |  |
| 3ST190 |  | FRP Doors - B3 | 2d | 2021-11-29 | 2021-11-30 | 3ST180 |  |  |  |  | 120d | 0d | 5-DW | COST [19000 h] | 19,000 |  | 08-11-01 DOORS, FRAMES & HARDWARE |  | DOOR | BLD3 | 0003 | CO | 4 | DOORS AND FRAMES |  |  |  |
| 3ST170 |  | Install Louvers - B3 | 5d | 2021-12-02 | 2021-12-09 | 3FI180, 089100-21 |  |  |  |  | 117d | 31d | 5-DW | COST [2200 h] | 2,200 |  | 23-05-01 HVAC |  | HVAC | BLD3 | 0003 | CO | 4 | HVAC |  |  |  |
| 3ST200 |  | Door Hardware - B3 | 2d | 2021-12-02 | 2021-12-03 | 3ST190 |  |  |  |  | 120d | 34d | 5-DW | COST [2200 h] | 2,200 |  | 08-11-01 DOORS, FRAMES & HARDWARE |  | DOOR | BLD3 | 0003 | CO | 4 | DOORS AND FRAMES |  |  |  |
| 3ST220 |  | Set Well Equip - Existing Well | 5d | 2022-01-04 | 2022-01-10 | 3ST110, 3FI250, PREP1780, PRE-1050 |  |  |  |  | 11d | 1d | 5-DW | COST [55900 h] | 55,900 |  | 33-21-01 WATER WELLS |  | WELL | BLD3 | 0005 | CO | 4 | WATER SUPPLY WELLS | CU204 |  | 1/20/21 - Revised |
| 3ST210 |  | Light Poles - B3 | 2d | 2022-01-17 | 2022-01-19 | 3ST160, 265600-12, PREP1680, SIT2280 |  |  |  |  | 43d | 4d | 5-DW | COST [3300 h] | 3,300 |  | 26-05-01 BUILDING ELECTRICAL | 2910 | ELEC | BLD3 | 0003 | CO | 4 | FINISH ELECTRICAL |  |  |  |
| 3ST230 |  | Connect Site Water - B3 | 5d | 2022-01-19 | 2022-01-25 | 3ST220, 3FI260, 3FI290, 3FI250 |  |  |  |  | 78d | 0d | 5-DW | COST [300 h] | 300 |  | 22-05-01 PLUMBING |  | PLUM | BLD3 | 0003 | CO | 4 | PLUMBING |  |  |  |
| 3ST240 |  | Fine Grade - B3 | 5d | 2022-01-26 | 2022-02-02 | 3ST230, EL1200, 3FI260, 3FI290, 3FI250 |  |  |  |  | 78d | 0d | 5-DW | COST [61600 h] | 61,600 |  | 31-20-01 EARTHWORK | 50000 | GRAD | BLD3 | 0005 | CO | 4 | CLEAR/GRUB/GRADING |  | 008 | 1/20/21 - Revised |
| 3ST250 |  | Concrete Paving - B3 | 5d | 2022-02-04 | 2022-02-11 | 3ST240 |  |  |  |  | 78d | 0d | 5-DW | COST [6200 h] | 6,200 |  | 03-30-01 CAST IN PLACE CONCRETE / BELOW GRADE PROD | 5000 | CONC | BLD3 | 0005 | CO | 4 | CIP CONCRETE |  |  | 1/20/21 - Revised |
| 3ST260 |  | Fencing & Gates - B3 | 5d | 2022-02-14 | 2022-02-22 | 3ST240, PREP1800, 3ST250 |  |  |  |  | 78d | 26d | 5-DW | COST [29000 h] | 29,000 |  | 32-31-13 CHAIN LINK FENCING / HIGH SECURITY |  | FENC | BLD3 | 0005 | CO | 4 | CHAIN LINK FENCE |  | 004 | 1/20/21 - Revised |
| 3ST280 |  | Disinf/Flush Water Tanks - B3 | 5d | 2022-02-14 | 2022-02-22 | PM1200, 3ST230 |  |  |  |  | 68d | 25d | 5-DW | COST [1900 h] | 1,900 |  | 33-16-01 WATER STORAGE TANKS |  | WELL | BLD3 | 0005 | CO | 4 | WATER STORAGE TANKS |  |  | 1/20/21 - Revised |
| 3ST270 |  | Aggregate Base - B3 | 5d | 2022-04-05 | 2022-04-11 | 3ST260, 3ST160, PREP2080, CRR1050, 3ST240, 3ST150 |  |  |  |  | 52d | 0d | 5-DW | COST [61600 h] | 61,600 |  | 31-20-01 EARTHWORK | 50000 | GRAD | BLD3 | 0005 | CO | 4 | AGGREGATE SURFACING |  | 005 | 1/20/21 - Revised |

| ID | WBS | Activity | Duration | Start | Finish | Predecessors | Total float | Free float | Calendar | Resources | Cost | Specification | RESP | AREA | BIDI | PHAS | CATW | FOW | CS | WRKP | Sheet | NOTES |
| --- | --- | --- | --- | --- | --- | --- | --- | --- | --- | --- | --- | --- | --- | --- | --- | --- | --- | --- | --- | --- | --- | --- |
|  | 3 | **Interior** |  | 2021-10-27 | 2022-03-23 |  |  |  |  |  |  |  |  |  |  |  |  |  |  |  |  |  |
| 3FI100 |  | Plumbing Rough In - B3 | 5d | 2021-10-27 | 2021-11-02 | 3ST140 | 13d | 3d |  | COST [500 h] | 500 | 22-05-01 PLUMBING | PLUM | BLD3 | 0003 | CO | 5 | PLUMBING |  |  |  |  |
| 3FI110 |  | Electrical Rough In - B3 | 8d | 2021-10-27 | 2021-11-05 | 3ST140 | 10d | 0d |  | COST [19500 h] | 19,500 | 26-05-01 BUILDING ELECTRICAL | ELEC | BLD3 | 0003 | CO | 5 | ROUGH ELECTRICAL | 12949 |  |  |  |
| 3FI120 |  | Int Fire Suppression - B3 | 5d | 2021-10-27 | 2021-11-02 | 3ST140, 3ST140 FF | 23d | 13d |  | COST [65000 h] | 65,000 | 21-13-13 FIRE SPRINKLER SYSTEMS | FIRE | BLD3 | 0003 | CO | 5 | WET PIPE SPRINKLER |  |  |  |  |
| 3FI130 |  | Fire Alarm Rough In - B3 | 8d | 2021-10-27 | 2021-11-05 | 3ST140 | 10d | 0d |  | COST [4000 h] | 4,000 | 26-05-01 BUILDING ELECTRICAL | ELEC | BLD3 | 0003 | CO | 5 | FIRE ALARM SYSTEM | 2546 |  |  |  |
| 3FI140 |  | Security Rough In - B3 | 8d | 2021-10-27 | 2021-11-05 | 3ST140 | 10d | 0d |  | COST [2000 h] | 2,000 | 26-05-01 BUILDING ELECTRICAL | ELEC | BLD3 | 0003 | CO | 5 | ELECTRONIC SECURITY | 1231 |  |  |  |
| 3FI150 |  | Interior Insulation - B3 | 2d | 2021-11-08 | 2021-11-09 | 3FI100, 3FI110, 3FI130, 3FI140 | 10d | 0d |  | COST [700 h] | 700 | 13-34-01 METAL BUILDING SYSTEMS | PEMB | BLD3 | 0003 | CO | 5 | WALL INSULATION | 500 |  |  |  |
| 3FI160 |  | Pull Fire Alarm Wiring - B3 | 5d | 2021-11-08 | 2021-11-15 | 3FI130 | 48d | 15d |  | COST [1600 h] | 1,600 | 26-05-01 BUILDING ELECTRICAL | ELEC | BLD3 | 0003 | CO | 5 | FIRE ALARM SYSTEM | 1091 |  |  |  |
| 3FI170 |  | Pull Security Cable - B3 | 5d | 2021-11-08 | 2021-11-15 | 3FI140, CRS1180 | 114d | 5d |  | COST [3500 h] | 3,500 | 26-05-01 BUILDING ELECTRICAL | ELEC | BLD3 | 0003 | CO | 5 | ELECTRONIC SECURITY | 2285 |  |  |  |
| 3FI180 |  | Interior Liner Panels - B3 | 8d | 2021-11-10 | 2021-11-22 | 3FI150 | 10d | 0d |  | COST [4000 h] | 4,000 | 13-34-01 METAL BUILDING SYSTEMS | PEMB | BLD3 | 0003 | CO | 5 | METAL BUILDING SYS | 2560 |  |  |  |
| 3FI190 |  | HVAC System - B3 | 10d | 2021-11-23 | 2021-12-08 | 3FI180, 3FI120 | 10d | 0d |  | COST [42000 h] | 42,000 | 23-05-01 HVAC | HVAC | BLD3 | 0003 | CO | 5 | HVAC | 28500 | 004 |  |  |
| 3FI200 |  | Transformers & Panels - B3 | 5d | 2021-11-23 | 2021-12-01 | 3FI180, PREP1600 | 33d | 0d |  | COST [8000 h] | 8,000 | 26-05-01 BUILDING ELECTRICAL | ELEC | BLD3 | 0003 | CO | 5 | SET ELECTRICAL EQUIP | 5180 |  |  |  |
| 3FI210 |  | Security System - B3 | 5d | 2021-11-23 | 2021-12-01 | 3FI180, 3FI170 | 109d | 99d |  | COST [2500 h] | 2,500 | 26-05-01 BUILDING ELECTRICAL | ELEC | BLD3 | 0003 | CO | 5 | ELECTRONIC SECURITY | 1552 |  | GT501 |  |
| 3FI220 |  | Install Fire Pump - B3 | 5d | 2021-11-24 | 2021-12-02 | 213000-12, PREP1740, 3FI180 | 10d | 0d |  | COST [70000 h] | 70,000 | 21-13-13 FIRE SPRINKLER SYSTEMS | FIRE | BLD3 | 0003 | CO | 5 | FIRE PUMPS |  |  |  |  |
| 3FI230 |  | Power & Lighting Wire - B3 | 5d | 2021-12-02 | 2021-12-08 | 3FI110, 3FI200 | 33d | 0d |  | COST [6900 h] | 6,900 | 26-05-01 BUILDING ELECTRICAL | ELEC | BLD3 | 0003 | CO | 5 | ROUGH ELECTRICAL | 4662 |  |  |  |
| 3FI240 |  | Pull Feeders - B3 | 5d | 2021-12-02 | 2021-12-08 | 3FI200, EL1040, EL1140, CRS1180 | 33d | 0d |  | COST [36000 h] | 36,000 | 26-05-01 BUILDING ELECTRICAL | ELEC | BLD3 | 0003 | CO | 5 | ROUGH ELECTRICAL | 25946 |  |  |  |
| 3FI250 |  | Booster System w/ Pumps - B3 | 20d | 2021-12-03 | 2022-01-03 | 3FI220 | 10d | 0d |  | COST [55100 h] | 55,100 | 33-21-01 WATER WELLS | WELL | BLD3 | 0005 | CO | 5 | WATER SUPPLY WELLS |  |  | CU205 | 1/20/21 - Revised |
| 3FI260 |  | Water Softener Equip - B3 | 20d | 2021-12-03 | 2022-01-03 | 3FI220 | 20d | 10d |  | COST [700 h] | 700 | 22-05-01 PLUMBING | PLUM | BLD3 | 0003 | CO | 5 | PLUMBING |  |  | CU205 |  |
| 3FI280 |  | Makeup Elec Panels - B3 | 5d | 2021-12-09 | 2021-12-15 | 3FI240, 3FI230, 3FI160 | 33d | 32d |  | COST [1500 h] | 1,500 | 26-05-01 BUILDING ELECTRICAL | ELEC | BLD3 | 0003 | CO | 5 | SET ELECTRICAL EQUIP | 1036 |  |  |  |
| 3FI270 |  | Light Fixtures - B3 | 5d | 2021-12-16 | 2021-12-22 | 3FI190, 3FI230, 265400-12, 265553-12, 3FI160, PREP1680, 265553-90, 265100-90 | 125d | 31d |  | COST [7000 h] | 7,000 | 26-05-01 BUILDING ELECTRICAL | ELEC | BLD3 | 0003 | CO | 5 | FINISH ELECTRICAL | 4850 |  |  |  |
| 3FI290 |  | Water Treatment Equip - B3 | 20d | 2021-12-17 | 2022-01-17 | 3FI220, PREP1760, 432120-12, 3FI250 SS+10d | 10d | 0d |  | COST [55900 h] | 55,900 | 33-21-01 WATER WELLS | WELL | BLD3 | 0005 | CO | 5 | WATER TREATMENT EQP |  |  | CU205 | 1/20/21 - Revised |
| 3FI300 |  | Fire Alarm System - B3 | 10d | 2022-01-18 | 2022-01-31 | 3FI260, 3FI290, 3FI250 | 71d | 58d |  | COST [1000 h] | 1,000 | 26-05-01 BUILDING ELECTRICAL | ELEC | BLD3 | 0003 | CO | 5 | FIRE ALARM SYSTEM | 689 |  |  |  |
| 3FI310 |  | Install Controls - B3 | 5d | 2022-01-18 | 2022-01-24 | 3FI190, 3FI250, 3FI290, 3FI260 | 15d | 14d |  | COST [16000 h] | 16,000 | 23-09-01 DDC CONTROLS | CTRL | BLD3 | 0003 | CO | 5 | HVAC CONTROLS |  |  |  |  |
| 3FI320 |  | Elec Connections to Equip - B3 | 10d | 2022-01-18 | 2022-01-31 | 3FI260, 3FI290, 3FI250 | 10d | 0d |  | COST [3000 h] | 3,000 | 26-05-01 BUILDING ELECTRICAL | ELEC | BLD3 | 0003 | CO | 5 | ROUGH ELECTRICAL | 2072 |  |  |  |
| 3FI330 |  | Plumbing Insulation - B3 | 5d | 2022-01-18 | 2022-01-24 | 3FI260, 3FI290, 3FI250 | 104d | 10d |  | COST [700 h] | 700 | 22-05-01 PLUMBING | PLUM | BLD3 | 0003 | CO | 5 | PLUMBING |  |  |  |  |
| 3FI340 |  | Electrical Finish & Trim - B3 | 5d | 2022-02-01 | 2022-02-07 | 3FI320 | 94d | 0d |  | COST [600 h] | 600 | 26-05-01 BUILDING ELECTRICAL | ELEC | BLD3 | 0003 | CO | 5 | FINISH ELECTRICAL | 436 |  |  |  |
| 3FI350 |  | Final Clean - B3 | 5d | 2022-02-08 | 2022-02-14 | 3FI340, 3FI270, 3ST170, 3ST200, 3FI330 | 94d | 39d |  | COST [1100 h] | 1,100 | 02-42-01 FINAL CLEANING | FNCL | BLD3 | 0003 | CO | 5 |  |  |  |  |  |
| 3FI370 |  | Start Up/Flush Fire Pumps - B3 | 2d | 2022-02-14 | 2022-02-15 | PM1200, 3FI220 | 56d | 0d |  |  |  |  | FIRE | BLD3 | 0003 | RZ | 6 | FIRE PUMPS |  |  |  |  |
| 3FI360 |  | Flush Boost Pumps/Piping - B3 | 5d | 2022-02-16 | 2022-02-25 | PM1200, 3ST230, 3FI370 | 66d | 23d | 5-DW | COST [1000 h] | 1,000 | 33-16-01 WATER STORAGE TANKS | WELL | BLD3 | 0003 | RZ | 6 | WATER SUPPLY WELLS |  |  |  |  |
| 3FI380 |  | Prelim Test - Fire Pump | 5d | 2022-02-16 | 2022-02-23 | 3FI370 | 56d | 0d |  |  |  |  | FIRE | BLD3 | 0003 | RZ | 6 | FIRE PUMPS |  |  |  |  |
| 3FI390 |  | GOV Rev Fire Pump Pre Test Rpt | 7d | 2022-02-24 | 2022-03-02 | 3FI380 | 85d | 7d | 7-D |  |  |  | USAC | BLD3 | 0003 | RZ | 6 | FIRE PUMPS |  |  |  |  |
| 3FI410 |  | Schedule FAT w/ Gov -Fire Pump | 14d | 2022-02-24 | 2022-03-09 | 3FI380 | 78d | 0d | 7-D |  |  |  | FIRE | BLD3 | 0003 | RZ | 6 | FIRE PUMPS |  |  |  |  |
| 3FI420 |  | Perform FAT - Fire Pumps | 5d | 2022-03-10 | 2022-03-16 | 3FI390, 3FI410 | 56d | 0d |  |  |  |  | FIRE | BLD3 | 0003 | RZ | 6 | FIRE PUMPS |  |  |  |  |
| 3FI430 |  | GOV Rev FAT Report - Fire Pump | 7d | 2022-03-17 | 2022-03-23 | 3FI420 | 81d | 61d | 7-D |  |  |  | USAC | RDZN | 0003 | RZ | 6 | FIRE PUMPS |  |  |  |  |

| ID | WBS | Activity | Duration | Start | Finish | Predecessors | Complete | Remaining | Planned start | Planned finish | Total float | Free float | Calendar | Resources | Cost | Actual cost | Specification | CS | RESP | AREA | BIDI | PHAS | CATW | FOW |
| --- | --- | --- | --- | --- | --- | --- | --- | --- | --- | --- | --- | --- | --- | --- | --- | --- | --- | --- | --- | --- | --- | --- | --- | --- |
|  | 4 | **Building 4 Vehicle Wash Facility** |  | 2021-01-06 | 2022-05-05 |  |  |  |  |  |  |  |  |  |  |  |  |  |  |  |  |  |  |  |
|  | 1 | **Foundations** |  | 2021-01-06 | 2021-11-08 |  |  |  |  |  |  |  |  |  |  |  |  |  |  |  |  |  |  |  |
| 4FN100 |  | Dig/Form Deep Ftg/Pit Slab -B4 | 6d | 2021-01-06 A | 2021-07-09 | 3FN100 | 40% | 4d | 2021-07-01 | 2021-07-09 | 2d | 0d | 5-DW | COST [21800 h] | 21,800 | 8,720 | 03-30-01 CAST IN PLACE CONCRETE / BELOW GRADE PROD | 20000 | CONC | BLD4 | 0009 | CO | 4 | CIP CONCRETE |
| 4FN120 |  | Deep Ftg & Pit Slab Rebar - B4 | 2d | 2021-07-12 | 2021-07-13 | 4FN100 |  |  |  |  | 2d | 0d | 5-DW | COST [11200 h] | 11,200 |  | 03-20-01 REINFORCING STEEL |  | REBR | BLD4 | 0009 | CO | 4 | CONCRETE REINFORCE |
| 4FN140 |  | Place Deep Ftg & Pit Slab - B4 | 1d | 2021-07-15 | 2021-07-15 | 4FN120 |  |  |  |  | 2d | 0d | 5-DW | COST [27200 h] | 27,200 |  | 03-30-01 CAST IN PLACE CONCRETE / BELOW GRADE PROD | 25000 | CONC | BLD4 | 0009 | CO | 4 | CIP CONCRETE |
| 4FN160 |  | Form 1 Side CIP Walls - B4 | 5d | 2021-07-16 | 2021-07-22 | 4FN140 |  |  |  |  | 2d | 0d | 5-DW | COST [38100 h] | 38,100 |  | 03-30-01 CAST IN PLACE CONCRETE / BELOW GRADE PROD | 35000 | CONC | BLD4 | 0009 | CO | 4 | CIP CONCRETE |
| 4FN180 |  | CIP Wall Rebar - B4 | 5d | 2021-07-20 | 2021-07-26 | 4FN160 SS+2d |  |  |  |  | 2d | 0d | 5-DW | COST [14000 h] | 14,000 |  | 03-20-01 REINFORCING STEEL |  | REBR | BLD4 | 0009 | CO | 4 | CONCRETE REINFORCE |
| 4FN200 |  | Close CIP Wall Forms - B4 | 5d | 2021-07-27 | 2021-08-02 | 4FN180, 4FN160 |  |  |  |  | 2d | 0d | 5-DW | COST [38100 h] | 38,100 |  | 03-30-01 CAST IN PLACE CONCRETE / BELOW GRADE PROD | 35000 | CONC | BLD4 | 0009 | CO | 4 | CIP CONCRETE |
| 4FN220 |  | Place CIP Wall - B4 | 1d | 2021-08-03 | 2021-08-03 | 4FN200 |  |  |  |  | 2d | 0d | 5-DW | COST [21800 h] | 21,800 |  | 03-30-01 CAST IN PLACE CONCRETE / BELOW GRADE PROD | 20000 | CONC | BLD4 | 0009 | CO | 4 | CIP CONCRETE |
| 4FN240 |  | Cure CIP Walls - B4 | 7d | 2021-08-04 | 2021-08-10 | 4FN220 |  |  |  |  | 2d | 0d | 7-D | COST [2200 h] | 2,200 |  | 03-30-01 CAST IN PLACE CONCRETE / BELOW GRADE PROD | 2000 | CONC | BLD4 | 0009 | CO | 4 | CIP CONCRETE |
| 4FN260 |  | Strip CIP Walls - B4 | 4d | 2021-08-11 | 2021-08-16 | 4FN240 |  |  |  |  | 2d | 0d | 5-DW | COST [13100 h] | 13,100 |  | 03-30-01 CAST IN PLACE CONCRETE / BELOW GRADE PROD | 12000 | CONC | BLD4 | 0009 | CO | 4 | CIP CONCRETE |
| 4FN280 |  | Backfill CIP Walls - B4 | 4d | 2021-08-17 | 2021-08-23 | 4FN260 |  |  |  |  | 2d | 0d | 5-DW | COST [10900 h] | 10,900 |  | 03-30-01 CAST IN PLACE CONCRETE / BELOW GRADE PROD |  | GRAD | BLD4 | 0009 | CO | 4 | CLEAR/GRUB/GRADING |
| 4FN300 |  | UG Plumbing - B4 | 7d | 2021-08-24 | 2021-09-01 | 4FN280 |  |  |  |  | 2d | 0d | 5-DW | COST [38100 h] | 38,100 |  | 22-05-01 PLUMBING |  | PLUM | BLD4 | 0009 | CO | 4 | PLUMBING |
| 4FN320 |  | Deep Elec/Comm in Pad - B4 | 5d | 2021-09-02 | 2021-09-10 | 4FN300 |  |  |  |  | 2d | 0d | 5-DW | COST [3900 h] | 3,900 |  | 26-05-01 BUILDING ELECTRICAL | 3599 | ELEC | BLD4 | 0009 | CO | 4 | U/G ELECTRICAL DIST |
| 4FN340 |  | Dig Shallow Ftgs & GBs - B4 | 3d | 2021-09-13 | 2021-09-15 | 4FN320 |  |  |  |  | 2d | 0d | 5-DW | COST [14200 h] | 14,200 |  | 03-30-01 CAST IN PLACE CONCRETE / BELOW GRADE PROD | 13000 | CONC | BLD4 | 0009 | CO | 4 | CIP CONCRETE |
| 4FN360 |  | Form Shallow Ftgs & GBs - B4 | 4d | 2021-09-16 | 2021-09-21 | 4FN340 |  |  |  |  | 2d | 0d | 5-DW | COST [16300 h] | 16,300 |  | 03-30-01 CAST IN PLACE CONCRETE / BELOW GRADE PROD | 15000 | CONC | BLD4 | 0009 | CO | 4 | CIP CONCRETE |
| 4FN380 |  | Shallow Ftg Rebar - B4 | 4d | 2021-09-23 | 2021-09-28 | 4FN360 |  |  |  |  | 2d | 0d | 5-DW | COST [11200 h] | 11,200 |  | 03-20-01 REINFORCING STEEL |  | REBR | BLD4 | 0009 | CO | 4 | CONCRETE REINFORCE |
| 4FN400 |  | Set Anchor Bolts - B4 | 1d | 2021-09-29 | 2021-09-29 | 4FN380 |  |  |  |  | 2d | 0d | 5-DW | COST [3300 h] | 3,300 |  | 03-30-01 CAST IN PLACE CONCRETE / BELOW GRADE PROD | 3000 | CONC | BLD1 | 0009 | CO | 4 | CIP CONCRETE |
| 4FN420 |  | Place Shallow Ftg & GBs - B4 | 1d | 2021-09-30 | 2021-09-30 | 4FN400, 4FN360 |  |  |  |  | 2d | 0d | 5-DW | COST [21800 h] | 21,800 |  | 03-30-01 CAST IN PLACE CONCRETE / BELOW GRADE PROD | 20000 | CONC | BLD4 | 0009 | CO | 4 | CIP CONCRETE |
| 4FN440 |  | Cure Grade Beams - B4 | 3d | 2021-10-01 | 2021-10-03 | 4FN360 SS, 4FN360, 4FN420 |  |  |  |  | 4d | 0d | 7-D | COST [1100 h] | 1,100 |  | 03-30-01 CAST IN PLACE CONCRETE / BELOW GRADE PROD | 1000 | CONC | BLD4 | 0009 | CO | 4 | CIP CONCRETE |
| 4FN460 |  | Install Bollards - B4 | 3d | 2021-10-01 | 2021-10-05 | 4FN420 |  |  |  |  | 17d | 14d | 5-DW | COST [16300 h] | 16,300 |  | 03-30-01 CAST IN PLACE CONCRETE / BELOW GRADE PROD | 15000 | CONC | BLD4 | 0009 | CO | 4 | CIP CONCRETE |
| 4FN480 |  | Strip Grade Beams - B4 | 3d | 2021-10-04 | 2021-10-07 | 4FN440 |  |  |  |  | 3d | 0d | 5-DW | COST [10900 h] | 10,900 |  | 03-30-01 CAST IN PLACE CONCRETE / BELOW GRADE PROD | 10000 | CONC | BLD4 | 0009 | CO | 4 | CIP CONCRETE |
| 4FN500 |  | Underslab Shallow Plumbing -B4 | 5d | 2021-10-08 | 2021-10-15 | 4FN480 |  |  |  |  | 4d | 1d | 5-DW | COST [38100 h] | 38,100 |  | 22-05-01 PLUMBING |  | PLUM | BLD4 | 0009 | CO | 4 | PLUMBING |
| 4FN520 |  | Underslab Shallow Elec - B4 | 5d | 2021-10-08 | 2021-10-15 | 4FN480 |  |  |  |  | 4d | 0d | 5-DW | COST [2800 h] | 2,800 |  | 26-05-01 BUILDING ELECTRICAL | 2540 | ELEC | BLD4 | 0009 | CO | 4 | U/G ELECTRICAL DIST |
| 4FN540 |  | Form & Pour Trench Drain - B4 | 6d | 2021-10-08 | 2021-10-18 | 4FN480 |  |  |  |  | 3d | 0d | 5-DW | COST [5400 h] | 5,400 |  | 03-30-01 CAST IN PLACE CONCRETE / BELOW GRADE PROD | 5000 | CONC | BLD4 | 0009 | CO | 4 | CIP CONCRETE |
| 4FN560 |  | UG Elec to Vacuum/Air Equip | 5d | 2021-10-18 | 2021-10-25 | 4FN520 |  |  |  |  | 118d | 6d | 5-DW | COST [2100 h] | 2,100 |  | 26-05-01 BUILDING ELECTRICAL | 1905 | ELEC | BLD4 | 0009 | CO | 4 | ROUGH ELECTRICAL |
| 4FN580 |  | Set 6" Base - B4 | 2d | 2021-10-20 | 2021-10-21 | 4FN520, 4FN540, 4FN500 |  |  |  |  | 3d | 0d | 5-DW | COST [4900 h] | 4,900 |  | 03-30-01 CAST IN PLACE CONCRETE / BELOW GRADE PROD | 4500 | CONC | BLD4 | 0009 | CO | 4 | CIP CONCRETE |
| 4FN600 |  | Install Vapor Barrier - B4 | 2d | 2021-10-22 | 2021-10-25 | 4FN580 |  |  |  |  | 3d | 0d | 5-DW | COST [5200 h] | 5,200 |  | 03-30-01 CAST IN PLACE CONCRETE / BELOW GRADE PROD | 4800 | CONC | BLD4 | 0009 | CO | 4 | CIP CONCRETE |
| 4FN620 |  | Slab Rebar - B4 | 3d | 2021-10-26 | 2021-10-28 | 4FN600 |  |  |  |  | 3d | 0d | 5-DW | COST [8400 h] | 8,400 |  | 03-20-01 REINFORCING STEEL |  | REBR | BLD4 | 0009 | CO | 4 | CONCRETE REINFORCE |
| 4FN640 |  | Place Concrete Slab - B4 | 1d | 2021-10-29 | 2021-10-29 | 4FN620, 4FN460 |  |  |  |  | 3d | 0d | 5-DW | COST [43600 h] | 43,600 |  | 03-30-01 CAST IN PLACE CONCRETE / BELOW GRADE PROD | 40000 | CONC | BLD4 | 0009 | CO | 4 | CIP CONCRETE |
| 4FN660 |  | Cure Concrete Slab - B4 | 7d | 2021-10-30 | 2021-11-05 | 4FN640 |  |  |  |  | 6d | 2d | 7-D | COST [3800 h] | 3,800 |  | 03-30-01 CAST IN PLACE CONCRETE / BELOW GRADE PROD | 3500 | CONC | BLD4 | 0009 | CO | 4 | CIP CONCRETE |
| 4FN680 |  | Steel Curb Form Islands - B4 | 2d | 2021-11-01 | 2021-11-03 | 4FN640 |  |  |  |  | 112d | 0d | 5-DW | COST [3300 h] | 3,300 |  | 03-30-01 CAST IN PLACE CONCRETE / BELOW GRADE PROD | 3000 | CONC | BLD4 | 0009 | CO | 4 | CIP CONCRETE |
| 4FN700 |  | Rebar Islands for Vacuum - B4 | 2d | 2021-11-04 | 2021-11-05 | 4FN560, 4FN680 |  |  |  |  | 112d | 0d | 5-DW | COST [2800 h] | 2,800 |  | 03-20-01 REINFORCING STEEL |  | REBR | BLD4 | 0009 | CO | 4 | CONCRETE REINFORCE |
| 4FN720 |  | Place Islands for Vacuum - B4 | 1d | 2021-11-08 | 2021-11-08 | 4FN700 |  |  |  |  | 112d | 77d | 5-DW | COST [3700 h] | 3,700 |  | 03-30-01 CAST IN PLACE CONCRETE / BELOW GRADE PROD | 3425.94 | CONC | BLD4 | 0009 | CO | 4 | CIP CONCRETE |

Notes:
- 4FN100: Activity Notes: Excavated Deep Pit Slab in January 2021. / RFI-0070 - Bldg 4 Foundation vs Finish Grade
- 4FN320: Activity Notes: RFI 70 - Bldg 4 Foundation vs Finish Grade

| ID | WBS | Activity | Duration | Start | Finish | Predecessors | Total float | Free float | Calendar | Resources | Cost | Specification | CS | RESP | AREA | BIDI | PHAS | CATW | FOW |
| --- | --- | --- | --- | --- | --- | --- | --- | --- | --- | --- | --- | --- | --- | --- | --- | --- | --- | --- | --- |
|  | 2 | **Structure** |  | 2021-10-01 | 2022-05-05 |  |  |  |  |  |  |  |  |  |  |  |  |  |  |
| 4ST100 |  | Unload/Shakeout Canopy - B4,4A | 3d | 2021-10-01 | 2021-10-05 | 130480-12, 4FN420 | 22d | 19d | 5-DW | COST [246400 h] | 246,400 | 13-34-01 METAL BUILDING SYSTEMS | 238342 | PEMB | BLD4 | 0017 | CO | 4 | METAL BUILDING SYS |
| 4ST120 |  | Erect Canopy Columns - B4,4A | 1d | 2021-11-08 | 2021-11-08 | 4FN660, 3ST120, 130480-12, 4ST100 | 3d | 0d | 5-DW | COST [49300 h] | 49,300 | 13-34-01 METAL BUILDING SYSTEMS | 47668.4 | PEMB | BLD4 | 0017 | CO | 4 | METAL BUILDING SYS |
| 4ST140 |  | Erect CMU Walls - B4 | 15d | 2021-11-09 | 2021-12-08 | 4ST120, 4ST160 FF | 3d | 0d | 5-DW | COST [187000 h] | 187,000 | 04-20-01 MASONRY |  | MASO | BLD4 | 0009 | CO | 4 | MASONRY |
| 4ST160 |  | Set HM Frame in CMU - B4 | 1d | 2021-11-09 | 2021-11-09 | 4ST120 | 17d | 14d | 5-DW | COST [1100 h] | 1,100 | 04-20-01 MASONRY |  | MASO | BLD4 | 0009 | CO | 4 | MASONRY |
| 4ST180 |  | Struct Steel at Equip Rm - B4 | 2d | 2021-12-09 | 2021-12-10 | 4ST140 | 3d | 0d | 5-DW | COST [19600 h] | 19,600 | 05-12-01 STRUCTURAL STEEL |  | STEE | BLD4 | 0009 | CO | 4 | METAL BUILDING SYS |
| 4ST200 |  | Canopy Rf Stl/Mtl Deck -B4,4A | 15d | 2021-12-13 | 2022-01-11 | 4ST180 | 3d | 0d | 5-DW | COST [73900 h] | 73,900 | 13-34-01 METAL BUILDING SYSTEMS | 71502.6 | PEMB | BLD4 | 0017 | CO | 4 | METAL BUILDING SYS |
| 4ST220 |  | Canopy Mtl Panels/Facia -B4,4A | 10d | 2022-01-12 | 2022-01-28 | 4ST200 | 3d | 0d | 5-DW | COST [24600 h] | 24,600 | 13-34-01 METAL BUILDING SYSTEMS | 23834.2 | PEMB | BLD4 | 0017 | CO | 4 | METAL BUILDING SYS |
| 4ST240 |  | Mtl Stud Framing Equip Rm - B4 | 3d | 2022-01-12 | 2022-01-17 | 4ST200 | 48d | 0d | 5-DW | COST [5900 h] | 5,900 | 09-29-01 FRAMING & DRYWALL |  | FRAM | BLD4 | 0009 | CO | 4 | METAL STUD FRAMING |
| 4ST260 |  | Doors & HW to Equip Rm - B4 | 2d | 2022-01-19 | 2022-01-20 | 4ST240 | 52d | 20d | 5-DW | COST [4500 h] | 4,500 | 08-11-01 DOORS, FRAMES & HARDWARE |  | DOOR | BLD4 | 0009 | CO | 4 | DOORS AND FRAMES |
| 4ST280 |  | Insulation at Equip Rm - B4 | 5d | 2022-01-31 | 2022-02-04 | 4ST240, 4ST220 | 47d | 7d |  | COST [2000 h] | 2,000 | 07-20-01 BUILDING INSULATION |  | INSU | BLD4 | 0009 | CO | 5 | METAL BUILDING SYS |
| 4ST300 |  | HVAC System - B4 | 7d | 2022-01-31 | 2022-02-08 | 4ST220 | 4d | 3d |  | COST [18000 h] | 18,000 | 23-05-01 HVAC |  | HVAC | BLD4 | 0009 | CO | 5 | HVAC |
| 4ST320 |  | Gutter, Dwn Spout, Trim -B4,4A | 8d | 2022-01-31 | 2022-02-11 | 4ST220, 4ST240 | 62d | 0d | 5-DW | COST [49300 h] | 49,300 | 13-34-01 METAL BUILDING SYSTEMS | 47668.4 | PEMB | BLD4 | 0017 | CO | 4 | METAL BUILDING SYS |
| 4ST340 |  | Elec Rough In - B4 & Canopy | 15d | 2022-01-31 | 2022-02-25 | 4ST220 | 32d | 0d | 5-DW | COST [3900 h] | 3,900 | 26-05-01 BUILDING ELECTRICAL | 3599 | ELEC | BLD4 | 0009 | CO | 4 | ROUGH ELECTRICAL |
| 4ST360 |  | Rough In Plumbing - B4 | 10d | 2022-01-31 | 2022-02-15 | 4ST220 | 35d | 0d | 5-DW | COST [30900 h] | 30,900 | 22-05-01 PLUMBING |  | PLUM | BLD4 | 0009 | CO | 4 | PLUMBING |
| 4ST380 |  | Lightning Protection - B4,4A | 5d | 2022-02-14 | 2022-02-22 | 4ST320, EL1380 | 62d | 27d | 5-DW | COST [1200 h] | 1,200 | 26-05-01 BUILDING ELECTRICAL | 1058 | ELEC | BLD4 | 0009 | CO | 4 | LIGHTNING PROTECTION |
| 4ST400 |  | Wash Equip in Equip Rm - B4 | 15d | 2022-02-16 | 2022-03-09 | 4ST360, 4ST280, 111126-09 | 40d | 0d |  | COST [90000 h] | 90,000 | 11-11-26 VEHICLE WASH EQUIPMENT |  | VWSH | BLD4 | 0009 | CO | 5 | VEHICLE WASH EQUIP |
| 4ST420 |  | Power & Lighting Wire - B4,4A | 5d | 2022-02-28 | 2022-03-04 | 4ST340 | 50d | 0d | 5-DW | COST [2100 h] | 2,100 | 26-05-01 BUILDING ELECTRICAL | 1905 | ELEC | BLD4 | 0009 | CO | 4 | ROUGH ELECTRICAL |
| 4ST440 |  | Painting - B4 | 10d | 2022-02-28 | 2022-03-14 | 4ST340, 4ST260 | 32d | 0d | 5-DW | COST [2300 h] | 2,300 | 09-91-01 PAINTING & COATINGS |  | PAIN | BLD4 | 0009 | CO | 4 | PAINTING |
| 4ST460 |  | Pull Security Cable - B4 | 5d | 2022-02-28 | 2022-03-04 | 4ST340 | 37d | 5d | 5-DW | COST [1200 h] | 1,200 | 26-05-01 BUILDING ELECTRICAL | 1058 | ELEC | BLD4 | 0009 | CO | 4 | ELECTRONIC SECURITY |
| 4ST480 |  | Light Fixtures - B4 & Canopy | 5d | 2022-03-07 | 2022-03-14 | 4ST420 | 50d | 15d | 5-DW | COST [1600 h] | 1,600 | 26-05-01 BUILDING ELECTRICAL | 1482 | ELEC | BLD4 | 0009 | CO | 4 | FINISH ELECTRICAL |
| 4ST500 |  | Install Trench Grating - B4 | 2d | 2022-03-10 | 2022-03-11 | 4ST400 | 46d | 11d | 5-DW | COST [10500 h] | 10,500 |  |  | PRIM | BLD4 | 0009 | CO | 4 |  |
| 4ST520 |  | Elec Connections Equip Rm - B4 | 5d | 2022-03-10 | 2022-03-16 | 4ST420, 4ST400 | 51d | 0d |  | COST [900 h] | 900 | 26-05-01 BUILDING ELECTRICAL | 847 | ELEC | BLD4 | 0009 | CO | 4 | ROUGH ELECTRICAL |
| 4ST540 |  | Wash Equip at Wash Bays - B4 | 10d | 2022-03-15 | 2022-03-29 | 4ST400, 4ST440 | 35d | 0d | 5-DW | COST [90000 h] | 90,000 | 11-11-26 VEHICLE WASH EQUIPMENT |  | VWSH | BLD4 | 0009 | CO | 4 | VEHICLE WASH EQUIP |
| 4ST560 |  | Security Cameras - B4 & Canopy | 5d | 2022-03-15 | 2022-03-21 | 4ST460, 4ST440, 281005-12 | 32d | 22d | 5-DW | COST [1200 h] | 1,200 | 26-05-01 BUILDING ELECTRICAL | 1058 | ELEC | BLD4 | 0009 | CO | 4 | ELECTRONIC SECURITY |
| 4ST570 |  | Install Controls - B4 | 3d | 2022-03-17 | 2022-03-21 | 4ST520 | 65d | 28d |  | COST [10000 h] | 10,000 | 23-09-01 DDC CONTROLS |  | CTRL | BLD4 | 0009 | CO | 4 | HVAC CONTROLS |
| 4ST580 |  | Seal Floor - B4 | 5d | 2022-03-30 | 2022-04-05 | 4ST540, 4ST500 | 35d | 0d | 5-DW | COST [2200 h] | 2,200 | 09-63-43 QUARTZ FLOORING |  | PAIN | BLD4 | 0009 | CO | 4 | PAINTING |
| 4ST600 |  | Vacuum Cleaner/Air Units - B4 | 5d | 2022-03-30 | 2022-04-05 | 4ST540, 4FN720 | 35d | 0d | 5-DW | COST [47000 h] | 47,000 | 11-11-26 VEHICLE WASH EQUIPMENT |  | VWSH | BLD4 | 0009 | CO | 4 | VEHICLE WASH EQUIP |
| 4ST620 |  | Flush & Adjust Wash Equip | 5d | 2022-04-06 | 2022-04-12 | 4ST600, PM1200, 4ST580, 4ST520, 4ST480, 4ST380, 4ST300 | 35d | 0d | 5-DW | COST [2500 h] | 2,500 | 11-11-26 VEHICLE WASH EQUIPMENT |  | VWSH | BLD4 | 0009 | CO | 4 | VEHICLE WASH EQUIP |
| 4ST640 |  | SUBM Cert of Comp - Wash Equip | 5d | 2022-04-13 | 2022-04-19 | 4ST620 | 37d | 0d |  |  |  | 11-11-26 VEHICLE WASH EQUIPMENT |  | VWSH | BLD4 | 0009 | CO | 6 | VEHICLE WASH EQUIP |
| 4ST660 |  | GOV REV Cert of Comp -Wash Eqp | 7d | 2022-04-20 | 2022-04-26 | 4ST640 | 54d | 0d | 7-D |  |  | 11-11-26 VEHICLE WASH EQUIPMENT |  | USAC | BLD4 | 0009 | CO | 6 | VEHICLE WASH EQUIP |
| 4ST680 |  | Start-up, Test, Cx Wash Equip | 2d | 2022-04-27 | 2022-04-28 | 4ST600, PM1200, 4ST660 | 37d | 0d |  | COST [4200 h] | 4,200 | 11-11-26 VEHICLE WASH EQUIPMENT |  | VWSH | BLD4 | 0009 | CO | 6 | VEHICLE WASH EQUIP |
| 4ST700 |  | Final Clean - B4 | 5d | 2022-04-29 | 2022-05-05 | 4ST680, 4ST570 | 35d | 12d | 5-DW | COST [2003 h] | 2,003 | 02-42-01 FINAL CLEANING |  | FNCL | BLD4 | 0009 | CO | 4 |  |

| ID | WBS | Activity | Duration | Start | Finish | Predecessors | Total float | Free float | Calendar | Resources | Cost | Specification | CS | RESP | AREA | BIDI | PHAS | CATW | FOW |
| --- | --- | --- | --- | --- | --- | --- | --- | --- | --- | --- | --- | --- | --- | --- | --- | --- | --- | --- | --- |
|  | 5 | **Building 4A Vehicle Fueling Facility** |  | 2021-09-13 | 2022-05-24 |  |  |  |  |  |  |  |  |  |  |  |  |  |  |
| 4A1020 |  | UG Electrical - B4A | 8d | 2021-09-13 | 2021-09-23 | 4FN280, 4FN320 | 82d | 38d | 5-DW | COST [47400 h] | 47,400 | 26-05-01 BUILDING ELECTRICAL | 45814 | ELEC | BL4A | 0017 | CO | 4 | U/G ELECTRICAL DIST |
| 4A1000 |  | UG Fuel Piping to Generator | 10d | 2021-11-09 | 2021-11-29 | 335800-02, GRD1100, 335210-12 | 44d | 0d | 5-DW | COST [42500 h] | 42,500 | 21-10-01 FUEL SYSTEMS | 41068 | FUEL | BL4A | 0017 | CO | 4 | FUEL STORAGE TANKS |
| 4A1040 |  | Dig Fuel Tank Ftgs - B4A | 2d | 2021-11-30 | 2021-12-02 | 4A1020, 4A1000 | 44d | 0d | 5-DW | COST [7300 h] | 7,300 | 03-30-01 CAST IN PLACE CONCRETE / BELOW GRADE PROD | 7091 | CONC | BL4A | 0017 | CO | 4 | CIP CONCRETE |
| 4A1060 |  | Form Fuel Tank Ftgs -B4A | 3d | 2021-12-03 | 2021-12-08 | 4A1040 | 44d | 0d | 5-DW | COST [10300 h] | 10,300 | 03-30-01 CAST IN PLACE CONCRETE / BELOW GRADE PROD | 10000 | CONC | BL4A | 0017 | CO | 4 | CIP CONCRETE |
| 4A1080 |  | Rebar Fuel Tank Ftgs - B4A | 3d | 2021-12-09 | 2021-12-13 | 4A1060 | 44d | 0d | 5-DW | COST [6700 h] | 6,700 | 03-20-01 REINFORCING STEEL |  | REBR | BL4A | 0017 | CO | 4 | CONCRETE REINFORCE |
| 4A1100 |  | Place Fuel Tank Ftgs - B4A | 1d | 2021-12-14 | 2021-12-14 | 4A1080 | 44d | 0d | 5-DW | COST [17600 h] | 17,600 | 03-30-01 CAST IN PLACE CONCRETE / BELOW GRADE PROD | 17000 | CONC | BL4A | 0017 | CO | 4 | CIP CONCRETE |
| 4A1120 |  | Form & Pour Fuel Tank Pads | 5d | 2021-12-15 | 2021-12-21 | 4A1100, 4A1140 FF | 56d | 26d |  | COST [25800 h] | 25,800 | 03-30-01 CAST IN PLACE CONCRETE / BELOW GRADE PROD | 25000 | CONC | BL4A | 0017 | CO | 4 | CIP CONCRETE |
| 4A1140 |  | Rebar Fuel Tank Pads | 3d | 2021-12-15 | 2021-12-17 | 4A1100 | 58d | 2d |  | COST [6700 h] | 6,700 | 03-20-01 REINFORCING STEEL |  | REBR | BL4A | 0017 | CO | 4 | CONCRETE REINFORCE |
| 4A1160 |  | Install Bollards - B4A | 5d | 2022-01-31 | 2022-02-07 | 4A1100, 4ST220, 4A1120 | 25d | 0d | 5-DW | COST [42100 h] | 42,100 | 03-30-01 CAST IN PLACE CONCRETE / BELOW GRADE PROD | 40767 | CONC | BL4A | 0017 | CO | 4 | CIP CONCRETE |
| 4A1180 |  | Grade/Base Conc Paving - B4A | 4d | 2022-02-09 | 2022-02-14 | 4A1160 | 25d | 0d | 5-DW | COST [20700 h] | 20,700 | 32-13-13 SITE CONCRETE PAVING | 20000 | CONC | BL4A | 0017 | CO | 4 | CIP CONCRETE |
| 4A1200 |  | Form Concrete Paving - B4A | 4d | 2022-02-15 | 2022-02-22 | 4A1180 | 25d | 0d | 5-DW | COST [10300 h] | 10,300 | 32-13-13 SITE CONCRETE PAVING | 10000 | CONC | BL4A | 0017 | CO | 4 | CIP CONCRETE |
| 4A1220 |  | Rebar Concrete Paving - B4A | 3d | 2022-02-24 | 2022-02-28 | 4A1200 | 25d | 0d | 5-DW | COST [10300 h] | 10,300 | 03-20-01 REINFORCING STEEL |  | REBR | BL4A | 0017 | CO | 4 | CONCRETE REINFORCE |
| 4A1240 |  | Place Concrete Paving - B4A | 1d | 2022-03-01 | 2022-03-01 | 4A1220 | 25d | 0d | 5-DW | COST [41400 h] | 41,400 | 32-13-13 SITE CONCRETE PAVING | 40000 | CONC | BL4A | 0017 | CO | 4 | CIP CONCRETE |
| 4A1260 |  | Cure Concrete Paving - B4A | 7d | 2022-03-02 | 2022-03-08 | 4A1240 | 37d | 1d | 7-D | COST [3100 h] | 3,100 | 32-13-13 SITE CONCRETE PAVING | 3000 | CONC | BL4A | 0017 | CO | 4 | CIP CONCRETE |
| 4A1280 |  | Transformer & Panel - B4A | 5d | 2022-03-10 | 2022-03-16 | 4A1260 | 44d | 0d | 5-DW | COST [14200 h] | 14,200 | 26-05-01 BUILDING ELECTRICAL | 13744 | ELEC | BL4A | 0017 | CO | 4 | SET ELECTRICAL EQUIP |
| 4A1320 |  | Fuel Tanks & Equip - B4A | 35d | 2022-03-10 | 2022-04-29 | 335210-12, 335610-12, 335800-02, 4A1260 | 24d | 0d | 5-DW | COST [1249500 h] | 1,249,500 | 21-10-01 FUEL SYSTEMS | 1208676 | FUEL | BL4A | 0017 | CO | 4 | FUEL STORAGE TANKS |
| 4A1300 |  | Pull Feeders - B4A | 5d | 2022-03-17 | 2022-03-24 | 4A1280 | 44d | 0d | 5-DW | COST [28400 h] | 28,400 | 26-05-01 BUILDING ELECTRICAL | 27488 | ELEC | BL4A | 0017 | CO | 4 | ROUGH ELECTRICAL |
| 4A1340 |  | Makeup Electrical Panel - B4A | 5d | 2022-03-25 | 2022-03-31 | 4A1300 | 44d | 20d | 5-DW | COST [4700 h] | 4,700 | 26-05-01 BUILDING ELECTRICAL | 4581 | ELEC | BL4A | 0017 | CO | 4 | ROUGH ELECTRICAL |
| 4A1360 |  | Test, Adjust, Flush Fuel Equip | 3d | 2022-05-02 | 2022-05-04 | 4A1340, 4A1320, PM1200 | 24d | 0d | 5-DW | COST [3100 h] | 3,100 | 21-10-01 FUEL SYSTEMS | 3000 | FUEL | BL4A | 0017 | CO | 4 | FUEL STORAGE TANKS |
| 4A1380 |  | SUBM Cert of Comp - Fuel Equip | 1d | 2022-05-05 | 2022-05-05 | 4A1360 | 25d | 0d |  |  |  | 33-##-## FUEL SYSTEMS |  | FUEL | BL4A | 0017 | CO | 6 | FUEL STORAGE TANKS |
| 4A1400 |  | GOV Rev Cert of Comp -Fuel Eqp | 7d | 2022-05-06 | 2022-05-12 | 4A1380 | 38d | 0d | 7-D |  |  | 33-##-## FUEL SYSTEMS |  | USAC | BL4A | 0017 | CO | 6 | FUEL STORAGE TANKS |
| 4A1420 |  | Fill Fuel Tanks - B4A | 1d | 2022-05-06 | 2022-05-06 | 4A1380 | 29d | 4d |  | COST [41400 h] | 41,400 | 21-10-01 FUEL SYSTEMS |  | FUEL | BL4A | 0017 | CO | 4 | FUEL STORAGE TANKS |
| 4A1440 |  | Start-up, Test, Cx Fuel Equip | 2d | 2022-05-13 | 2022-05-16 | 4A1400, 4A1420 | 25d | 0d |  | COST [3100 h] | 3,100 | 21-10-01 FUEL SYSTEMS | 3000 | FUEL | BL4A | 0017 | CO | 6 | FUEL STORAGE TANKS |
| 4A1460 |  | Final Clean - B4A | 5d | 2022-05-17 | 2022-05-24 | 4A1440 | 23d | 0d | 5-DW | COST [2129 h] | 2,129 | 02-42-01 FINAL CLEANING |  | FNCL | BL4A | 0017 | CO | 4 |  |

Notes:
- 4A1000: Activity Notes: RFI 72 - Fuel Line vs Storm Drain

| ID | WBS | Activity | Duration | Start | Finish | Predecessors | Complete | Remaining | Planned start | Planned finish | Total float | Free float | Calendar | Resources | Cost | Actual cost | Specification | RESP | AREA | BIDI | PHAS | CATW | FOW | CS | Sheet |
| --- | --- | --- | --- | --- | --- | --- | --- | --- | --- | --- | --- | --- | --- | --- | --- | --- | --- | --- | --- | --- | --- | --- | --- | --- | --- |
|  | 7 | **Building 5 Canine Kennel Facility** |  | 2021-06-08 | 2022-03-18 |  |  |  |  |  |  |  |  |  |  |  |  |  |  |  |  |  |  |  |  |
|  | 1 | **Foundations** |  | 2021-06-08 | 2021-11-25 |  |  |  |  |  |  |  |  |  |  |  |  |  |  |  |  |  |  |  |  |
| 5FN100 |  | UG Plumbing - B5 | 5d | 2021-06-08 A | 2021-09-02 | 4FN300 | 95% | 1d | 2021-08-02 | 2021-08-06 | 31d | 17d | 5-DW | COST [27000 h] | 27,000 | 25,650 | 22-05-01 PLUMBING | PLUM | BLD5 | 0013 | CO | 4 | PLUMBING |  |  |
| 5FN120 |  | Dig Ftgs & GBs - B5 | 3d | 2021-06-18 A | 2021-06-21 A | 5FN100, 4FN420 | 100% |  | 2021-08-27 | 2021-08-31 |  |  | 5-DW | COST [4417 h] | 4,417 | 4,417 | 03-30-01 CAST IN PLACE CONCRETE / BELOW GRADE PROD | CONC | BLD5 | 0013 | CO | 4 | CIP CONCRETE | 4000 | 3-S101, SS113 |
| 5FN140 |  | Spread Ftg Rebar - B5 | 2d | 2021-10-01 | 2021-10-04 | 5FN120 |  |  |  |  | 14d | 0d | 5-DW | COST [2600 h] | 2,600 |  | 03-20-01 REINFORCING STEEL | REBR | BLD5 | 0013 | CO | 4 | CONCRETE REINFORCE |  | 3-S101, SS113 |
| 5FN160 |  | Set Anchor Bolts - B5 | 1d | 2021-10-05 | 2021-10-05 | 5FN140 |  |  |  |  | 14d | 0d | 5-DW | COST [3700 h] | 3,700 |  | 03-30-01 CAST IN PLACE CONCRETE / BELOW GRADE PROD | CONC | BLD5 | 0013 | CO | 4 | CIP CONCRETE | 3500 | 3-S101, SS113 |
| 5FN180 |  | Place Spread Ftgs - B5 | 1d | 2021-10-07 | 2021-10-07 | 5FN160 |  |  |  |  | 14d | 0d | 5-DW | COST [3200 h] | 3,200 |  | 03-30-01 CAST IN PLACE CONCRETE / BELOW GRADE PROD | CONC | BLD5 | 0013 | CO | 4 | CIP CONCRETE | 3000 | 3-S101, SS113 |
| 5FN200 |  | Form Grade Beams - B5 | 3d | 2021-10-08 | 2021-10-12 | 5FN120, 5FN180 |  |  |  |  | 14d | 0d | 5-DW | COST [5400 h] | 5,400 |  | 03-30-01 CAST IN PLACE CONCRETE / BELOW GRADE PROD | CONC | BLD5 | 0013 | CO | 4 | CIP CONCRETE | 5000 | 3-S101, SS113 |
| 5FN220 |  | Grade Beam Rebar - B5 | 3d | 2021-10-13 | 2021-10-18 | 5FN200 SS+3d, 5FN200 FF, 5FN180 |  |  |  |  | 14d | 0d | 5-DW | COST [2600 h] | 2,600 |  | 03-20-01 REINFORCING STEEL | REBR | BLD5 | 0013 | CO | 4 | CONCRETE REINFORCE |  | 3-S101, SS113 |
| 5FN240 |  | Place Grade Beams - B5 | 1d | 2021-10-20 | 2021-10-20 | 5FN220 |  |  |  |  | 14d | 0d | 5-DW | COST [4300 h] | 4,300 |  | 03-30-01 CAST IN PLACE CONCRETE / BELOW GRADE PROD | CONC | BLD5 | 0013 | CO | 4 | CIP CONCRETE | 4000 | 3-S101, SS113 |
| 5FN260 |  | Cure Grade Beams - B5 | 3d | 2021-10-21 | 2021-10-23 | 5FN240 |  |  |  |  | 22d | 1d | 7-D | COST [1000 h] | 1,000 |  | 03-30-01 CAST IN PLACE CONCRETE / BELOW GRADE PROD | CONC | BLD5 | 0013 | CO | 4 | CIP CONCRETE | 1000 | 3-S101, SS113 |
| 5FN280 |  | Strip Grade Beams - B5 | 2d | 2021-10-25 | 2021-10-26 | 5FN260 |  |  |  |  | 13d | 0d | 5-DW | COST [1000 h] | 1,000 |  | 03-30-01 CAST IN PLACE CONCRETE / BELOW GRADE PROD | CONC | BLD5 | 0013 | CO | 4 | CIP CONCRETE | 1000 | 3-S101, SS113 |
| 5FN300 |  | Grade Pad/Remove Spoils - B5 | 2d | 2021-10-27 | 2021-10-28 | 5FN280 |  |  |  |  | 13d | 0d | 5-DW | COST [2600 h] | 2,600 |  | 03-30-01 CAST IN PLACE CONCRETE / BELOW GRADE PROD | CONC | BLD5 | 0013 | CO | 4 | CLEAR/GRUB/GRADING | 2500 | 3-S101, SS113 |
| 5FN320 |  | Underslab Shallow Elec - B5 | 5d | 2021-10-29 | 2021-11-05 | 5FN300 |  |  |  |  | 13d | 0d | 5-DW | COST [16400 h] | 16,400 |  | 26-05-01 BUILDING ELECTRICAL | ELEC | BLD5 | 0013 | CO | 4 | U/G ELECTRICAL DIST | 15210 |  |
| 5FN340 |  | Set 6" Base - B5 | 2d | 2021-11-08 | 2021-11-09 | 5FN320 |  |  |  |  | 13d | 0d | 5-DW | COST [2100 h] | 2,100 |  | 03-30-01 CAST IN PLACE CONCRETE / BELOW GRADE PROD | CONC | BLD5 | 0013 | CO | 4 | CIP CONCRETE | 2000 |  |
| 5FN360 |  | Vapor Barrier - B5 | 1d | 2021-11-10 | 2021-11-10 | 5FN320, 5FN340 |  |  |  |  | 14d | 0d | 5-DW | COST [2100 h] | 2,100 |  | 03-30-01 CAST IN PLACE CONCRETE / BELOW GRADE PROD | CONC | BLD5 | 0013 | CO | 4 | CIP CONCRETE | 2000 |  |
| 5FN380 |  | Set Trench Drains - B5 | 4d | 2021-11-10 | 2021-11-17 | 5FN340 |  |  |  |  | 13d | 0d | 5-DW | COST [3200 h] | 3,200 |  | 03-30-01 CAST IN PLACE CONCRETE / BELOW GRADE PROD | CONC | BLD5 | 0013 | CO | 4 | CIP CONCRETE | 3000 |  |
| 5FN400 |  | Slab Rebar - B5 | 2d | 2021-11-12 | 2021-11-15 | 5FN360 |  |  |  |  | 14d | 1d | 5-DW | COST [2600 h] | 2,600 |  | 03-20-01 REINFORCING STEEL | REBR | BLD5 | 0013 | CO | 4 | CONCRETE REINFORCE |  |  |
| 5FN420 |  | Place Concrete Slab - B5 | 1d | 2021-11-18 | 2021-11-18 | 5FN400, 5FN380 |  |  |  |  | 13d | 0d | 5-DW | COST [6200 h] | 6,200 |  | 03-30-01 CAST IN PLACE CONCRETE / BELOW GRADE PROD | CONC | BLD5 | 0013 | CO | 4 | CIP CONCRETE | 5740 |  |
| 5FN440 |  | Cure Concrete Slab - B5 | 7d | 2021-11-19 | 2021-11-25 | 5FN420 |  |  |  |  | 26d | 3d | 7-D | COST [1000 h] | 1,000 |  | 03-30-01 CAST IN PLACE CONCRETE / BELOW GRADE PROD | CONC | BLD5 | 0013 | CO | 4 | CIP CONCRETE | 1000 |  |
|  | 2 | **Structure** |  | 2021-10-21 | 2022-03-18 |  |  |  |  |  |  |  |  |  |  |  |  |  |  |  |  |  |  |  |  |
| 5ST100 |  | Unload/Shakout Metal Bldg - B5 | 1d | 2021-10-21 | 2021-10-21 | 5FN240, 133419-59 |  |  |  |  | 33d | 20d | 5-DW | COST [81000 h] | 81,000 |  | 13-34-01 METAL BUILDING SYSTEMS | PEMB | BLD5 | 0013 | CO | 4 | METAL BUILDING SYS | 74709.5 |  |
| 5ST120 |  | Erect Metal Bldg Struct - B5 | 5d | 2021-11-29 | 2021-12-06 | 5FN440, 5ST100 |  |  |  |  | 13d | 0d | 5-DW | COST [32000 h] | 32,000 |  | 13-34-01 METAL BUILDING SYSTEMS | PEMB | BLD5 | 0013 | CO | 4 | METAL BUILDING SYS | 29883.8 |  |
| 5ST140 |  | CMU Walls - B5 | 10d | 2021-12-08 | 2021-12-27 | 5ST120 |  |  |  |  | 13d | 0d | 5-DW | COST [47000 h] | 47,000 |  | 04-20-01 MASONRY | MASO | BLD5 | 0013 | CO | 4 | MASONRY |  |  |
| 5ST160 |  | Ext Metal Panels - B5 | 5d | 2021-12-28 | 2022-01-06 | 5ST120, 5ST140 |  |  |  |  | 13d | 0d | 5-DW | COST [16000 h] | 16,000 |  | 13-34-01 METAL BUILDING SYSTEMS | PEMB | BLD5 | 0013 | CO | 4 | METAL BUILDING SYS | 14941.9 |  |
| 5ST180 |  | Trim, Gutter, Dwn Spouts - B5 | 5d | 2022-01-07 | 2022-01-14 | 5ST160 |  |  |  |  | 13d | 0d | 5-DW | COST [16000 h] | 16,000 |  | 13-34-01 METAL BUILDING SYSTEMS | PEMB | BLD5 | 0013 | CO | 4 | METAL BUILDING SYS | 14941.9 |  |
| 5ST200 |  | Spray Insul/Air Barrier - B5 | 3d | 2022-01-17 | 2022-01-19 | 5ST180 |  |  |  |  | 16d | 0d |  | COST [9700 h] | 9,700 |  | 07-20-01 BUILDING INSULATION | INSU | BLD5 | 0013 | CO | 5 | WALL INSULATION |  |  |
| 5ST220 |  | Transformer & Elec Panel - B5 | 5d | 2022-01-17 | 2022-01-24 | 5ST180 |  |  |  |  | 20d | 7d | 5-DW | COST [5300 h] | 5,300 |  | 26-05-01 BUILDING ELECTRICAL | ELEC | BLD5 | 0013 | CO | 4 | SET ELECTRICAL EQUIP | 5070 |  |
| 5ST240 |  | Metal Stud Framing - B5 | 5d | 2022-01-20 | 2022-01-26 | 5ST200 |  |  |  |  | 16d | 0d |  | COST [2000 h] | 2,000 |  | 09-29-01 FRAMING & DRYWALL | FRAM | BLD5 | 0013 | CO | 5 | METAL STUD FRAMING |  |  |
| 5ST260 |  | Plumbing Rough In - B5 | 7d | 2022-01-27 | 2022-02-04 | 5ST200, 5ST240 |  |  |  |  | 79d | 0d |  | COST [18100 h] | 18,100 |  | 22-05-01 PLUMBING | PLUM | BLD5 | 0013 | CO | 5 | PLUMBING |  |  |
| 5ST280 |  | Electrical Rough In - B5 | 7d | 2022-01-27 | 2022-02-04 | 5ST200, 5ST240 |  |  |  |  | 16d | 0d |  | COST [13400 h] | 13,400 |  | 26-05-01 BUILDING ELECTRICAL | ELEC | BLD5 | 0013 | CO | 5 | ROUGH ELECTRICAL | 12675 |  |
| 5ST300 |  | Door & Hardware - B5 | 2d | 2022-01-27 | 2022-01-28 | 5ST240 |  |  |  |  | 96d | 17d |  | COST [2500 h] | 2,500 |  | 08-11-01 DOORS, FRAMES & HARDWARE | DOOR | BLD5 | 0013 | CO | 5 | DOORS AND FRAMES |  |  |
| 5ST320 |  | Hang, Tape & Finish Gyp - B5 | 7d | 2022-02-07 | 2022-02-15 | 5ST280, 5ST260 |  |  |  |  | 79d | 0d |  | COST [2000 h] | 2,000 |  | 09-29-01 FRAMING & DRYWALL | FRAM | BLD5 | 0013 | CO | 5 | GYPSUM BOARD |  |  |
| 5ST340 |  | Power & Lighting Wire - B5 | 5d | 2022-02-07 | 2022-02-11 | 5ST280 |  |  |  |  | 16d | 0d |  | COST [8100 h] | 8,100 |  | 26-05-01 BUILDING ELECTRICAL | ELEC | BLD5 | 0013 | CO | 5 | ROUGH ELECTRICAL | 7605 |  |
| 5ST360 |  | Pull Feeders - B5 | 5d | 2022-02-07 | 2022-02-11 | 5ST280, 5ST220 |  |  |  |  | 16d | 0d |  | COST [5900 h] | 5,900 |  | 26-05-01 BUILDING ELECTRICAL | ELEC | BLD5 | 0013 | CO | 5 | ROUGH ELECTRICAL | 5577 |  |
| 5ST380 |  | Make-up Elec Panel - B5 | 5d | 2022-02-14 | 2022-02-18 | 5ST360, 5ST340 |  |  |  |  | 16d | 7d |  | COST [1600 h] | 1,600 |  | 26-05-01 BUILDING ELECTRICAL | ELEC | BLD5 | 0013 | CO | 5 | ROUGH ELECTRICAL | 1521 |  |
| 5ST400 |  | Painting - B5 | 5d | 2022-02-16 | 2022-02-23 | 5ST320 |  |  |  |  | 79d | 0d |  | COST [3300 h] | 3,300 |  | 09-91-01 PAINTING & COATINGS | PAIN | BLD5 | 0013 | CO | 5 | PAINTING |  |  |
| 5ST420 |  | Casework & Countertops - B5 | 5d | 2022-02-24 | 2022-03-02 | 5ST400, 5ST300 |  |  |  |  | 79d | 0d |  | COST [9500 h] | 9,500 |  | 06-40-01 CASEWORK / COUNTERTOPS | CASE | BLD5 | 0013 | CO | 5 | CASEWORK |  |  |
| 5ST440 |  | Chain Link Enclosure/Gates -B5 | 7d | 2022-02-24 | 2022-03-04 | 5ST400, 131931-09 |  |  |  |  | 86d | 7d |  | COST [53900 h] | 53,900 |  | 13-19-13 KENNEL ENCLOSURE & GATES | KENL | BLD5 | 0013 | CO | 5 | KENNEL ENCLOSURES |  |  |
| 5ST460 |  | Guillotine Doors - B5 | 5d | 2022-02-24 | 2022-03-02 | 5ST400, 131931-09 |  |  |  |  | 88d | 9d |  | COST [21300 h] | 21,300 |  | 13-19-13 KENNEL ENCLOSURE & GATES | KENL | BLD5 | 0013 | CO | 5 | KENNEL ENCLOSURES |  |  |
| 5ST480 |  | Split System HVAC Units - B5 | 4d | 2022-03-03 | 2022-03-08 | 5ST420 |  |  |  |  | 79d | 0d |  | COST [16100 h] | 16,100 |  | 23-05-01 HVAC | HVAC | BLD5 | 0013 | CO | 5 | HVAC |  |  |
| 5ST500 |  | Plumbing Fixtures - B5 | 3d | 2022-03-03 | 2022-03-07 | 5ST420 |  |  |  |  | 82d | 3d |  | COST [2200 h] | 2,200 |  | 22-05-01 PLUMBING | PLUM | BLD5 | 0013 | CO | 5 | PLUMBING |  |  |
| 5ST520 |  | Elec Finish, Trim, Fixture -B5 | 5d | 2022-03-03 | 2022-03-09 | 5ST420, 5ST340, 5ST380 |  |  |  |  | 80d | 1d |  | COST [3200 h] | 3,200 |  | 26-05-01 BUILDING ELECTRICAL | ELEC | BLD5 | 0013 | CO | 5 | FINISH ELECTRICAL | 3042 |  |
| 5ST540 |  | Big Fans - B5 | 2d | 2022-03-09 | 2022-03-10 | 5ST480 |  |  |  |  | 79d | 0d |  | COST [12400 h] | 12,400 |  | 23-05-01 HVAC | HVAC | BLD5 | 0013 | CO | 5 | HVAC |  |  |
| 5ST560 |  | Sealed Concrete Flooring - B5 | 3d | 2022-03-11 | 2022-03-15 | 5ST540, 5ST520, 5ST500, SIT2480 |  |  |  |  | 79d | 0d |  | COST [3200 h] | 3,200 |  | 09-63-43 QUARTZ FLOORING | PAIN | BLD5 | 0013 | CO | 5 | PAINTING |  |  |
| 5ST570 |  | Install Controls - B5 | 3d | 2022-03-11 | 2022-03-15 | 5ST540 |  |  |  |  | 79d | 0d |  | COST [7500 h] | 7,500 |  | 23-09-01 DDC CONTROLS | CTRL | BLD5 | 0013 | CO | 5 | HVAC CONTROLS |  |  |
| 5ST580 |  | Final Clean Bldg 5 | 3d | 2022-03-16 | 2022-03-18 | 5ST560, 5ST440, 5ST460, 5ST570 |  |  |  |  | 79d | 0d |  | COST [1500 h] | 1,500 |  | 02-42-01 FINAL CLEANING | FNCL | BLD5 | 0013 | CO | 5 |  |  |  |

| ID | WBS | Activity | Duration | Start | Finish | Predecessors | Complete | Remaining | Planned start | Planned finish | Total float | Free float | Calendar | Resources | Cost | Actual cost | Specification | RESP | AREA | BIDI | PHAS | CATW | FOW | CS | WRKP | NOTES | Sheet |
| --- | --- | --- | --- | --- | --- | --- | --- | --- | --- | --- | --- | --- | --- | --- | --- | --- | --- | --- | --- | --- | --- | --- | --- | --- | --- | --- | --- |
|  | 9 | **Second Water Well** |  | 2021-08-02 | 2021-08-27 |  |  |  |  |  |  |  |  |  |  |  |  |  |  |  |  |  |  |  |  |  |  |
| WELL100 |  | Drill Well/Set Equip -2nd Well | 5d | 2021-08-02 | 2021-08-06 | PRE-1050, PM1090 |  |  |  |  | 193d | 0d |  | COST [456500 h] | 456,500 |  | 33-21-01 WATER WELLS | WELL | WELL | 0012 | CO | 4 | WATER SUPPLY WELLS |  |  |  |  |
| WELL200 |  | House Keeping Pad - 2nd Well | 5d | 2021-08-09 | 2021-08-13 | WELL100 |  |  |  |  | 193d | 0d |  | COST [2472 h] | 2,472 |  | 03-30-01 CAST IN PLACE CONCRETE / BELOW GRADE PROD | CONC | WELL | 0012 | CO | 4 | CIP CONCRETE |  |  |  |  |
| WELL400 |  | UG Water/Connect - 2nd Well | 10d | 2021-08-09 | 2021-08-20 | WELL100 |  |  |  |  | 198d | 153d |  | COST [24700 h] | 24,700 |  | 33-21-01 WATER WELLS | WELL | WELL | 0012 | CO | 4 | WATER SUPPLY WELLS |  |  |  |  |
| WELL300 |  | UG Elec/Connect - 2nd Well | 10d | 2021-08-16 | 2021-08-27 | WELL200 |  |  |  |  | 193d | 148d |  | COST [8900 h] | 8,900 |  | 26-05-01 BUILDING ELECTRICAL | ELEC | WELL | 0012 | CO | 4 | U/G ELECTRICAL DIST | 8770 |  |  |  |
|  | 8 | **Site Improvements** |  | 2021-02-03 | 2022-06-23 |  |  |  |  |  |  |  |  |  |  |  |  |  |  |  |  |  |  |  |  |  |  |
|  | 4 | **Upper Parking Lot (Light Duty Paving)** |  | 2021-02-03 | 2022-04-01 |  |  |  |  |  |  |  |  |  |  |  |  |  |  |  |  |  |  |  |  |  |  |
| SIT1000 |  | UG Light/ESS Conduit -Upper PL | 10d | 2021-02-03 A | 2021-09-21 | SD1160, GRD1180, EL1320, EL1340 | 95% | 1d | 2021-05-24 | 2021-06-07 | 43d | 0d | 5-DW | COST [85000 h] | 85,000 | 80,750 | 26-05-01 BUILDING ELECTRICAL | ELEC | SITD | 0005 | CO | 4 | U/G ELECTRICAL DIST | 61689 |  |  |  |
| SIT1020 |  | Curb Grade - Upper Parking | 5d | 2021-09-23 | 2021-09-29 | SD1160, GRD1240, SD1200, SIT1000, EL1240, EL1260, EL1100, EL1280, EL1300, EL1120 |  |  |  |  | 46d | 0d | 5-DW | COST [48000 h] | 48,000 |  | 31-20-01 EARTHWORK | GRAD | SITD | 0005 | CO | 4 | CLEAR/GRUB/GRADING | 35000 | 005 |  |  |
| SIT1040 |  | Light Pole Bases - Upper PL | 5d | 2021-09-30 | 2021-10-07 | SIT1000, SIT1020 |  |  |  |  | 46d | 15d | 5-DW | COST [48000 h] | 48,000 |  | 03-30-01 CAST IN PLACE CONCRETE / BELOW GRADE PROD | CONC | SITD | 0005 | CO | 4 | CIP CONCRETE | 35000 |  |  |  |
| SIT1060 |  | Form/Pour C & G - Upper PL | 15d | 2021-11-03 | 2021-11-30 | SIT1020, SIT1000, SLP1160, SIT1040, SIT1070 FF+1d |  |  |  |  | 31d | 0d | 5-DW | COST [49300 h] | 49,300 |  | 03-30-01 CAST IN PLACE CONCRETE / BELOW GRADE PROD | CONC | SITD | 0005 | CO | 4 | CIP CONCRETE | 40000 |  | 1/20/21 - Revised |  |
| SIT1070 |  | Rebar Curb & Gutter - Upper PL | 5d | 2021-11-03 | 2021-11-09 | SLP1160 |  |  |  |  | 40d | 9d | 5-DW | COST [46200 h] | 46,200 |  | 03-20-01 REINFORCING STEEL | REBR | SITD | 0005 | CO | 4 | CONCRETE REINFORCE |  |  | 1/20/21 - Revised |  |
| SIT1100 |  | Fine Grade & Base - Upper PL | 10d | 2021-12-02 | 2021-12-17 | SIT1060, 321123-02 |  |  |  |  | 102d | 0d | 5-DW | COST [83200 h] | 83,200 |  | 31-20-01 EARTHWORK | GRAD | SITD | 0005 | CO | 4 | CLEAR/GRUB/GRADING | 67500 | 005 | 1/20/21 - Revised |  |
| SIT1120 |  | AC Paving - Upper Parking | 5d | 2021-12-20 | 2021-12-29 | SIT1100, 321216-02, PREP1460 |  |  |  |  | 102d | 35d | 5-DW | COST [197300 h] | 197,300 |  | 32-12-16 ASPHALT PAVING | PAVE | SITD | 0005 | CO | 4 | HOT MIX ASPHALT |  |  | 1/20/21 - Revised |  |
| SIT1110 |  | Diversion Channel - Upper PL | 10d | 2022-02-25 | 2022-03-11 | SIT1060, SIT2320 |  |  |  |  | 62d | 0d | 5-DW | COST [247900 h] | 247,900 |  | 03-30-01 CAST IN PLACE CONCRETE / BELOW GRADE PROD | CONC | SITD | 0005 | CO | 4 | CIP CONCRETE | 201000 |  | 1/20/21 - Revised |  |
| SIT1160 |  | Stone Rip Rap - Upper PL | 10d | 2022-03-14 | 2022-03-28 | SIT1120, PREP2020, SIT1110 |  |  |  |  | 62d | 39d | 5-DW | COST [30900 h] | 30,900 |  | 31-20-01 EARTHWORK | GRAD | SITD | 0005 | CO | 4 | RIPRAP |  |  | 1/20/21 - Revised |  |
| SIT1180 |  | Stairs/Handrail - Parking Lot | 5d | 2022-03-28 | 2022-04-01 | SIT1120, 055100-09, 055200-09, SIT2580 |  |  |  |  | 58d | 35d | 5-DW | COST [89500 h] | 89,500 |  | 05-12-01 STRUCTURAL STEEL | STEE | SITD | 0005 | CO | 4 |  |  |  | 1/20/21 - Revised |  |
|  | 2 | **Lower Parking & Access Roads (Heavy Duty Paving)** |  | 2021-02-08 | 2022-06-23 |  |  |  |  |  |  |  |  |  |  |  |  |  |  |  |  |  |  |  |  |  |  |
| SIT2000 |  | UG Light/ESS Conduit - Lower | 20d | 2021-02-08 A | 2021-09-24 | SIT1000, 1STE120, 1STA100 | 95% | 1d | 2021-08-10 | 2021-09-09 | 42d | 0d | 5-DW | COST [82400 h] | 82,400 | 78,280 | 26-05-01 BUILDING ELECTRICAL | ELEC | SITD | 0005 | CO | 4 | U/G ELECTRICAL DIST | 66830 |  | 1/20/21 - Revised |  |
| SIT2020 |  | Curb Grade - Lower PL/Drives | 8d | 2021-10-27 | 2021-11-08 | SIT2000, SS1100, SD1180, WA1100 |  |  |  |  | 23d | 0d | 5-DW | COST [43900 h] | 43,900 |  | 31-20-01 EARTHWORK | GRAD | SITD | 0005 | CO | 4 | CLEAR/GRUB/GRADING | 35625 | 005 | 1/20/21 - Revised |  |
| SIT2040 |  | Dig & Form Monument Sign Ftg | 2d | 2021-11-09 | 2021-11-10 | SIT2020 |  |  |  |  | 125d | 0d | 5-DW | COST [2400 h] | 2,400 |  | 03-30-01 CAST IN PLACE CONCRETE / BELOW GRADE PROD | CONC | SITD | 0005 | CO | 4 | CIP CONCRETE | 2000 |  | 1/20/21 - Revised |  |
| SIT2060 |  | Light Pole Bases - Lower | 5d | 2021-11-09 | 2021-11-17 | SIT2020 |  |  |  |  | 37d | 6d | 5-DW | COST [43200 h] | 43,200 |  | 03-30-01 CAST IN PLACE CONCRETE / BELOW GRADE PROD | CONC | SITD | 0005 | CO | 4 | CIP CONCRETE | 35000 |  | 1/20/21 - Revised |  |
| SIT2080 |  | Fine Grade Around Bldgs | 5d | 2021-11-09 | 2021-11-17 | SIT2000, SIT2020, SS1100, EL1220 |  |  |  |  | 117d | 28d | 5-DW | COST [61600 h] | 61,600 |  | 31-20-01 EARTHWORK | GRAD | SITD | 0005 | CO | 4 | CLEAR/GRUB/GRADING | 50000 | 005 | 1/20/21 - Revised |  |
| SIT2100 |  | Form & Pour 6" Curb | 20d | 2021-11-09 | 2021-12-15 | SIT2020 |  |  |  |  | 23d | 0d | 5-DW | COST [182500 h] | 182,500 |  | 03-30-01 CAST IN PLACE CONCRETE / BELOW GRADE PROD | CONC | SITI | 0005 | CO | 4 | CIP CONCRETE | 148000 |  | 1/20/21 - Revised |  |
| SIT2120 |  | Rebar Monument Sign Ftg | 2d | 2021-11-12 | 2021-11-15 | SIT2040 |  |  |  |  | 125d | 0d | 5-DW | COST [2400 h] | 2,400 |  | 03-20-01 REINFORCING STEEL | REBR | SITD | 0005 | CO | 4 | CONCRETE REINFORCE |  |  | 1/20/21 - Revised |  |
| SIT2140 |  | Place Monument Sign Ftg | 1d | 2021-11-17 | 2021-11-17 | SIT2120 |  |  |  |  | 125d | 0d | 5-DW | COST [2400 h] | 2,400 |  | 03-30-01 CAST IN PLACE CONCRETE / BELOW GRADE PROD | CONC | SITD | 0005 | CO | 4 | CIP CONCRETE | 2000 |  | 1/20/21 - Revised |  |
| SIT2160 |  | Erect CMU Monument Sign | 5d | 2021-11-18 | 2021-11-29 | SIT2140 |  |  |  |  | 125d | 89d | 5-DW | COST [26400 h] | 26,400 |  | 04-20-01 MASONRY | MASO | SITD | 0005 | CO | 4 | MASONRY | 21346 | 004 | 1/20/21 - Revised |  |
| SIT2180 |  | Rebar Curb & Gutter - Lower | 10d | 2021-12-02 | 2021-12-17 | SIT1060, SIT2060 |  |  |  |  | 31d | 8d | 5-DW | COST [44900 h] | 44,900 |  | 03-20-01 REINFORCING STEEL | REBR | SITD | 0005 | CO | 4 | CONCRETE REINFORCE |  |  | 1/20/21 - Revised |  |
| SIT2200 |  | Form/Pour C & G - Lower | 10d | 2021-12-17 | 2022-01-07 | SIT2060, SIT1060, SIT2180 FF+1d, SIT2100 |  |  |  |  | 23d | 0d | 5-DW | COST [46600 h] | 46,600 |  | 03-30-01 CAST IN PLACE CONCRETE / BELOW GRADE PROD | CONC | SITD | 0005 | CO | 4 | CIP CONCRETE | 40000 |  | 1/20/21 - Revised |  |
| SIT2220 |  | Form & Pour Concrete V Gutter | 7d | 2021-12-17 | 2022-01-04 | SIT2100 |  |  |  |  | 26d | 3d | 5-DW | COST [34900 h] | 34,900 |  | 03-30-01 CAST IN PLACE CONCRETE / BELOW GRADE PROD | CONC | SITI | 0005 | CO | 4 | CIP CONCRETE | 30000 |  | 1/20/21 - Revised |  |
| SIT2240 |  | Grade/Base for AC Pave - Lower | 10d | 2022-01-10 | 2022-01-25 | SIT2200, 321123-02, SIT2220 |  |  |  |  | 23d | 0d | 5-DW | COST [76400 h] | 76,400 |  | 31-20-01 EARTHWORK | GRAD | SITD | 0005 | CO | 4 | CLEAR/GRUB/GRADING | 65635 | 005 | 1/20/21 - Revised |  |
| SIT2260 |  | Install Site Bollards | 5d | 2022-01-10 | 2022-01-17 | SIT2200 |  |  |  |  | 47d | 24d | 5-DW | COST [5900 h] | 5,900 |  | 03-30-01 CAST IN PLACE CONCRETE / BELOW GRADE PROD | CONC | SITD | 0005 | CO | 4 | CIP CONCRETE |  |  | 1/20/21 - Revised |  |
| SIT2280 |  | Receive/Unload Exterior Lights | 5d | 2022-01-10 | 2022-01-14 | 265600-12, SIT2240 SS |  |  |  |  | 51d | 0d |  | COST [85100 h] | 85,100 |  | 26-05-01 BUILDING ELECTRICAL | ELEC | PROC | 0005 | PR | 3 |  | 73037 |  | 1/20/21 - Revised |  |
| SIT2300 |  | Fence Posts - Dumpster/Impound | 7d | 2022-01-11 | 2022-01-21 | SIT2200, 323113-12, 323113-22, PREP1800 |  |  |  |  | 33d | 0d | 5-DW | COST [103100 h] | 103,100 |  | 32-31-13 CHAIN LINK FENCING / HIGH SECURITY | FENC | SITD | 0005 | CO | 4 | CHAIN LINK FENCE |  | 004 | 1/20/21 - Revised |  |
| SIT2480 |  | Form/Pour Sidewalks & Stairs | 10d | 2022-01-14 | 2022-01-31 | SIT2080, 1ENT270, SIT2200, SIT2500 FF+1d |  |  |  |  | 89d | 22d | 5-DW | COST [145600 h] | 145,600 |  | 03-30-01 CAST IN PLACE CONCRETE / BELOW GRADE PROD | CONC | SITD | 0005 | CO | 4 | CIP CONCRETE | 125000 |  | 1/20/21 - Revised |  |
| SIT2500 |  | Rebar Sidewalks & Stairs | 5d | 2022-01-14 | 2022-01-21 | SIT2080, 1ENT270, SIT2200 |  |  |  |  | 93d | 4d | 5-DW | COST [42400 h] | 42,400 |  | 03-20-01 REINFORCING STEEL | REBR | SITD | 0005 | CO | 4 | CONCRETE REINFORCE |  |  | 1/20/21 - Revised |  |
| SIT2320 |  | Fence Posts - Perimeter | 18d | 2022-01-24 | 2022-02-24 | SIT2300, SIT2300 FF, 323113-12, 323113-22, SLP1240 |  |  |  |  | 42d | 0d | 5-DW | COST [169600 h] | 169,600 |  | 32-31-13 CHAIN LINK FENCING / HIGH SECURITY | FENC | SITD | 0005 | CO | 4 | CHAIN LINK FENCE |  | 004 | 1/20/21 - Revised |  |
| SIT2340 |  | Form Conc Paving -E Drive Entr | 5d | 2022-01-26 | 2022-02-02 | SIT2240, 321313-02 |  |  |  |  | 23d | 0d | 5-DW | COST [9300 h] | 9,300 |  | 32-13-13 SITE CONCRETE PAVING | CONC | SITD | 0005 | CO | 4 | CIP CONCRETE | 8000 |  | 1/20/21 - Revised |  |
| SIT2360 |  | Install Site Light Poles | 10d | 2022-01-26 | 2022-02-11 | SIT2240, 265600-12, 3ST210, SIT2280 |  |  |  |  | 39d | 0d | 5-DW | COST [51700 h] | 51,700 |  | 26-05-01 BUILDING ELECTRICAL | ELEC | SITD | 0005 | CO | 4 | FINISH ELECTRICAL | 43648 |  | 1/20/21 - Revised |  |
| SIT2380 |  | Trench Drain at East Entrance | 2d | 2022-02-04 | 2022-02-07 | SIT2340 |  |  |  |  | 23d | 0d | 5-DW | COST [19000 h] | 19,000 |  | 31-20-01 EARTHWORK | GRAD | SITD | 0005 | CO | 4 | STORM DRAINAGE | 16248 | 005 | 1/20/21 - Revised | CD-105 |
| SIT2400 |  | Rebar Conc Paving - E Entrance | 2d | 2022-02-04 | 2022-02-07 | SIT2340 |  |  |  |  | 23d | 0d | 5-DW | COST [31200 h] | 31,200 |  | 03-20-01 REINFORCING STEEL | REBR | SITD | 0005 | CO | 4 | CONCRETE REINFORCE |  |  | 1/20/21 - Revised |  |
| SIT2420 |  | Place Conc Paving - E Entrance | 1d | 2022-02-09 | 2022-02-09 | SIT2400, SIT2380 |  |  |  |  | 23d | 0d | 5-DW | COST [29200 h] | 29,200 |  | 32-13-13 SITE CONCRETE PAVING | CONC | SITD | 0005 | CO | 4 | CIP CONCRETE | 25000 |  | 1/20/21 - Revised |  |
| SIT2440 |  | Form Conc Paving - Site | 7d | 2022-02-10 | 2022-02-22 | SIT2420, SIT2300 |  |  |  |  | 23d | 0d | 5-DW | COST [21400 h] | 21,400 |  | 32-13-13 SITE CONCRETE PAVING | CONC | SITD | 0005 | CO | 4 | CIP CONCRETE | 16000 |  | 1/20/21 - Revised |  |
| SIT2460 |  | Site Security Cams/Pedistals | 15d | 2022-02-14 | 2022-03-10 | SIT2360 |  |  |  |  | 39d | 29d | 5-DW | COST [13500 h] | 13,500 |  | 26-05-01 BUILDING ELECTRICAL | ELEC | SITD | 0005 | CO | 4 | ELECTRONIC SECURITY | 11639 |  | 1/20/21 - Revised |  |
| SIT2520 |  | Rebar Conc Paving - Site | 4d | 2022-02-24 | 2022-03-01 | SIT2440 |  |  |  |  | 23d | 0d | 5-DW | COST [31000 h] | 31,000 |  | 03-20-01 REINFORCING STEEL | REBR | SITD | 0005 | CO | 4 | CONCRETE REINFORCE |  |  | 1/20/21 - Revised |  |
| SIT2540 |  | Place Conc Paving - Site | 2d | 2022-03-02 | 2022-03-03 | SIT2520, SIT2260 |  |  |  |  | 23d | 0d | 5-DW | COST [71000 h] | 71,000 |  | 32-13-13 SITE CONCRETE PAVING | CONC | SITD | 0005 | CO | 4 | CIP CONCRETE | 50000 |  | 1/20/21 - Revised |  |
| SIT2560 |  | Cure Conc Paving - Site | 7d | 2022-03-04 | 2022-03-10 | SIT2540 |  |  |  |  | 35d | 0d | 7-D | COST [6100 h] | 6,100 |  | 32-13-13 SITE CONCRETE PAVING | CONC | SITD | 0005 | CO | 4 | CIP CONCRETE | 4983 |  | 1/20/21 - Revised |  |
| SIT2580 |  | AC Paving - Lower PL/Drives | 10d | 2022-03-11 | 2022-03-25 | SIT2560, 321216-02, 4A1000 |  |  |  |  | 23d | 0d | 5-DW | COST [428700 h] | 428,700 |  | 32-12-16 ASPHALT PAVING | PAVE | SITD | 0005 | CO | 4 | HOT MIX ASPHALT |  |  | 1/20/21 - Revised |  |
| SIT2600 |  | Chain Link Mesh & Gates | 20d | 2022-03-28 | 2022-04-25 | SIT2580, SIT2320 |  |  |  |  | 23d | 0d | 5-DW | COST [101900 h] | 101,900 |  | 32-31-13 CHAIN LINK FENCING / HIGH SECURITY | FENC | SITD | 0005 | CO | 4 | CHAIN LINK FENCE |  | 004 | 1/20/21 - Revised |  |
| SIT2620 |  | Flagpoles at Bldg 1 Entrance | 5d | 2022-03-28 | 2022-04-01 | 1ENT270, SIT2480, SIT2580, 103500-09, PREP2160, 1ENT220 |  |  |  |  | 58d | 35d | 5-DW | COST [13000 h] | 13,000 |  | 10-75-01 FLAGPOLES | TOIL | SITD | 0005 | CO | 4 | FLAG POLES |  |  | 1/20/21 - Revised |  |
| SIT2640 |  | Install Crushed Granite | 10d | 2022-04-26 | 2022-05-09 | SIT2600 |  |  |  |  | 23d | 0d | 5-DW | COST [90900 h] | 90,900 |  | 32-90-01 LANDSCAPING | GRAD | SITD | 0005 | CO | 4 | CLEAR/GRUB/GRADING |  |  | 1/20/21 - Revised |  |
| SIT2660 |  | Pivot Gates & Operators | 10d | 2022-04-26 | 2022-05-09 | SIT2580, SIT2600, 323113-22 |  |  |  |  | 23d | 0d | 5-DW | COST [119700 h] | 119,700 |  | 32-31-13 CHAIN LINK FENCING / HIGH SECURITY | FENC | SITD | 0005 | CO | 4 | CHAIN LINK FENCE |  | 004 | 1/20/21 - Revised |  |
| SIT2680 |  | Install Guard Rail | 8d | 2022-04-26 | 2022-05-05 | SIT2580, SIT2600 |  |  |  |  | 25d | 0d | 5-DW | COST [72800 h] | 72,800 |  | 32-31-13 CHAIN LINK FENCING / HIGH SECURITY | FENC | SITD | 0005 | CO | 4 | CHAIN LINK FENCE |  | 004 | 1/20/21 - Revised |  |
| SIT2760 |  | Install Monument Signage | 2d | 2022-05-02 | 2022-05-03 | SIT2160, SIT2580, 1FN200 |  |  |  |  | 36d | 0d | 5-DW | COST [3100 h] | 3,100 |  | 10-14-01 BUILDING SIGNAGE | SIGN | SITD | 0005 | CO | 4 | SIGNAGE |  |  | 1/20/21 - Revised | AS008 |
| SIT2780 |  | Monument Plaque (GFCI) | 1d | 2022-05-04 | 2022-05-04 | SIT2160, SIT2580, SIT2760 |  |  |  |  | 36d | 13d | 5-DW | COST [3100 h] | 3,100 |  | 10-14-01 BUILDING SIGNAGE | SIGN | SITD | 0005 | CO | 4 | SIGNAGE |  |  | 1/20/21 - Revised | AS008 |
| SIT2700 |  | Barbed-Wire Apron on Fence | 10d | 2022-05-06 | 2022-05-20 | SIT2600, SIT2680 |  |  |  |  | 25d | 2d | 5-DW | COST [38200 h] | 38,200 |  | 32-31-13 CHAIN LINK FENCING / HIGH SECURITY | FENC | SITD | 0005 | CO | 4 | CHAIN LINK FENCE |  | 004 | 1/20/21 - Revised |  |
| SIT2720 |  | Striping/Parking Bumpers/Signs | 10d | 2022-05-10 | 2022-05-24 | SIT2640, SIT2660, SIT2600, 321613-02, PREP2380 |  |  |  |  | 23d | 0d | 5-DW | COST [64800 h] | 64,800 |  | 32-12-16 ASPHALT PAVING | PAVE | SITD | 0005 | CO | 4 | PAVEMENT MARKINGS |  |  | 1/20/21 - Revised |  |
| SIT2740 |  | Coord Veg Restoration by Gov | 30d | 2022-05-10 | 2022-06-23 | SIT2640, SD1240, SLP1280 |  |  |  |  | 28d |  | 5-DW |  |  |  | 01-00-00 GENERAL CONDITIONS | USAC | SITD | 0005 | CO | 4 |  |  |  |  |  |

| ID | WBS | Activity | Duration | Start | Finish | Predecessors | Complete | Remaining | Planned start | Planned finish | Total float | Free float | Calendar | Resources | Cost | Actual cost | Specification | CS | RESP | AREA | BIDI | PHAS | CATW | FOW | NOTES | Sheet | WRKP |
| --- | --- | --- | --- | --- | --- | --- | --- | --- | --- | --- | --- | --- | --- | --- | --- | --- | --- | --- | --- | --- | --- | --- | --- | --- | --- | --- | --- |
|  | 3 | **Helipad** |  | 2021-03-08 | 2022-04-18 |  |  |  |  |  |  |  |  |  |  |  |  |  |  |  |  |  |  |  |  |  |  |
| HELI100 |  | UG Lighting Conduit - Helipad | 5d | 2021-03-08 A | 2021-09-30 | SIT2000 | 30% | 4d | 2021-08-23 | 2021-08-27 | 114d | 0d | 5-DW | COST [17264 h] | 17,264 | 5,179.2 | 26-05-01 BUILDING ELECTRICAL | 13173 | ELEC | HELI | 0010 | CO | 4 | U/G ELECTRICAL DIST |  |  |  |
| HELI120 |  | Grounding at Helipad | 5d | 2021-04-15 A | 2021-10-07 | HELI100 | 25% | 4d | 2021-09-07 | 2021-09-14 | 114d | 59d | 5-DW | COST [11800 h] | 11,800 | 2,950 | 26-05-01 BUILDING ELECTRICAL | 8981 | ELEC | HELI | 0010 | CO | 4 | U/G ELECTRICAL DIST |  |  |  |
| HELI140 |  | Set Base - Helipad | 5d | 2022-01-26 | 2022-02-02 | HELI120, SIT2240 |  |  |  |  | 55d | 0d | 5-DW | COST [6500 h] | 6,500 |  | 31-20-01 EARTHWORK |  | GRAD | HELI | 0010 | CO | 4 | CLEAR/GRUB/GRADING |  |  |  |
| HELI180 |  | Receive Helipad Lights/Vis Nav | 2d | 2022-02-03 | 2022-02-04 | 265421-12, HELI140 |  |  |  |  | 70d | 12d |  | COST [31100 h] | 31,100 |  | 26-05-01 BUILDING ELECTRICAL | 23746 | ELEC | HELI | 0010 | CO | 3 | HELIPAD LIGHTING |  |  |  |
| HELI160 |  | Form Conc Paving - Helipad | 5d | 2022-02-04 | 2022-02-11 | HELI120, HELI140 |  |  |  |  | 55d | 0d | 5-DW | COST [5300 h] | 5,300 |  | 32-13-13 SITE CONCRETE PAVING | 4082 | CONC | HELI | 0010 | CO | 4 | CIP CONCRETE |  |  |  |
| HELI200 |  | Rebar Conc Paving - Helipad | 5d | 2022-02-14 | 2022-02-22 | HELI160 |  |  |  |  | 55d | 0d | 5-DW | COST [5300 h] | 5,300 |  | 03-20-01 REINFORCING STEEL |  | REBR | HELI | 0010 | CO | 4 | CONCRETE REINFORCE |  |  |  |
| HELI220 |  | Light Cans in Conc - Helipad | 5d | 2022-02-24 | 2022-03-02 | HELI200, HELI180 |  |  |  |  | 55d | 0d | 5-DW | COST [4700 h] | 4,700 |  | 26-05-01 BUILDING ELECTRICAL | 3593 | ELEC | HELI | 0010 | CO | 4 | HELIPAD LIGHTING |  |  |  |
| HELI240 |  | Place Conc Paving - Helipad | 1d | 2022-03-03 | 2022-03-03 | HELI220 |  |  |  |  | 55d | 0d | 5-DW | COST [14400 h] | 14,400 |  | 32-13-13 SITE CONCRETE PAVING | 11000 | CONC | HELI | 0010 | CO | 4 | CIP CONCRETE |  |  |  |
| HELI260 |  | Cure Conc Paving - Helipad | 7d | 2022-03-04 | 2022-03-10 | HELI240 |  |  |  |  | 83d | 0d | 7-D | COST [1300 h] | 1,300 |  | 32-13-13 SITE CONCRETE PAVING | 1000 | CONC | HELI | 0010 | CO | 4 | CIP CONCRETE |  |  |  |
| HELI280 |  | Light Cans in AC - Helipad | 5d | 2022-03-04 | 2022-03-11 | HELI240 |  |  |  |  | 57d | 9d | 5-DW | COST [7100 h] | 7,100 |  | 26-05-01 BUILDING ELECTRICAL | 5389 | ELEC | HELI | 0010 | CO | 4 | HELIPAD LIGHTING |  |  |  |
| HELI300 |  | Strip Concrete Forms - Helipad | 3d | 2022-03-11 | 2022-03-15 | HELI260 |  |  |  |  | 55d | 7d | 5-DW | COST [3900 h] | 3,900 |  | 32-13-13 SITE CONCRETE PAVING | 3000 | CONC | HELI | 0010 | CO | 4 | CIP CONCRETE |  |  |  |
| HELI320 |  | AC Paving - Helipad | 5d | 2022-03-28 | 2022-04-01 | HELI280, HELI300, SIT2580 |  |  |  |  | 48d | 0d | 5-DW | COST [52400 h] | 52,400 |  | 32-12-16 ASPHALT PAVING |  | PAVE | HELI | 0010 | CO | 4 | HOT MIX ASPHALT |  |  |  |
| HELI340 |  | Helipad Light Fixtures/Vis Nav | 5d | 2022-04-04 | 2022-04-08 | HELI320 |  |  |  |  | 48d | 0d | 5-DW | COST [3900 h] | 3,900 |  | 26-05-01 BUILDING ELECTRICAL | 2994 | ELEC | HELI | 0010 | CO | 4 | HELIPAD LIGHTING |  |  |  |
| HELI360 |  | Striping & Signage - Helipad | 5d | 2022-04-11 | 2022-04-18 | HELI340 |  |  |  |  | 48d | 25d | 5-DW | COST [4700 h] | 4,700 |  | 32-12-16 ASPHALT PAVING |  | PAVE | HELI | 0010 | CO | 4 | PAVEMENT MARKINGS |  |  |  |
|  | 5 | **Campbell Ranch Road** |  | 2022-03-04 | 2022-04-11 |  |  |  |  |  |  |  |  |  |  |  |  |  |  |  |  |  |  |  |  |  |  |
| CRR1000 |  | Conc Crossing/Entr Campbell RR | 10d | 2022-03-04 | 2022-03-18 | SIT2540, SIT2540 FF |  |  |  |  | 52d | 0d | 5-DW | COST [9900 h] | 9,900 |  | 32-13-13 SITE CONCRETE PAVING | 8000 | CONC | SITD | 0005 | CO | 4 | CIP CONCRETE | 1/20/21 - Revised |  |  |
| CRR1050 |  | Agg Base Campbell Ranch Rd | 10d | 2022-03-21 | 2022-04-04 | GRD1180, CRR1000, SD1280, PREP2080 |  |  |  |  | 52d | 0d | 5-DW | COST [24700 h] | 24,700 |  | 31-20-01 EARTHWORK | 20000 | GRAD | SITD | 0005 | CO | 4 | AGGREGATE SURFACING | 1/20/21 - Revised | CD-302 | 005 |
| CRR1100 |  | Rip Rap at Campbell Ranch Rd | 5d | 2022-04-05 | 2022-04-11 | CRR1050, CRR1050 FF |  |  |  |  | 52d | 29d | 5-DW | COST [29200 h] | 29,200 |  | 31-20-01 EARTHWORK |  | GRAD | SITD | 0005 | CO | 4 | RIPRAP | 1/20/21 - Revised |  |  |
|  | 6 | **Closeout / Red Zone** |  | 2021-12-23 | 2022-11-01 |  |  |  |  |  |  |  |  |  |  |  |  |  |  |  |  |  |  |  |  |  |  |
|  | 7 | **Red Zone** |  | 2022-02-02 | 2022-03-13 |  |  |  |  |  |  |  |  |  |  |  |  |  |  |  |  |  |  |  |  |  |  |
| RZ1000 |  | Red Zone Meeting | 1d | 2022-02-02 | 2022-02-02 | RZ1200 SS, 019100-72, 019100-51 |  |  |  |  | 3d | 0d |  |  |  |  | 01-00-00 GENERAL CONDITIONS |  | PRIM | RDZN | 0001 | RZ | 6 |  |  |  |  |
| RZ1010 |  | Gov Iss IP Add/Zn Dsc/Acct Inf | 30d | 2022-02-03 | 2022-03-04 | RZ1000 |  |  |  |  | 65d | 51d | 7-D |  |  |  | 01-00-00 GENERAL CONDITIONS |  | USAC | RDZN | 0001 | RZ | 6 |  |  |  |  |
| RZ1020 |  | Gov Install IT Equipment | 30d | 2022-02-12 | 2022-03-13 | PM1200, 1LVB190, 1LVB180, 1LVB170, 1LVD200, 1LVD190, 1LVD180 |  |  |  |  | 91d | 71d | 7-D |  |  |  | 01-00-00 GENERAL CONDITIONS |  | USAC | RDZN | 0001 | RZ | 6 |  |  |  |  |
| RZ1030 |  | Insp/Testing Generator | 5d | 2022-02-14 | 2022-02-18 | RZ1200 |  |  |  |  | 78d | 65d |  |  |  |  |  |  | ELEC | RDZN | 0001 | RZ | 6 | DIESEL GENERATOR |  |  |  |
| RZ1040 |  | Insp/Testing UPS | 3d | 2022-02-14 | 2022-02-16 | RZ1200 |  |  |  |  | 80d | 67d |  |  |  |  |  |  | ELEC | RDZN | 0001 | RZ | 6 | UPS |  |  |  |

| ID | WBS | Activity | Duration | Start | Finish | Predecessors | Total float | Free float | Calendar | Resources | Cost | RESP | AREA | BIDI | PHAS | CATW | FOW | Specification | CS | WRKP |
| --- | --- | --- | --- | --- | --- | --- | --- | --- | --- | --- | --- | --- | --- | --- | --- | --- | --- | --- | --- | --- |
|  | 4 | **Air Barrier Testing** |  | 2022-02-03 | 2022-03-17 |  |  |  |  |  |  |  |  |  |  |  |  |  |  |  |
| RZ1090 |  | Verify AB Test Equip Calibr | 1d | 2022-02-03 | 2022-02-03 | RZ1000 | 63d | 0d |  |  |  | PRIM | BLD1 | 0001 | RZ | 6 | AIR BARRIER |  |  |  |
| RZ1100 |  | Air Barrier Testing - B1 | 2d | 2022-02-04 | 2022-02-07 | RZ1000, 070523-02, RZ1090 | 63d | 0d |  | COST [14000 h] | 14,000 | AIRB | RDZN | 0001 | RZ | 6 | AIR BARRIER | 02-10-13 AIR BARRIER TESTING |  |  |
| RZ1105 |  | Air Barrier Testing - B5 | 1d | 2022-02-08 | 2022-02-08 | RZ1000, 070523-02, RZ1090, RZ1100 | 63d | 0d |  | COST; COST [2400 h] | 2,400 | AIRB | RDZN | 0013 | RZ | 6 | AIR BARRIER | 02-10-13 AIR BARRIER TESTING |  |  |
| RZ1110 |  | SUBM - Air Barrier Test Report | 5d | 2022-02-09 | 2022-02-15 | RZ1100, RZ1105 | 63d | 0d |  | COST [1000 h] | 1,000 | AIRB | RDZN | 0001 | RZ | 6 | AIR BARRIER | 02-10-13 AIR BARRIER TESTING |  |  |
| RZ1120 |  | GOV APPR Air Barrier Test Rep | 30d | 2022-02-16 | 2022-03-17 | RZ1110 | 90d | 89d | 7-D |  |  | USAC | RDZN | 0001 | RZ | 6 |  | 02-10-13 AIR BARRIER TESTING |  |  |
|  | 3 | **TAB / Commissioning** |  | 2022-02-02 | 2022-08-19 |  |  |  |  |  |  |  |  |  |  |  |  |  |  |  |
| RZ1200 |  | Pre-Power Elec Test - Energize | 8d | 2022-02-02 | 2022-02-11 | EL1460, 1ELD140, 1ELB140, 1ELE160, 3FI280, 1ELE190, 260800-02, 1LVD200, 1LVB190, EL1360, 1ELE170, EL1500, 1ELE210, 1ELE230 FF | 1d | 0d |  | COST |  | ELEC | RDZN | 0001 | RZ | 6 | FINISH ELECTRICAL | 26-05-01 BUILDING ELECTRICAL |  |  |
| RZ1220 |  | Gov Provide LPG for Testing/Cx | 5d | 2022-02-03 | 2022-02-09 | RZ1000, LP1170 | 3d | 2d |  |  |  | USAC | RDZN | 0001 | RZ | 6 |  | 01-00-00 GENERAL CONDITIONS |  |  |
| RZ1240 |  | Start-up Mech Equip | 20d | 2022-02-14 | 2022-03-14 | RZ1200, PM1200, RZ1000, 1MCA140, 1MCA150, 1MCD130, 1MCD140, 1MCD150, 1MCA160, 1EX130, 1AFI200, RZ1220, 1AFI220, 3FI310, 1RIC300, 1RIE320, 3FI320, 1LVD150, 1LVB150, 1AFI210, 4ST300, 5ST380 FF | 1d | 0d |  | COST [17000 h] | 17,000 | HVAC | RDZN | 0001 | RZ | 6 | HVAC | 23-05-01 HVAC | 15200 | 002 |
| RZ1260 |  | Flush/Fill/Treat Mech Piping | 5d | 2022-02-14 | 2022-02-18 | RZ1240 SS, 232500-02, SS1160 | 16d | 15d |  | COST [12000 h] | 12,000 | HVAC | RDZN | 0001 | RZ | 6 | HVAC | 23-05-01 HVAC | 11200 | 002 |
| RZ1280 |  | Ctrls Point to Point Verify | 20d | 2022-02-14 | 2022-03-14 | RZ1200, RZ1200 FF | 1d | 0d |  | COST [17000 h] | 17,000 | CTRL | RDZN | 0001 | RZ | 6 | HVAC CONTROLS | 23-09-01 DDC CONTROLS |  |  |
| RZ1300 |  | Perform TAB / Submit Reports | 20d | 2022-03-15 | 2022-04-11 | RZ1240, RZ1260, 1EX180, 230593-33, 1EX170, PM1220 | 1d | 0d |  | COST [15000 h] | 15,000 | TABA | RDZN | 0001 | RZ | 6 | TAB | 23-05-93 TEST, ADJUST & BALANCING | 29200 |  |
| RZ1320 |  | SUBM Start-Up Testing Reports | 10d | 2022-03-15 | 2022-03-28 | RZ1240, RZ1280 | 1d | 0d |  | COST [8000 h] | 8,000 | HVAC | RDZN | 0001 | RZ | 6 | HVAC | 23-05-01 HVAC | 7300 |  |
| RZ1330 |  | Prefunctional Check - Mech | 5d | 2022-03-15 | 2022-03-21 | RZ1240 | 61d | 60d |  |  |  | PRIM | RDZN | 0001 | RZ | 6 | COMMISSIONING |  |  |  |
| RZ1335 |  | Prefunctional Check - Elec | 5d | 2022-03-15 | 2022-03-21 | RZ1240 | 61d | 60d |  |  |  | PRIM | RDZN | 0001 | RZ | 6 | COMMISSIONING |  |  |  |
| RZ1340 |  | GOV APPR Start-Up Test Reports | 21d | 2022-03-29 | 2022-04-18 | RZ1320 | 1d | 0d | 7-D |  |  | USAC | RDZN | 0001 | RZ | 6 | HVAC | 23-05-01 HVAC |  |  |
| RZ1360 |  | Chlorinate & BacT Test Water | 5d | 2022-04-04 | 2022-04-08 | PM1200, 1FIC770, 1FIA730, 1FIE940, 3ST280, WA1080, SS1160, WELL400, WELL300, WA1050, WA1030, 3FI360 | 45d | 0d |  | COST [6000 h] | 6,000 | PLUM | RDZN | 0001 | RZ | 6 | PLUMBING | 22-05-01 PLUMBING |  |  |
| RZ1370 |  | Prefunctional Check - Plumbing | 2d | 2022-04-11 | 2022-04-12 | RZ1240, RZ1360 | 45d | 44d |  |  |  | PRIM | RDZN | 0001 | RZ | 6 | COMMISSIONING |  |  |  |
| RZ1380 |  | GOV APPR TAB Reports | 21d | 2022-04-12 | 2022-05-02 | RZ1240, RZ1300 | 1d | 0d | 7-D |  |  | USAC | RDZN | 0001 | RZ | 6 | TAB | 23-05-93 TEST, ADJUST & BALANCING |  |  |
| RZ1400 |  | Submit PVT Procedures | 1d | 2022-04-19 | 2022-04-19 | RZ1340 | 1d | 0d |  | COST [600 h] | 600 | CTRL | RDZN | 0001 | RZ | 6 | HVAC CONTROLS | 23-09-01 DDC CONTROLS |  |  |
| RZ1420 |  | Submit Training Documentation | 20d | 2022-04-19 | 2022-05-16 | RZ1340 | 41d | 0d |  |  |  | PRIM | RDZN | 0001 | RZ | 6 |  | 01-00-00 GENERAL CONDITIONS |  |  |
| RZ1440 |  | GOV REV PVT Procedures | 14d | 2022-04-20 | 2022-05-03 | RZ1400 | 1d | 0d | 7-D |  |  | USAC | RDZN | 0001 | RZ | 6 | HVAC CONTROLS | 23-09-01 DDC CONTROLS |  |  |
| RZ1450 |  | TAB Verification | 1d | 2022-05-03 | 2022-05-03 | RZ1380 | 1d | 0d |  |  |  | CXNG | RDZN | 0001 | RZ | 6 | TAB |  |  |  |
| RZ1460 |  | Execute PVT | 10d | 2022-05-04 | 2022-05-17 | RZ1440, RZ1380, RZ1450 | 1d | 0d |  | COST [17000 h] | 17,000 | CTRL | RDZN | 0001 | RZ | 6 | HVAC CONTROLS | 23-09-01 DDC CONTROLS |  |  |
| RZ1510 |  | GOV REV Training Documentation | 14d | 2022-05-17 | 2022-05-30 | RZ1420 | 59d | 0d | 7-D |  |  | USAC | RDZN | 0001 | RZ | 6 |  | 01-00-00 GENERAL CONDITIONS |  |  |
| RZ1480 |  | Submit PVT Report | 14d | 2022-05-18 | 2022-05-31 | RZ1460 | 1d | 0d | 7-D | COST [600 h] | 600 | CTRL | RDZN | 0001 | RZ | 6 | HVAC CONTROLS | 23-09-01 DDC CONTROLS |  |  |
| RZ1513 |  | Prefunctional Check - Fire Spr | 2d | 2022-05-23 | 2022-05-24 | RZ1240, RZ2020 | 15d | 14d |  |  |  | PRIM | RDZN | 0001 | RZ | 6 | COMMISSIONING |  |  |  |
| RZ1516 |  | Prefunctional Check - FA | 2d | 2022-05-23 | 2022-05-24 | RZ1240, RZ2020 | 15d | 14d |  |  |  | PRIM | RDZN | 0001 | RZ | 6 | COMMISSIONING |  |  |  |
| RZ1520 |  | GOV REV PVT Report | 14d | 2022-06-01 | 2022-06-14 | RZ1480 | 1d | 0d | 7-D |  |  | USAC | RDZN | 0001 | RZ | 6 | HVAC CONTROLS | 23-09-01 DDC CONTROLS |  |  |
| RZ1550 |  | Submit Cert of Readiness - Cx | 3d | 2022-06-15 | 2022-06-17 | RZ1520, RZ1120, RZ1360, RZ2020, RZ1330, RZ1335, RZ1370, RZ1513, RZ1516 | 1d | 0d |  |  |  | PRIM | RDZN | 0001 | RZ | 6 |  | 23-08-01 COMMISSIONING |  |  |
| RZ1560 |  | GOV APPR Cert of Readiness -Cx | 14d | 2022-06-18 | 2022-07-01 | RZ1550 | 3d |  | 7-D |  |  | USAC | RDZN | 0001 | RZ | 6 |  | 23-08-01 COMMISSIONING |  |  |
| RZ1580 |  | Functional Performance Testing | 10d | 2022-07-05 | 2022-07-18 | RZ1300, RZ1380, RZ1520, RZ1560, RZ2060 | 0d |  |  | COST [34000 h] | 34,000 | CXNG | RDZN | 0001 | RZ | 6 | COMMISSIONING | 23-08-01 COMMISSIONING |  |  |
| RZ1610 |  | Final Cx Systems Testing | 5d | 2022-07-19 | 2022-07-25 | RZ1580 | 0d |  |  | COST [11000 h] | 11,000 | CXNG | RDZN | 0001 | RZ | 6 | COMMISSIONING | 23-08-01 COMMISSIONING |  |  |
| RZ1620 |  | Perform Training | 5d | 2022-07-19 | 2022-07-25 | RZ1610 FF, RZ1510, PM1230, RZ2280 | 8d |  |  |  |  | PRIM | RDZN | 0001 | RZ | 6 |  | 01-00-00 GENERAL CONDITIONS |  |  |
| RZ1630 |  | Submit Final Cx Report | 3d | 2022-07-26 | 2022-07-28 | RZ1610 | 0d |  |  |  |  | CXNG | RDZN | 0001 | RZ | 6 | COMMISSIONING |  |  |  |
| RZ1640 |  | GOV Rev Final Cx Report | 7d | 2022-07-29 | 2022-08-04 | RZ1630 | 0d |  | 7-D |  |  | USAC | RDZN | 0001 | RZ | 6 | COMMISSIONING |  |  |  |
| RZ1650 |  | Cx Report Review Meeting | 1d | 2022-08-19 | 2022-08-19 | RZ1640 FS+14d | 51d |  |  |  |  | USAC | RDZN | 0001 | RZ | 6 | COMMISSIONING |  |  |  |

Notes:
- RZ1440: Activity Notes: 14 days before PVT per Table 1 Project Seqencing in spec 23 09 / 00

| ID | WBS | Activity | Duration | Start | Finish | Predecessors | Total float | Free float | Calendar | Resources | Cost | Specification | CS | RESP | AREA | BIDI | PHAS | CATW | FOW |
| --- | --- | --- | --- | --- | --- | --- | --- | --- | --- | --- | --- | --- | --- | --- | --- | --- | --- | --- | --- |
|  | 5 | **Electronic Security System Testing** |  | 2022-04-25 | 2022-07-20 |  |  |  |  |  |  |  |  |  |  |  |  |  |  |
| RZ1800 |  | Program Security System | 10d | 2022-04-25 | 2022-05-06 | PM1200, SIT2460, 1FIE1070, 1LVD170, 1LVB200, RZ1010, 1LVB210, 1FIE1080, 3FI210, 4ST560 | 10d | 0d |  | COST [6500 h] | 6,500 | 26-05-01 BUILDING ELECTRICAL | 6208 | ELEC | RDZN | 0001 | RZ | 6 | ELECTRONIC SECURITY |
| RZ1820 |  | ESS Pre-Accept Test/Correction | 15d | 2022-05-09 | 2022-05-27 | PM1200, RZ1800, 280810-02 | 10d | 0d |  | COST [6000 h] | 6,000 | 26-05-01 BUILDING ELECTRICAL | 5432 | ELEC | RDZN | 0001 | RZ | 6 | ELECTRONIC SECURITY |
| RZ1840 |  | ESS Functional Testing | 5d | 2022-05-31 | 2022-06-06 | RZ1820 | 10d | 0d |  | COST [5800 h] | 5,800 | 26-05-01 BUILDING ELECTRICAL | 5044 | ELEC | RDZN | 0001 | RZ | 6 | ELECTRONIC SECURITY |
| RZ1860 |  | ESS Burn-In Testing | 5d | 2022-06-07 | 2022-06-13 | RZ1840 | 10d | 0d |  | COST [4900 h] | 4,900 | 26-05-01 BUILDING ELECTRICAL | 4268 | ELEC | RDZN | 0001 | RZ | 6 | ELECTRONIC SECURITY |
| RZ1880 |  | Submit ESS Final Test Report | 5d | 2022-06-14 | 2022-06-20 | RZ1860 | 10d | 0d |  | COST [3600 h] | 3,600 | 26-05-01 BUILDING ELECTRICAL | 3104 | ELEC | RDZN | 0001 | RZ | 6 | ELECTRONIC SECURITY |
| RZ1900 |  | GOV APPR ESS Final Test Report | 30d | 2022-06-21 | 2022-07-20 | RZ1880 | 15d |  | 7-D |  |  | 26-05-01 BUILDING ELECTRICAL |  | USAC | RDZN | 0001 | RZ | 6 | ELECTRONIC SECURITY |
|  | 6 | **Fire Life Safety** |  | 2022-04-25 | 2022-06-13 |  |  |  |  |  |  |  |  |  |  |  |  |  |  |
| RZ2000 |  | Program FA Sys | 10d | 2022-04-25 | 2022-05-06 | 1FIA300, 1FIE910, PM1200, 3FI300, 1FIC250, 1ELE150, RZ1240, 1FIE1070, RZ1010, 1FIE1080 | 13d | 0d |  | COST [3000 h] | 3,000 | 26-05-01 BUILDING ELECTRICAL | 2757 | ELEC | RDZN | 0001 | RZ | 6 | FIRE ALARM SYSTEM |
| RZ2020 |  | Contractor Test FA Sys | 10d | 2022-05-09 | 2022-05-20 | RZ2000 | 13d | 0d |  | COST [3900 h] | 3,900 | 26-05-01 BUILDING ELECTRICAL | 3446 | ELEC | RDZN | 0001 | RZ | 6 | FIRE ALARM SYSTEM |
| RZ2030 |  | Submit Cert of Readiness - FAS | 1d | 2022-05-23 | 2022-05-23 | RZ2020 | 13d | 0d |  |  |  |  |  | ELEC | RDZN | 0001 | RZ | 6 | FIRE ALARM SYSTEM |
| RZ2040 |  | Schedule FLS Testing | 14d | 2022-05-24 | 2022-06-06 | RZ2020, 1FN110, 1FIA390, RZ1020, RZ2030, RZ1030, RZ1040, 3FI420, 3FI430 | 20d | 0d | 7-D |  |  | 01-00-00 GENERAL CONDITIONS |  | PRIM | RDZN | 0001 | RZ | 6 |  |
| RZ2060 |  | Final FLS Testing | 5d | 2022-06-07 | 2022-06-13 | RZ2040, 1LVB210, 1FIC390 | 14d |  |  |  |  | 01-00-00 GENERAL CONDITIONS |  | PRIM | RDZN | 0001 | RZ | 6 |  |
|  | 2 | **Punch List & Closeout Documents** |  | 2022-03-21 | 2022-08-05 |  |  |  |  |  |  |  |  |  |  |  |  |  |  |
| RZ2220 |  | KTR Punchlist/Correct - B5 | 7d | 2022-03-21 | 2022-03-29 | 5ST580 | 79d | 77d |  |  |  | 01-00-00 GENERAL CONDITIONS |  | PRIM | RDZN | 0013 | RZ | 5 |  |
| RZ2200 |  | KTR Punchlist/Correct - B3 | 10d | 2022-04-12 | 2022-04-25 | CRS1200, 3FI350, 3ST270 | 55d | 31d |  |  |  | 01-00-00 GENERAL CONDITIONS |  | PRIM | RDZN | 0003 | RZ | 5 |  |
| RZ2280 |  | SUBM/APPR O&M Manuals | 60d | 2022-04-12 | 2022-06-10 | RZ1000, RZ1300 | 48d | 38d | 7-D | COST [20000 h] | 20,000 | 01-00-00 GENERAL CONDITIONS |  | PRIM | RDZN | 0001 | RZ | 6 |  |
| RZ2290 |  | SUBM/APPR Record Dwgs | 45d | 2022-05-14 | 2022-06-27 | RZ1000, 1FN210 | 38d |  | 7-D | COST |  | 01-00-00 GENERAL CONDITIONS |  | PRIM | RDZN | 0001 | RZ | 6 |  |
| RZ2295 |  | SUBM/APPR DD Form 1354 | 45d | 2022-05-14 | 2022-06-27 | RZ1000, 1FN210 | 37d | 0d | 7-D | COST |  | 01-00-00 GENERAL CONDITIONS |  | PRIM | RDZN | 0001 | RZ | 6 |  |
| RZ2320 |  | KTR Punchlist/Correct - B1,1A | 15d | 2022-05-16 | 2022-06-06 | 1FN210, 1EX220, 1EX200, 1EX210, 1EX230, 1AFI230, 1EX160 | 31d | 7d |  |  |  | 01-00-00 GENERAL CONDITIONS |  | PRIM | RDZN | 0001 | RZ | 5 |  |
| RZ2240 |  | KTR Punchlist/Correct - B4,4A | 10d | 2022-05-25 | 2022-06-08 | 4ST700, 4A1460 | 24d | 0d |  |  |  | 01-00-00 GENERAL CONDITIONS |  | PRIM | RDZN | 0009 | RZ | 5 |  |
| RZ2260 |  | KTR Punchlist/Correct - Site | 15d | 2022-05-25 | 2022-06-15 | HW1080, SIT2620, SIT2720, SIT2700, SIT1180, SIT2780, CRR1100, SLP1280, SIT1160, SD1260, SD1240, 1ENT280, HELI360 | 24d | 0d |  |  |  | 01-00-00 GENERAL CONDITIONS |  | PRIM | RDZN | 0005 | RZ | 5 |  |
| RZ2300 |  | Demobilize Site | 15d | 2022-05-25 | 2022-06-15 | RZ2260 SS, SIT2720, RZ2320 SS, RZ2200 SS, RZ2240 SS | 24d | 22d |  |  |  | 01-00-00 GENERAL CONDITIONS |  | PRIM | RDZN | 0001 | RZ | 5 |  |
| RZ2340 |  | Pre-Warranty Conference | 1d | 2022-06-28 | 2022-06-28 | RZ2260, RZ2320, RZ2200, RZ2295 | 26d | 0d |  |  |  | 01-00-00 GENERAL CONDITIONS |  | PRIM | RDZN | 0001 | RZ | 5 |  |
| RZ2360 |  | Gov Pre-Final Inspection | 1d | 2022-07-19 | 2022-07-19 | RZ2260, RZ1580, RZ2300, RZ9020, RZ2320, RZ2200, RZ2220, RZ2240, RZ2220 FF, 3FI430, R00003 MOD | 2d | 0d |  |  |  | 01-00-00 GENERAL CONDITIONS |  | USAC | RDZN | 0001 | RZ | 5 |  |
| RZ2380 |  | Gov Pre-Final PL Corrections | 10d | 2022-07-20 | 2022-08-02 | RZ2360 | 2d |  |  | COST [382246 h] | 382,246 | 01-00-00 GENERAL CONDITIONS |  | PRIM | RDZN | 0001 | RZ | 5 |  |
| RZ2400 |  | Gov Final Inspection | 1d | 2022-08-05 | 2022-08-05 | RZ2360, RZ2280, RZ2380, RZ1620, RZ1610, RZ1900, SIT2740, RZ2340, PM9910, RZ1630, RZ1640, RZ2290, RZ2295 | 0d |  |  |  |  | 01-00-00 GENERAL CONDITIONS |  | USAC | RDZN | 0001 | RZ | 5 |  |

| ID | WBS | Activity | Duration | Start | Finish | Predecessors | Complete | Planned start | Planned finish | Total float | Free float | Calendar | Resources | Cost | Actual cost | Specification | RESP | AREA | BIDI | PHAS | CATW | MODF | FRAGNET | FOW |
| --- | --- | --- | --- | --- | --- | --- | --- | --- | --- | --- | --- | --- | --- | --- | --- | --- | --- | --- | --- | --- | --- | --- | --- | --- |
|  | 1 | **As-Built Drawings** |  | 2021-12-23 | 2022-11-01 |  |  |  |  |  |  |  |  |  |  |  |  |  |  |  |  |  |  |  |
| RZ9000 |  | SUBM 50% Prelim As-Built Dwgs | 30d | 2021-12-23 | 2022-01-21 | 1FIE720 |  |  |  | 150d | 0d | 7-D |  |  |  | 01-00-00 GENERAL CONDITIONS | PRIM | RDZN | 0001 | RZ | 5 |  |  |  |
| RZ9020 |  | GOV APPR 50% As-Built Dwgs | 30d | 2022-01-22 | 2022-02-20 | RZ9000 |  |  |  | 150d | 148d | 7-D |  |  |  | 01-00-00 GENERAL CONDITIONS | USAC | RDZN | 0001 | RZ | 5 |  |  |  |
| RZ9040 |  | SUBM 100% Prelim As-Built Dwgs | 30d | 2022-08-06 | 2022-09-04 | RZ2400, PM9900 |  |  |  | 0d |  | 7-D |  |  |  | 01-00-00 GENERAL CONDITIONS | PRIM | RDZN | 0001 | RZ | 5 |  |  |  |
| RZ9060 |  | GOV APPR 100% As-Built Dwgs | 30d | 2022-09-05 | 2022-10-04 | RZ9040 |  |  |  | 0d |  | 7-D |  |  |  | 01-00-00 GENERAL CONDITIONS | USAC | RDZN | 0001 | RZ | 5 |  |  |  |
| RZ9080 |  | SUBM/APPR Final As-Built Dwgs | 20d | 2022-10-05 | 2022-11-01 | RZ2400, RZ9060, RZ1650 FF |  |  |  | 0d |  |  | COST [200000 h] | 200,000 |  | 01-00-00 GENERAL CONDITIONS | PRIM | RDZN | 0001 | RZ | 5 |  |  |  |
|  | 7 | **Modifications / Allowances** |  | 2020-09-23 | 2021-07-29 |  |  |  |  |  |  |  |  |  |  |  |  |  |  |  |  |  |  |  |
|  | 1 | **Allowances** |  | 2021-07-01 | 2021-07-29 |  |  |  |  |  |  |  |  |  |  |  |  |  |  |  |  |  |  |  |
| ALLW008 |  | Elec & Comm Wire Allowance | 20d | 2021-07-01 | 2021-07-29 | PM1050 |  |  |  | 257d |  |  | COST [163276 h] | 163,276 |  | 01-00-00 GENERAL CONDITIONS | PRIM |  | 0008 | CO | 4 |  |  |  |
|  | 2 | **R00001 SD004 PEMB Revised Design Parameter** |  | 2020-09-23 | 2021-03-01 |  |  |  |  |  |  |  |  |  |  |  |  |  |  |  |  |  |  |  |
| 133419-1.1 |  | COORDINATE - Mtl Bldg Dwgs | 8d | 2020-09-23 A | 2020-09-30 A | 133419-02 | 100% |  |  |  |  | 7-D |  |  |  |  | PRIM | PROC | 0001 | PR | 2 | R00001 |  |  |
| RFI29-100 |  | RFI 29 Beam Depth Conflicts | 7d | 2020-10-01 A | 2020-10-07 A | 133419-1.1 | 100% |  |  |  |  | 7-D |  |  |  |  | USAC | PROC | 0001 | PR | 2 | R00001 |  |  |
| RFI42-100 |  | RFI 42 PEMB Parameters | 7d | 2020-10-09 A | 2020-10-15 A | RFI29-100 | 100% |  |  |  |  | 7-D |  |  |  |  | USAC | PROC | 0001 | PR | 2 | R00001 |  |  |
| RFI42-110 |  | Begin PEMB Redesign | 5d | 2020-10-16 A | 2020-10-20 A | RFI42-100 | 100% |  |  |  |  | 7-D |  |  |  |  | PEMB | PROC | 0001 | PR | 2 | R00001 |  |  |
| RFI53-100 |  | RFI 53 Updated PEMB | 6d | 2020-10-21 A | 2020-10-26 A | RFI42-110 | 100% |  |  |  |  | 7-D |  |  |  |  | USAC | PROC | 0001 | PR | 2 | R00001 |  |  |
| RFI53-110 |  | PEMB Redesign Bldg 1 | 30d | 2020-10-27 A | 2020-12-04 A | RFI53-100, RFP02-100 FF | 100% | 2020-10-27 | 2020-11-25 |  |  | 7-D |  |  |  |  | PEMB | PROC | 0001 | PR | 2 | R00001 |  |  |
| RFP02-100 |  | Govt Issue RFP 02 | 9d | 2020-10-27 A | 2020-11-04 A | RFI53-100 | 100% |  |  |  |  | 7-D |  |  |  |  | USAC | PROC | 0001 | PR | 2 | R00001 |  |  |
| RFI53-120 |  | QC REV PEMB Redesign Bldg 1 | 3d | 2020-12-02 A | 2020-12-04 A | RFI53-110 | 100% |  |  |  |  | 7-D |  |  |  |  | PRIM | PROC | 0001 | PR | 2 | R00001 |  |  |
| M1-1 |  | PEMB Revised Design Parameter | 1d | 2021-03-01 A | 2021-03-01 A | RFI53-120 | 100% |  |  |  |  |  | COST [243500 h] | 243,500 | 243,500 |  | PRIM | PROC | 0001 | PR | 2 | R00001 |  |  |
|  | 3 | **R00002 SD009 Foundation Redesign** |  | 2020-12-07 | 2021-04-23 |  |  |  |  |  |  |  |  |  |  |  |  |  |  |  |  |  |  |  |
| RFP07-100 |  | Govt Issue Early Copy of Foundation Redesign | 18d | 2020-12-07 A | 2020-12-31 A | RFI53-120, 133419-04 | 100% |  |  |  |  | 5-Day |  |  |  |  | USAC | PROC | 0001 | PR |  | R00002 | Y | NONE |
| RFP07-110 |  | Govt Issue RFP 07 for Foundation Redesign | 16d | 2020-12-23 A | 2021-01-15 A | RFP07-100 | 100% |  |  |  |  | 5-Day |  |  |  |  | USAC | PROC | 0001 | PR |  | R00002 | Y | NONE |
| RFP07-120 |  | Sub Begin Preparing Rebar Shop Drawings | 8d | 2020-12-23 A | 2021-01-05 A | RFP07-100 | 100% |  |  |  |  | 5-Day |  |  |  |  | REBR | PROC | 0001 | PR |  | R00002 | Y | NONE |
| RFP07-140 |  | Review RFP 07 & Generate RFIs | 4d | 2021-01-08 A | 2021-01-13 A | RFP07-110, RFP07-120 | 100% |  |  |  |  | 5-Day |  |  |  |  | REBR | PROC | 0001 | PR |  | R00002 | Y | NONE |
| RFP07-130 |  | RFI 103 - Pilaster at Grids A & 1 | 9d | 2021-01-12 A | 2021-01-22 A | RFP07-140 SS+2d | 100% |  |  |  |  | 5-Day |  |  |  |  | USAC | PROC | 0001 | PR |  | R00002 | Y | NONE |
| RFP07-150 |  | RFI 104 - Dimension for Step | 9d | 2021-01-12 A | 2021-01-22 A | RFP07-140 SS+2d | 100% |  |  |  |  | 5-Day |  |  |  |  | USAC | PROC | 0001 | PR |  | R00002 | Y | NONE |
| RFP07-160 |  | RFI 105 - GB5 & Wall Don't Have Same Width | 7d | 2021-01-13 A | 2021-01-21 A | RFP07-140 SS+3d | 100% |  |  |  |  | 5-Day |  |  |  |  | USAC | PROC | 0001 | PR |  | R00002 | Y | NONE |
| RFP07-170 |  | RFI 106 - Is F2 a Typo Error | 7d | 2021-01-13 A | 2021-01-21 A | RFP07-140 SS+3d | 100% |  |  |  |  | 5-Day |  |  |  |  | USAC | PROC | 0001 | PR |  | R00002 | Y | NONE |
| RFP07-180 |  | RFI 107 - Pilaster Dimensions & Beam Not Centered | 7d | 2021-01-13 A | 2021-01-21 A | RFP07-140 SS+3d | 100% |  |  |  |  | 5-Day |  |  |  |  | USAC | PROC | 0001 | PR |  | R00002 | Y | NONE |
| RFP07-190 |  | RFI 108 - Are the 9 #5 Verts an Add or Replace | 7d | 2021-01-13 A | 2021-01-21 A | RFP07-140 SS+3d | 100% |  |  |  |  | 5-Day |  |  |  |  | USAC | PROC | 0001 | PR |  | R00002 | Y | NONE |
| RFP07-200 |  | RFI 109 - Tie Conflicts with Apparent Blockout | 10d | 2021-01-13 A | 2021-01-26 A | RFP07-140 SS+3d | 100% |  |  |  |  | 5-Day |  |  |  |  | USAC | PROC | 0001 | PR |  | R00002 | Y | NONE |
| RFP07-210 |  | RFI 110 - Pilaster Dimensions | 7d | 2021-01-13 A | 2021-01-21 A | RFP07-140 SS+3d | 100% |  |  |  |  | 5-Day |  |  |  |  | USAC | PROC | 0001 | PR |  | R00002 | Y | NONE |
| RFP07-220 |  | RFI 111 - Grade Beam with 2 Labels | 7d | 2021-01-13 A | 2021-01-21 A | RFP07-140 SS+3d | 100% |  |  |  |  | 5-Day |  |  |  |  | USAC | PROC | 0001 | PR |  | R00002 | Y | NONE |
| RFP07-230 |  | RFI 113 - Is Pilaster Shape & Layout Accurate | 9d | 2021-01-14 A | 2021-01-26 A | RFP07-140 | 100% |  |  |  |  | 5-Day |  |  |  |  | USAC | PROC | 0001 | PR |  | R00002 | Y | NONE |
| RFP07-240 |  | Complete Rebar Shop Drawings - Bldg 1 | 4d | 2021-01-25 A | 2021-01-28 A | RFP07-230, RFP07-220, RFP07-210, RFP07-200, RFP07-190, RFP07-180, RFP07-170, RFP07-160, RFP07-150, RFP07-130 | 100% |  |  |  |  | 5-Day |  |  |  |  | REBR | PROC | 0001 | PR |  | R00002 | Y | NONE |
| RFP07-250 |  | QC Check Rebar Shop Drawings - Bldg 1 | 2d | 2021-01-29 A | 2021-02-01 A | RFP07-240 | 100% |  |  |  |  | 5-Day |  |  |  |  | PRIM | PROC | 0001 | PR |  | R00002 | Y | NONE |
| M2-1 |  | Foundation Redesign | 1d | 2021-04-23 A | 2021-04-23 A | PM1050 | 100% | 2021-04-01 | 2021-04-01 |  |  |  | COST [240918 h] | 240,918 | 240,918 |  | PRIM | PROC | 0001 | PR | 4 | R00002 |  | NONE |

| ID | WBS | Activity | Duration | Start | Finish | Predecessors | Complete | Remaining | Planned start | Planned finish | Total float | Free float | Resources | Cost | Actual cost | RESP | AREA | MODF | BIDI | PHAS | CATW | FOW |
| --- | --- | --- | --- | --- | --- | --- | --- | --- | --- | --- | --- | --- | --- | --- | --- | --- | --- | --- | --- | --- | --- | --- |
|  | 4 | **R00003 DWV Underground Pipe / Utility Reroute / Shotcrete** |  | 2021-06-08 | 2021-07-07 |  |  |  |  |  |  |  |  |  |  |  |  |  |  |  |  |  |
| R00003 MOD |  | DWV Pipe/Util Reroute/Shotcrete | 5d | 2021-06-08 A | 2021-07-07 | PM1050 | 20% | 4d | 2021-07-01 | 2021-07-08 | 261d | 259d | COST [256326 h] | 256,326 | 51,265.2 | PRIM | SITD | R00003 | 0005 | CO | 4 | NONE |

## Activity codes

| Code | Value | Meaning |
| --- | --- | --- |
| AREA | BL1A | Building 1A Central Plant |
| AREA | BL4A | Building 4A Vehicle Fueling Facility |
| AREA | BLD1 | Building 1 Border Patrol Station |
| AREA | BLD3 | Building 3 Water Well Pumphouse |
| AREA | BLD4 | Building 4 Vehicle Wash Facility |
| AREA | BLD5 | Building 5 - Canine Kennel Facility |
| AREA | ENVR | Environmentally Sensitive Windows |
| AREA | HELI | Helipad |
| AREA | MOBI | Mobilization |
| AREA | PREC | Preconstruction |
| AREA | PREP | Preparatory Meetings |
| AREA | PRMS | Project Milestones |
| AREA | PROC | Submittals / Procurement |
| AREA | RDZN | Closeout / Red Zone |
| AREA | SITD | Site Development |
| AREA | SITI | Site Improvements |
| AREA | WELL | Second Water Well |
| BIDI | 0001 | CLIN 0001 - BUILDING 1 BORDER PATROL STATION AND BUILDING 1A CENTRAL PLANT |
| BIDI | 0003 | CLIN 0003 - BUILDING 3 WATER WELL PUMP HOUSE |
| BIDI | 0005 | CLIN 0005 - ALL SITEWORK EXCLUDING HIGHWAY 94 IMPROVEMENTS |
| BIDI | 0007 | CLIN 0007 - ROCK EXCAVATION ALLOWANCE |
| BIDI | 0008 | CLIN 0008 - ELECTRIC AND COMMUNICATION WIRE ALLOWANCE - FROM GRID TO NEW FACILITY |
| BIDI | 0009 | CLIN 0009 - BUILDING 4 VEHICLE WASH FACILITY |
| BIDI | 0010 | CLIN 0010 - HELIPAD PAVING, LIGHTING, GROUNDING (EXCLUDES GRADING) |
| BIDI | 0012 | CLIN 0012 - SECOND WATER WELL |
| BIDI | 0013 | CLIN 0013 - BUILDING 5 CANINE KENNEL FACILITY |
| BIDI | 0017 | CLIN 0017 - BUILDING 4A VEHICLE FUELING FACILITY INCLUDING CANOPY |
| CATW | 1 | Milestones |
| CATW | 2 | Construction Submittals |
| CATW | 3 | Material Procurement / Fabrication |
| CATW | 4 | Weather Sensitive Installation |
| CATW | 5 | Non-Weather Sensitive Installation |
| CATW | 6 | Startup & Testing Activities |
| FOW | ACCESS FLOORING | Access Flooring |
| FOW | ACOUSTIC CEILINGS | Acoustic Ceilings |
| FOW | AGGREGATE SURFACING | Aggregate Surfacing |
| FOW | AIR BARRIER | Air Barrier |
| FOW | ALUM DOOR/FRAME/GLAZ | Aluminum Door/Frames/Glazing |
| FOW | BULLET RESISTANT PAN | Bullet Resistant Panels |
| FOW | CARPETING | Carpeting |
| FOW | CASEWORK | Casework |
| FOW | CEMENT STUCCO | Cement Stucco |
| FOW | CERAMIC/QUARRY TILE | Ceramic/Quarry/Glass Tiling |
| FOW | CHAIN LINK FENCE | Chain Link Fence & Gates |
| FOW | CIP CONCRETE | CIP Concrete |
| FOW | CLEAR/GRUB/GRADING | Clearing/Grubbing/Earthwork |
| FOW | COILING COUNTER DOOR | Coiling Counter Doors |
| FOW | COMMISSIONING | Commissioning |
| FOW | COMMUNICATIONS (BLD) | Communications (Building) |
| FOW | CONCRETE PIERS | Concrete Piers |
| FOW | CONCRETE REINFORCE | Concrete Reinforcement |
| FOW | DETENTION DOORS | Detention Doors/Frames |
| FOW | DETENTION PADDING | Detention Padding |
| FOW | DIESEL GENERATOR | Diesel Generator |
| FOW | DOORS AND FRAMES | Doors and Frames |
| FOW | DRY PIPE SPRINKLER | Dry Pipe Sprinkler System |
| FOW | ELECTRIC KITCHEN EQP | Electric Kitchen Equipment |
| FOW | ELECTRONIC SECURITY | Electronic Security System |
| FOW | EXERCISE EQUIPMENT | Exercise Equipment |
| FOW | EXTERIOR SUN CONTROL | Exterior Sun Control Devices |
| FOW | FACILITY GAS PIPING | Facility Gas Piping |
| FOW | FINISH ELECTRICAL | Finish Electrical |
| FOW | FINISH PLUMBING | Finish Plumbing |
| FOW | FIRE ALARM SYSTEM | Fire Alarm System |
| FOW | FIRE PUMPS | Fire Pumps |
| FOW | FLAG POLES | Flag Poles |
| FOW | FLOOR MATS | Floor Mats |
| FOW | FOLDING PANEL PART | Folding Panel Partitions |
| FOW | FUEL STORAGE TANKS | Fuel Storage Tanks |
| FOW | HELIPAD LIGHTING | Helipad Lighting |
| FOW | HOT MIX ASPHALT | Hot Mix Asphalt & Base |
| FOW | HVAC CONTROLS | HVAC Controls |
| FOW | KENNEL ENCLOSURES | Kennel Enclosures & Gate |
| FOW | LIGHTNING PROTECTION | Lightning Protection |
| FOW | MASONRY | Masonry |
| FOW | MECH SYS INSULATION | Mechanical System Insulation |
| FOW | METAL BUILDING SYS | Metal Building Systems |
| FOW | METAL LOCKERS | Metal Lockers |
| FOW | METAL STUD FRAMING | Metal Stud Framing |
| FOW | NONE | No FOW Code |
| FOW | OH COILING DOORS | Overhead Coiling Doors |
| FOW | PAVEMENT MARKINGS | Pavement Markings |
| FOW | PLUMBING | Plumbing |
| FOW | QUARTZ FLOORING | Quartz Flooring |
| FOW | RESILIENT FLOORING | Resilient Flooring |
| FOW | RIPRAP | Riprap |
| FOW | ROLLER WINDOW SHADES | Roller Window Shades |
| FOW | ROUGH ELECTRICAL | Rough Electrical |
| FOW | SET ELECTRICAL EQUIP | Set Electrical Equipment |
| FOW | SHELVING | Shelving |
| FOW | SIGNAGE | Signage |
| FOW | SITE SEWER | Site Sewer |
| FOW | SITE TELECOM | Site Telecommunication |
| FOW | SITE WATER | Site Water |
| FOW | SLOPE PROTECTION | Concrete Slope Protection |
| FOW | STATIC CONTROL FLOOR | Static Control Flooring |
| FOW | STORM DRAINAGE | Storm Drainage System |
| FOW | SURVEY | Survey |
| FOW | TAB | Test, Adjust & Balance |
| FOW | TOILET ACCESSORIES | Toilet Partitions & Accessories |
| FOW | TUBULAR DAYLIGHTING | Tubular Daylighting Devices |
| FOW | U/G ELECTRICAL DIST | U/G Electrical Distribution |
| FOW | UG PROPANE GAS | PROPANE GAS PIPING |
| FOW | VAULT DOOR DAY GATE | Vault Door & Day Gates |
| FOW | VEHICLE WASH EQUIP | Vehicle Washing Equipment |
| FOW | WALL & DOOR PROTECT | Wall & Door Protection |
| FOW | WALL INSULATION | Wall Insulation |
| FOW | WATER STORAGE TANKS | Water Storage Tanks |
| FOW | WATER SUPPLY WELLS | Water Supply Wells |
| FOW | WATER TREATMENT EQP | Water Treatment Equipment |
| FOW | WATERPROOFING | Waterproofing |
| FOW | WET PIPE SPRINKLER | Wet Pipe Sprinkler System |
| FOW | WIRE MESH PARTITIONS | Wire Mesh Partitions |
| MODF | R00001 | R00001 - PEMB Revised Design Parameter |
| MODF | R00002 | R00001 - Foundation Redesign |
| MODF | R00003 | R00003 - DWV UG Pipe / Utility Reroute / Shotcrete |
| PHAS | CO | Construction |
| PHAS | MS | Project Milestones |
| PHAS | PR | Procurement |
| PHAS | RZ | Red Zone |
| RESP | ACOU | Acoustical Ceilings |
| RESP | ACWL | Acoustical Wall Panels |
| RESP | AFLR | Access Floor |
| RESP | AIRB | Air Barrier Testing |
| RESP | ATT | AT&T |
| RESP | AVSY | Audio Video Systems |
| RESP | CASE | Casework / Finish Carpentry |
| RESP | CONC | Building Concrete |
| RESP | CTRL | Controls |
| RESP | CXNG | Commissioning |
| RESP | DETN | Detention Doors, Glazing, Padding |
| RESP | DOOR | Doors & Hardware |
| RESP | ELEC | Electrical |
| RESP | FENC | Fencing & Gates |
| RESP | FIRE | Fire Sprinkler |
| RESP | FITN | Fitness Equipment |
| RESP | FLOO | Flooring |
| RESP | FNCL | Final Clean |
| RESP | FRAM | Framing / Gyp Board |
| RESP | FUEL | Fuel Storage Tanks & Equipment |
| RESP | GLAZ | Glazing |
| RESP | GRAD | Grading / Earthwork |
| RESP | HVAC | HVAC / Mechanical |
| RESP | INSU | Insulation |
| RESP | KENL | Kennel Enclosures |
| RESP | KITC | Kitchen Equipment |
| RESP | LCKR | Lockers |
| RESP | MASO | Masonry |
| RESP | MATS | Walk-Off Mats |
| RESP | OHDR | Overhead Doors |
| RESP | PAIN | Painting |
| RESP | PART | Folding Partitions |
| RESP | PAVE | AC Paving |
| RESP | PEMB | Premanufactured Metal Building |
| RESP | PIER | Piers / Cassons |
| RESP | PLUM | Plumbing |
| RESP | PRIM | Straub Construction Inc. |
| RESP | REBR | Rebar |
| RESP | ROUG | Rough Carpentry |
| RESP | SDGE | SDG&E |
| RESP | SHTM | Sheet Metal |
| RESP | SIGN | Signage |
| RESP | SLOP | Concrete Slope Protection |
| RESP | STEE | Structural Steel / Decking |
| RESP | SURV | Survey |
| RESP | TABA | TAB Agency |
| RESP | TILE | Ceramic Tile |
| RESP | TOIL | Toilet Accessories |
| RESP | USAC | USACE |
| RESP | VWSH | Vehicle Washing Equipment |
| RESP | WELL | Well Equipment |
| RESP | WIRE | Wire Mesh Partitions |
| RESP | WPRF | Waterproofing |
| RESP | WSHD | Window Shades |
| RESP | WTNK | Water Storage Tanks |
